# Medor Adminstration Building

How a schedule from Primavera P6 changed from version to version. A marks actual dates.

## Version 1 (data date 2010-06-29, saved 2010-08-24, file medor_003.xer)

Note of the change: Tertiary change

| ID | WBS | Task | Duration | Start | Finish | Predecessors | Total float |
| --- | --- | --- | --- | --- | --- | --- | --- |
|  | 1 | **general** |  | 2010-07-07 | 2011-04-03 |  |  |
| A1000 |  | Receiving IFC drawings | 0d | 2010-07-07 | 2010-07-07 |  | 0d |
| A1010 |  | Receiving advance payement | 0d | 2010-07-07 | 2010-07-07 |  | 0d |
| A1020 |  | start construction phase | 0d | 2010-07-17 | 2010-07-17 | A2000 | 0d |
| A1030 |  | finish construction | 0d | 2011-04-03 | 2011-04-03 | A2160 | 0d |
|  | 3 | **engineering** |  | 2010-07-07 | 2010-08-12 |  |  |
| A1990 |  | submit ground floor's shop drawings for approval | 1d | 2010-07-07 | 2010-07-07 | A1000, A1010 | 0d |
| A2010 |  | submit 1st floor shop drawings for approval | 1d | 2010-07-12 | 2010-07-12 | A1990 FS+3d | 12d |
| A2000 |  | ground floor's shop drawings approval | 0d | 2010-07-15 | 2010-07-15 | A1990 FS+7d | 0d |
| A2030 |  | submit 2nd floor shop drawings for approval | 1d | 2010-07-17 | 2010-07-17 | A2010 FS+3d | 39d |
| A2020 |  | 1st floor shop drawings approval | 0d | 2010-07-20 | 2010-07-20 | A2010 FS+7d | 12d |
| A2050 |  | submit 3rd floor shop drawings for approval | 1d | 2010-07-21 | 2010-07-21 | A2030 FS+3d | 66d |
| A2040 |  | 2nd floor shop drawings approval | 0d | 2010-07-25 | 2010-07-25 | A2030 FS+7d | 39d |
| A2070 |  | submit 4th floor shop drawings for approval | 1d | 2010-07-26 | 2010-07-26 | A2050 FS+3d | 92d |
| A2060 |  | 3rd floor shop drawings approval | 0d | 2010-07-29 | 2010-07-29 | A2050 FS+7d | 66d |
| A2090 |  | submit 5th floor shop drawings for approval | 1d | 2010-07-31 | 2010-07-31 | A2070 FS+3d | 118d |
| A2080 |  | 4th floor shop drawings approval | 0d | 2010-08-03 | 2010-08-03 | A2070 FS+7d | 92d |
| A2110 |  | submit 6th floor shop drawings for approval | 1d | 2010-08-04 | 2010-08-04 | A2090 FS+3d | 144d |
| A2100 |  | 5th floor shop drawings approval | 0d | 2010-08-08 | 2010-08-08 | A2090 FS+7d | 118d |
| A2120 |  | 6th floor shop drawings approval | 0d | 2010-08-12 | 2010-08-12 | A2110 FS+7d | 144d |
|  | 2 | **skeleton** |  | 2010-07-17 | 2011-04-03 |  |  |
|  | 1 | **ground floor** |  | 2010-07-17 | 2010-08-10 |  |  |
| A1330 |  | columns Formwork & Rft. Part 2 | 8d | 2010-07-17 | 2010-07-25 | A1020 | 0d |
| A1350 |  | Slab Formwork & Rft. Part1 | 10d | 2010-07-17 | 2010-07-27 | A1020 | 11d |
| A1340 |  | Columns Pouring Part2 | 1d | 2010-07-26 | 2010-07-26 | A1330 | 0d |
| A1370 |  | Slab Formwork & Rft. Part2 | 10d | 2010-07-29 | 2010-08-09 | A1340 FS+2d | 0d |
| A1380 |  | Slab Pouring | 1d | 2010-08-10 | 2010-08-10 | A1370, A1350 | 0d |
|  | 2 | **1st floor** |  | 2010-08-12 | 2010-09-16 |  |  |
| A1390 |  | columns Formwork & Rft. Part1 | 8d | 2010-08-12 | 2010-08-21 | A2020 FS+7d, A1380 FS+1d | 0d |
| A1400 |  | Columns Pouring Part1 | 1d | 2010-08-22 | 2010-08-22 | A1390 | 0d |
| A1410 |  | columns Formwork & Rft. Part 2 | 8d | 2010-08-22 | 2010-08-30 | A1380 FS+1d, A1400 FS-1d | 0d |
| A1420 |  | Slab Formwork & Rft. Part1 | 10d | 2010-08-24 | 2010-09-04 | A1400 FS+1d | 9d |
| A1440 |  | Columns Pouring Part2 | 1d | 2010-08-31 | 2010-08-31 | A1410 | 0d |
| A1460 |  | Slab Formwork & Rft. Part2 | 10d | 2010-09-04 | 2010-09-15 | A1440 FS+2d | 0d |
| A1480 |  | Slab Pouring | 1d | 2010-09-16 | 2010-09-16 | A1460, A1420 | 0d |
|  | 3 | **2nd floor** |  | 2010-09-19 | 2010-10-23 |  |  |
| A1490 |  | columns Formwork & Rft. Part1 | 8d | 2010-09-19 | 2010-09-27 | A2040 FS+7d, A1480 FS+1d | 0d |
| A1500 |  | Columns Pouring Part1 | 1d | 2010-09-28 | 2010-09-28 | A1490 | 0d |
| A1510 |  | columns Formwork & Rft. Part 2 | 8d | 2010-09-28 | 2010-10-06 | A1480 FS+1d, A1500 FS-1d | 0d |
| A1520 |  | Slab Formwork & Rft. Part1 | 10d | 2010-09-30 | 2010-10-11 | A1500 FS+1d | 9d |
| A1540 |  | Columns Pouring Part2 | 1d | 2010-10-07 | 2010-10-07 | A1510 | 0d |
| A1560 |  | Slab Formwork & Rft. Part2 | 10d | 2010-10-11 | 2010-10-21 | A1540 FS+2d | 0d |
| A1580 |  | Slab Pouring | 1d | 2010-10-23 | 2010-10-23 | A1560, A1520 | 0d |
|  | 4 | **3rd floor** |  | 2010-10-25 | 2010-11-30 |  |  |
| A1590 |  | columns Formwork & Rft. Part1 | 8d | 2010-10-25 | 2010-11-02 | A2060 FS+7d, A1580 FS+1d | 0d |
| A1610 |  | columns Formwork & Rft. Part 2 | 8d | 2010-11-02 | 2010-11-10 | A1580 FS+1d, A1600 FS-2d | 0d |
| A1600 |  | Columns Pouring Part1 | 1d | 2010-11-03 | 2010-11-03 | A1590 | 0d |
| A1620 |  | Slab Formwork & Rft. Part1 | 10d | 2010-11-06 | 2010-11-20 | A1600 FS+1d | 8d |
| A1640 |  | Columns Pouring Part2 | 1d | 2010-11-11 | 2010-11-11 | A1610 | 0d |
| A1660 |  | Slab Formwork & Rft. Part2 | 10d | 2010-11-15 | 2010-11-29 | A1640 FS+2d | 0d |
| A1680 |  | Slab Pouring | 1d | 2010-11-30 | 2010-11-30 | A1660, A1620 | 0d |
|  | 5 | **4th floor** |  | 2010-12-02 | 2011-01-04 |  |  |
| A1690 |  | columns Formwork & Rft. Part1 | 8d | 2010-12-02 | 2010-12-11 | A2080 FS+7d, A1680 FS+1d | 0d |
| A1710 |  | columns Formwork & Rft. Part 2 | 8d | 2010-12-11 | 2010-12-19 | A1680 FS+1d, A1700 FS-2d | 0d |
| A1700 |  | Columns Pouring Part1 | 1d | 2010-12-12 | 2010-12-12 | A1690 | 0d |
| A1720 |  | Slab Formwork & Rft. Part1 | 10d | 2010-12-14 | 2010-12-25 | A1700 FS+1d | 8d |
| A1740 |  | Columns Pouring Part2 | 1d | 2010-12-20 | 2010-12-20 | A1710 | 0d |
| A1760 |  | Slab Formwork & Rft. Part2 | 10d | 2010-12-23 | 2011-01-03 | A1740 FS+2d | 0d |
| A1780 |  | Slab Pouring | 1d | 2011-01-04 | 2011-01-04 | A1760, A1720 | 0d |
|  | 6 | **5th floor** |  | 2011-01-06 | 2011-02-08 |  |  |
| A1790 |  | columns Formwork & Rft. Part1 | 8d | 2011-01-06 | 2011-01-15 | A2100 FS+7d, A1780 FS+1d | 0d |
| A1810 |  | columns Formwork & Rft. Part 2 | 8d | 2011-01-15 | 2011-01-23 | A1780 FS+1d, A1800 FS-2d | 0d |
| A1800 |  | Columns Pouring Part1 | 1d | 2011-01-16 | 2011-01-16 | A1790 | 0d |
| A1820 |  | Slab Formwork & Rft. Part1 | 10d | 2011-01-18 | 2011-01-29 | A1800 FS+1d | 8d |
| A1840 |  | Columns Pouring Part2 | 1d | 2011-01-24 | 2011-01-24 | A1810 | 0d |
| A1860 |  | Slab Formwork & Rft. Part2 | 10d | 2011-01-27 | 2011-02-07 | A1840 FS+2d | 0d |
| A1880 |  | Slab Pouring | 1d | 2011-02-08 | 2011-02-08 | A1860, A1820 | 0d |
|  | 7 | **6th floor** |  | 2011-02-10 | 2011-03-15 |  |  |
| A1890 |  | columns Formwork & Rft. Part1 | 8d | 2011-02-10 | 2011-02-19 | A2120 FS+7d, A1880 FS+1d | 0d |
| A1910 |  | columns Formwork & Rft. Part 2 | 8d | 2011-02-19 | 2011-02-27 | A1880 FS+1d, A1900 FS-2d | 0d |

| ID | WBS | Task | Duration | Start | Finish | Predecessors | Total float |
| --- | --- | --- | --- | --- | --- | --- | --- |
| A1900 |  | Columns Pouring Part1 | 1d | 2011-02-20 | 2011-02-20 | A1890 | 0d |
| A1920 |  | Slab Formwork & Rft. Part1 | 10d | 2011-02-22 | 2011-03-05 | A1900 FS+1d | 8d |
| A1940 |  | Columns Pouring Part2 | 1d | 2011-02-28 | 2011-02-28 | A1910 | 0d |
| A1960 |  | Slab Formwork & Rft. Part2 | 10d | 2011-03-03 | 2011-03-14 | A1940 FS+2d | 0d |
| A1980 |  | Slab Pouring | 1d | 2011-03-15 | 2011-03-15 | A1960, A1920 | 0d |
|  | 8 | **Roof floor** |  | 2011-03-19 | 2011-04-03 |  |  |
| A2130 |  | columns Formwork & Rft. | 5d | 2011-03-19 | 2011-03-23 | A1980 FS+2d | 0d |
| A2140 |  | Columns Pouring | 1d | 2011-03-24 | 2011-03-24 | A2130 | 0d |
| A2150 |  | Slab Formwork & Rft. | 7d | 2011-03-26 | 2011-04-02 | A2140 | 0d |
| A2160 |  | Slab Pouring | 1d | 2011-04-03 | 2011-04-03 | A2150 | 0d |

## Version 2 (data date 2010-09-01, saved 2010-09-07, file Update 01-09-2010.xer)

Note of the change: Tertiary change

Last finish 2011-04-03 → 2011-03-31 (-3d). Complete tasks 0 → 16.

Added:

| ID | Task | Start | Finish |
| --- | --- | --- | --- |
| 1 | **General** | 2010-07-07 | 2011-03-31 |
| 3 | **Engineering** | 2010-07-07 | 2010-09-29 |
| 2 | **Skeleton** | 2010-07-10 | 2011-03-31 |
| 1 | **Ground Floor** | 2010-07-10 | 2010-08-07 |
| 2 | **1st Floor** | 2010-08-08 | 2010-09-14 |
| 3 | **2nd Floor** | 2010-09-16 | 2010-10-20 |
| 4 | **3rd Floor** | 2010-10-23 | 2010-11-28 |
| 5 | **4th Floor** | 2010-11-30 | 2011-01-02 |
| 6 | **5th Floor** | 2011-01-04 | 2011-02-06 |
| 7 | **6th Floor** | 2011-02-08 | 2011-03-13 |
| 8 | **Roof Floor** | 2011-03-16 | 2011-03-31 |

Removed: general; engineering; skeleton; ground floor; 1st floor; 2nd floor; 3rd floor; 4th floor; 5th floor; 6th floor; Roof floor

Changed:

| ID | Task | Start | Finish | Complete | Total float | Predecessors |
| --- | --- | --- | --- | --- | --- | --- |
| A1000 | Receiving IFC drawings | 2010-07-07 A | 2010-07-07 A | 0% → 100% | 0d → none |  |
| A1010 | Receiving advance payement | 2010-07-07 A | 2010-07-07 A | 0% → 100% | 0d → none |  |
| A1020 | start construction phase | 2010-07-17 → 2010-07-10 A (-7d) | 2010-07-17 → 2010-07-10 A (-7d) | 0% → 100% | 0d → none |  |
| A1030 | finish construction | 2011-04-03 → 2011-03-31 (-3d) | 2011-04-03 → 2011-03-31 (-3d) |  |  |  |
| A1990 | submit ground floor's shop drawings for approval | 2010-07-07 A | 2010-07-07 A | 0% → 100% | 0d → none |  |
| A2010 | submit 1st floor shop drawings for approval | 2010-07-12 A | 2010-07-12 A | 0% → 100% | 12d → none |  |
| A2000 | ground floor's shop drawings approval | 2010-07-15 A | 2010-07-15 A | 0% → 100% | 0d → none |  |
| A2020 | 1st floor shop drawings approval | 2010-07-20 A | 2010-07-20 A | 0% → 100% | 12d → none |  |
| A2030 | submit 2nd floor shop drawings for approval | 2010-07-17 → 2010-09-01 (+46d) | 2010-07-17 → 2010-09-01 (+46d) |  | 39d → 154d |  |
| A2050 | submit 3rd floor shop drawings for approval | 2010-07-21 → 2010-09-06 (+47d) | 2010-07-21 → 2010-09-06 (+47d) |  | 66d → 154d |  |
| A2040 | 2nd floor shop drawings approval | 2010-07-25 → 2010-09-11 (+48d) | 2010-07-25 → 2010-09-11 (+48d) |  | 39d → 170d |  |
| A2070 | submit 4th floor shop drawings for approval | 2010-07-26 → 2010-09-12 (+48d) | 2010-07-26 → 2010-09-12 (+48d) |  | 92d → 154d |  |
| A2060 | 3rd floor shop drawings approval | 2010-07-29 → 2010-09-15 (+48d) | 2010-07-29 → 2010-09-15 (+48d) |  | 66d → 166d |  |
| A2090 | submit 5th floor shop drawings for approval | 2010-07-31 → 2010-09-16 (+47d) | 2010-07-31 → 2010-09-16 (+47d) |  | 118d → 154d |  |
| A2080 | 4th floor shop drawings approval | 2010-08-03 → 2010-09-20 (+48d) | 2010-08-03 → 2010-09-20 (+48d) |  | 92d → 162d |  |
| A2110 | submit 6th floor shop drawings for approval | 2010-08-04 → 2010-09-21 (+48d) | 2010-08-04 → 2010-09-21 (+48d) |  | 144d → 154d |  |
| A2100 | 5th floor shop drawings approval | 2010-08-08 → 2010-09-25 (+48d) | 2010-08-08 → 2010-09-25 (+48d) |  | 118d → 158d |  |
| A2120 | 6th floor shop drawings approval | 2010-08-12 → 2010-09-29 (+48d) | 2010-08-12 → 2010-09-29 (+48d) |  | 144d → 154d |  |
| A1350 | Slab Formwork & Rft. Part1 | 2010-07-17 → 2010-07-10 A (-7d) | 2010-07-27 → 2010-07-16 A (-11d) | 0% → 100% | 11d → none |  |
| A1330 | columns Formwork & Rft. Part 2 | 2010-07-17 A | 2010-07-25 → 2010-07-27 A (+2d) | 0% → 100% | 0d → none |  |
| A1340 | Columns Pouring Part2 | 2010-07-26 → 2010-07-28 A (+2d) | 2010-07-26 → 2010-07-28 A (+2d) | 0% → 100% | 0d → none |  |
| A1370 | Slab Formwork & Rft. Part2 | 2010-07-29 A | 2010-08-09 → 2010-08-05 A (-4d) | 0% → 100% | 0d → none |  |
| A1380 | Slab Pouring | 2010-08-10 → 2010-08-07 A (-3d) | 2010-08-10 → 2010-08-07 A (-3d) | 0% → 100% | 0d → none |  |
| A1390 | columns Formwork & Rft. Part1 | 2010-08-12 → 2010-08-08 A (-4d) | 2010-08-21 → 2010-08-24 A (+3d) | 0% → 100% | 0d → none |  |
| A1410 | columns Formwork & Rft. Part 2 | 2010-08-22 A | 2010-08-30 → 2010-08-29 A (-1d) | 0% → 100% | 0d → none |  |
| A1400 | Columns Pouring Part1 | 2010-08-22 → 2010-08-25 A (+3d) | 2010-08-22 → 2010-08-25 A (+3d) | 0% → 100% | 0d → none |  |
| A1420 | Slab Formwork & Rft. Part1 | 2010-08-24 → 2010-08-26 A (+2d) | 2010-09-04 → 2010-09-13 (+9d) | 0% → 60% | 9d → 0d |  |
| A1440 | Columns Pouring Part2 | 2010-08-31 → 2010-08-30 A (-1d) | 2010-08-31 → 2010-08-30 A (-1d) | 0% → 100% | 0d → none |  |
| A1460 | Slab Formwork & Rft. Part2 | 2010-09-04 → 2010-08-31 A (-4d) | 2010-09-15 → 2010-09-11 (-4d) | 0% → 20% | 0d → 2d |  |
| A1480 | Slab Pouring | 2010-09-16 → 2010-09-14 (-2d) | 2010-09-16 → 2010-09-14 (-2d) |  |  |  |
| A1490 | columns Formwork & Rft. Part1 | 2010-09-19 → 2010-09-16 (-3d) | 2010-09-27 → 2010-09-25 (-2d) |  |  | A2040 FS+7d, A1480 FS+1d → A1480 FS+1d |
| A1500 | Columns Pouring Part1 | 2010-09-28 → 2010-09-26 (-2d) | 2010-09-28 → 2010-09-26 (-2d) |  |  |  |
| A1510 | columns Formwork & Rft. Part 2 | 2010-09-28 → 2010-09-26 (-2d) | 2010-10-06 → 2010-10-04 (-2d) |  |  |  |
| A1520 | Slab Formwork & Rft. Part1 | 2010-09-30 → 2010-09-28 (-2d) | 2010-10-11 → 2010-10-09 (-2d) |  |  |  |
| A1540 | Columns Pouring Part2 | 2010-10-07 → 2010-10-05 (-2d) | 2010-10-07 → 2010-10-05 (-2d) |  |  |  |
| A1560 | Slab Formwork & Rft. Part2 | 2010-10-11 → 2010-10-09 (-2d) | 2010-10-21 → 2010-10-19 (-2d) |  |  |  |
| A1580 | Slab Pouring | 2010-10-23 → 2010-10-20 (-3d) | 2010-10-23 → 2010-10-20 (-3d) |  |  |  |
| A1590 | columns Formwork & Rft. Part1 | 2010-10-25 → 2010-10-23 (-2d) | 2010-11-02 → 2010-10-31 (-2d) |  |  | A2060 FS+7d, A1580 FS+1d → A1580 FS+1d |
| A1610 | columns Formwork & Rft. Part 2 | 2010-11-02 → 2010-10-31 (-2d) | 2010-11-10 → 2010-11-08 (-2d) |  |  |  |
| A1600 | Columns Pouring Part1 | 2010-11-03 → 2010-11-01 (-2d) | 2010-11-03 → 2010-11-01 (-2d) |  |  |  |
| A1620 | Slab Formwork & Rft. Part1 | 2010-11-06 → 2010-11-03 (-3d) | 2010-11-20 → 2010-11-14 (-6d) |  |  |  |
| A1640 | Columns Pouring Part2 | 2010-11-11 → 2010-11-09 (-2d) | 2010-11-11 → 2010-11-09 (-2d) |  |  |  |
| A1660 | Slab Formwork & Rft. Part2 | 2010-11-15 → 2010-11-13 (-2d) | 2010-11-29 → 2010-11-27 (-2d) |  |  |  |
| A1680 | Slab Pouring | 2010-11-30 → 2010-11-28 (-2d) | 2010-11-30 → 2010-11-28 (-2d) |  |  |  |
| A1690 | columns Formwork & Rft. Part1 | 2010-12-02 → 2010-11-30 (-2d) | 2010-12-11 → 2010-12-08 (-3d) |  |  | A2080 FS+7d, A1680 FS+1d → A1680 FS+1d |
| A1710 | columns Formwork & Rft. Part 2 | 2010-12-11 → 2010-12-08 (-3d) | 2010-12-19 → 2010-12-16 (-3d) |  |  |  |
| A1700 | Columns Pouring Part1 | 2010-12-12 → 2010-12-09 (-3d) | 2010-12-12 → 2010-12-09 (-3d) |  |  |  |
| A1720 | Slab Formwork & Rft. Part1 | 2010-12-14 → 2010-12-12 (-2d) | 2010-12-25 → 2010-12-22 (-3d) |  |  |  |
| A1740 | Columns Pouring Part2 | 2010-12-20 → 2010-12-18 (-2d) | 2010-12-20 → 2010-12-18 (-2d) |  |  |  |
| A1760 | Slab Formwork & Rft. Part2 | 2010-12-23 → 2010-12-21 (-2d) | 2011-01-03 → 2011-01-01 (-2d) |  |  |  |
| A1780 | Slab Pouring | 2011-01-04 → 2011-01-02 (-2d) | 2011-01-04 → 2011-01-02 (-2d) |  |  |  |
| A1790 | columns Formwork & Rft. Part1 | 2011-01-06 → 2011-01-04 (-2d) | 2011-01-15 → 2011-01-12 (-3d) |  |  | A2100 FS+7d, A1780 FS+1d → A1780 FS+1d |
| A1810 | columns Formwork & Rft. Part 2 | 2011-01-15 → 2011-01-12 (-3d) | 2011-01-23 → 2011-01-20 (-3d) |  |  |  |
| A1800 | Columns Pouring Part1 | 2011-01-16 → 2011-01-13 (-3d) | 2011-01-16 → 2011-01-13 (-3d) |  |  |  |
| A1820 | Slab Formwork & Rft. Part1 | 2011-01-18 → 2011-01-16 (-2d) | 2011-01-29 → 2011-01-26 (-3d) |  |  |  |
| A1840 | Columns Pouring Part2 | 2011-01-24 → 2011-01-22 (-2d) | 2011-01-24 → 2011-01-22 (-2d) |  |  |  |
| A1860 | Slab Formwork & Rft. Part2 | 2011-01-27 → 2011-01-25 (-2d) | 2011-02-07 → 2011-02-05 (-2d) |  |  |  |
| A1880 | Slab Pouring | 2011-02-08 → 2011-02-06 (-2d) | 2011-02-08 → 2011-02-06 (-2d) |  |  |  |
| A1890 | columns Formwork & Rft. Part1 | 2011-02-10 → 2011-02-08 (-2d) | 2011-02-19 → 2011-02-16 (-3d) |  |  | A2120 FS+7d, A1880 FS+1d → A1880 FS+1d |
| A1910 | columns Formwork & Rft. Part 2 | 2011-02-19 → 2011-02-16 (-3d) | 2011-02-27 → 2011-02-24 (-3d) |  |  |  |
| A1900 | Columns Pouring Part1 | 2011-02-20 → 2011-02-17 (-3d) | 2011-02-20 → 2011-02-17 (-3d) |  |  |  |
| A1920 | Slab Formwork & Rft. Part1 | 2011-02-22 → 2011-02-20 (-2d) | 2011-03-05 → 2011-03-02 (-3d) |  |  |  |
| A1940 | Columns Pouring Part2 | 2011-02-28 → 2011-02-26 (-2d) | 2011-02-28 → 2011-02-26 (-2d) |  |  |  |
| A1960 | Slab Formwork & Rft. Part2 | 2011-03-03 → 2011-03-01 (-2d) | 2011-03-14 → 2011-03-12 (-2d) |  |  |  |
| A1980 | Slab Pouring | 2011-03-15 → 2011-03-13 (-2d) | 2011-03-15 → 2011-03-13 (-2d) |  |  |  |
| A2130 | columns Formwork & Rft. | 2011-03-19 → 2011-03-16 (-3d) | 2011-03-23 → 2011-03-21 (-2d) |  |  |  |
| A2140 | Columns Pouring | 2011-03-24 → 2011-03-22 (-2d) | 2011-03-24 → 2011-03-22 (-2d) |  |  |  |
| A2150 | Slab Formwork & Rft. | 2011-03-26 → 2011-03-23 (-3d) | 2011-04-02 → 2011-03-30 (-3d) |  |  |  |
| A2160 | Slab Pouring | 2011-04-03 → 2011-03-31 (-3d) | 2011-04-03 → 2011-03-31 (-3d) |  |  |  |
