# 4229-420, Hilal development project&pj

How a schedule from Primavera P6 changed from version to version. A marks actual dates.

## Version 1 (data date 2012-06-02, saved 2012-06-20, file MERGE PROJECTS.xer)

Note of the change: Tertiary change

| ID | WBS | Task | Duration | Start | Finish | Predecessors | Complete | Total float | Constraint |
| --- | --- | --- | --- | --- | --- | --- | --- | --- | --- |
| PMS100 |  | Compile Sealines and transportation bid package | 14d | 2012-06-03 | 2012-06-20 |  |  | 57d |  |
| OFF02 |  | Compile Platfrom installation ITB | 5d | 2012-06-13 | 2012-06-19 |  |  | 0d | start on 2012-06-13 |
| OFF04 |  | Bid platfrom installation package | 60d | 2012-06-20 | 2012-09-18 | OFF02 |  | 0d |  |
| PM01 |  | Compile transportation and sealines package | 15d | 2012-06-20 | 2012-07-10 |  |  | 0d | start on 2012-06-20 |
| PMS105 |  | Negotiation/award sealines and transporation package | 90d | 2012-06-21 | 2012-11-07 | PMS100 |  | 57d |  |
| PM04 |  | Negotiate Sealines and transportation package | 65d | 2012-07-11 | 2012-10-16 | PM01 |  | 55d |  |
| OFF06 |  | TE platfrom installation package | 21d | 2012-09-19 | 2012-10-17 | OFF04 |  | 0d |  |
| PM06 |  | Award transportation and sealines package | 10d | 2012-10-17 | 2012-11-06 | PM04 |  | 55d |  |
| OFF10 |  | CE and negotiation platfrom installation package | 50d | 2012-10-18 | 2013-01-02 | OFF06 |  | 0d |  |
| PM16 |  | Mobilizae transportation and sealines contractor | 14d | 2012-11-07 | 2012-11-26 | PM06 |  | 55d |  |
| PMS110 |  | Mobilization of Sealines and transportation Contractor | 21d | 2012-11-08 | 2012-12-06 | PMS105 |  | 57d |  |
| PMS02 |  | Transport Jacket and piles | 14d | 2012-11-27 | 2012-12-16 | PM16 |  | 55d |  |
| PMS03 |  | Transport sealine spools to site | 14d | 2012-11-27 | 2012-12-16 | PM16 |  | 57d |  |
| PMS01 |  | Transport deck/topsides to site | 14d | 2012-12-09 | 2012-12-26 | PMS110 |  | 57d |  |
| OFF20 |  | Award offshore installation package | 7d | 2013-01-03 | 2013-01-13 | OFF10 |  | 0d |  |
| OFF30 |  | Mobilize platform installation contractor | 30d | 2013-01-14 | 2013-02-24 | OFF20 |  | 0d |  |
| PMS00 |  | Preinstallation survey | 5d | 2013-02-25 | 2013-03-03 | OFF30, PM16, GM04, GM04 |  | 0d |  |
| PMS04 |  | Install jacket | 2d | 2013-03-04 | 2013-03-05 | PMS02, PMS00 |  | 0d |  |
| PMS09 |  | Install sealines | 10d | 2013-03-04 | 2013-03-17 | PMS00, PMS03 |  | 2d |  |
| PMS05 |  | Drive piles | 8d | 2013-03-06 | 2013-03-17 | PMS04 |  | 0d |  |
| PMS06 |  | Install deck/topside module | 2d | 2013-03-18 | 2013-03-19 | PMS01, PMS05 |  | 0d |  |
| PMS10 |  | Tie-in risers and sealines | 4d | 2013-03-20 | 2013-03-25 | PMS09, PMS06 |  | 0d |  |
| PMS20 |  | Post-installation survey | 7d | 2013-03-26 | 2013-04-03 | PMS10 |  | 0d |  |
| PMS90 |  | Release platform and transfer custody to Drilling | 1d | 2013-04-04 | 2013-04-04 | PMS20 |  | 0d |  |
| DRIL00 |  | Mobilize Drilling Rig | 5d | 2013-04-07 | 2013-04-11 | PMS90 SS+1d |  | 0d |  |
| DRIL01 |  | Drill well no. 1 | 55d | 2013-04-14 | 2013-06-27 | DRIL00 |  | 0d |  |
| DRIL10 |  | Complete Well no. 1 | 45d | 2013-06-30 | 2013-08-29 | DRIL01 |  | 0d |  |
| PMS91 |  | Mechanical complete and hookup well no. 1 | 10d | 2013-09-01 | 2013-09-12 | DRIL10 |  | 0d |  |
| PMS96 |  | Final precommissioning and commissioning | 10d | 2013-09-15 | 2013-09-26 | PMS91 |  | 0d |  |
| GUP01 |  | Startup and first oil | 0d | 2013-09-26 | 2013-09-26 | PMS96 |  | 0d |  |
|  | 1 | **General Milestones** |  | 2011-08-15 | 2013-04-07 |  |  |  |  |
| 4229GM10 |  | Project Coming into force / Kick-off meeting | 0d | 2011-08-15 A | 2011-08-15 A |  | 100% |  |  |
| 4229GM140 |  | Change order 1 approval | 0d | 2011-10-16 A | 2011-10-16 A | 4229GM10 FS+42d | 100% |  |  |
| 4229GM110 |  | Material delivered at site- except Choke valve (offshore installation) | 0d | 2013-01-16 | 2013-01-16 | 4229PSV100, 4229PPB100, 4229PIB100, 4229PFI100, 4229PSG100, 4229PRS100, 4229PMP100 FF, 4229PSU100, 4229PNA100, 4229PEB100, 4229PIB1090, 4229PRV100, 4229PVE100, 4229PTA100, 4229POV100 |  | 253d |  |
| 4229GM100 |  | Engineering completion | 0d | 2013-02-12 | 2013-02-12 | 4229GM80, 4229ELP500, 4229ELP70, 4229ELP80, 4229ELP230, 4229ELP260, 4229ELP390, 4229ELP40, 4229ELP480, 4229ELP90, 4229ELP410, 4229ELP100, 4229ELP120, 4229ELP180, 4229ELP340, 4229ELP240, 4229ELP270, 4229ELP170, 4229ELP570, 4229EPR90, 4229EPR120, 4229EPR190, 4229EPI80, 4229EPI160, 4229EPI230, 4229EPI250, 4229EPI50, 4229EPI30, A1010, 4229EME70, 4229EME10, 4229EOF260, 4229EOF560, 4229EOF440, 4229EOF80, 4229EOF480, 4229EEL120, 4229EEL30, 4229EIN100, 4229EIN410, 4229EIN430, 4229EIN270, 4229EIN250, 4229EIN210, 4229EPL420, 4229EPL450, 4229EPL490, 4229EPL20, 4229EPL140, 4229EPL150, 4229ETE20, 4229ETE10, 4229GM90, 4229ELP450, 4229ELP490, 4229ELP190, 4229ELP290, 4229EPR110, 4229EPR170, 4229EPR20, 4229EPR80, 4229EPI170, 4229EPI110, 4229EPI70, 4229EPI200, 4229EOF520, 4229EOF150, 4229EOF40, 4229EOF320, 4229EOF380, 4229EOF250, 4229EEL270, 4229EEL110, 4229EEL160, 4229EEL240, 4229EEL150, 4229EEL140, 4229EIN470, 4229EIN530, 4229EIN310, 4229EPR300, 4229EIN180, 4229EIN40, 4229EIN320, 4229EPL170, 4229EPL350, 4229EPL440, 4229EPL480, 4229EPL340, 4229EPL250, 4229EPL10, 4229ELP520, 4229ELP220, 4229ELP380, 4229ELP370, 4229ELP130, 4229ELP210, 4229EPR100, 4229EPR140, 4229EPI130, 4229EPI150, 4229EME140, 4229EOF200, 4229EOF170, 4229EOF570, 4229EOF450, 4229EOF90, 4229EOF370, 4229EOF180, 4229EEL190, 4229EEL170, 4229EEL200, 4229EEL210, 4229EEL10, 4229EIN130, 4229EIN560, 4229EIN160, 4229EPL430, 4229EPL160, 4229EPL220, 4229EPL60, 4229EPL70, 4229EPL210, 4229EPV30, 4229GM40, 4229ELP200, 4229ELP50, 4229ELP590, 4229ELP400 FF, 4229EPR10, 4229EPR180, 4229EPI120, 4229EPI180, A1000, 4229EME20, 4229EME40, 4229EME130, 4229EME100, 4229EOF590, 4229EOF10, 4229EOF390, 4229EOF490, 4229EOF510, 4229EOF460, 4229EEL90, 4229EEL180, 4229EEL50, 4229EEL20, 4229EEL300, 4229EEL40, 4229EEL130, 4229EIN60, 4229EIN70, 4229EIN440, 4229EIN460, 4229EIN360, 4229EIN340, 4229EIN170, 4229EIN220, 4229EPL390, 4229EPL330, 4229EPL460, 4229EPL470, 4229EPL190, 4229EPL90, 4229EPL100, 4229EPL130, 4229EPV50, 4229EPV60, 4229ETE30, 4229ETE150, 4229GM10, 4229ELP530, 4229ELP140, 4229ELP250, 4229ELP160, 4229ELP350, 4229ELP600, 4229ELP60, 4229EPR50, 4229EPR150, 4229EPI40, 4229EPI100, 4229EPI220, 4229EPI260, 4229EPI10, 4229EPI140, 4229EME160, 4229EOF310, 4229EOF130, 4229EOF420, 4229EOF30, 4229EOF500, 4229EOF530, 4229EOF470, 4229EOF190, 4229EOF430, 4229EIN450, 4229EIN520, 4229EIN300, 4229EIN590, 4229EIN550, 4229EIN230, 4229EIN110, 4229EIN20, 4229EPL290, 4229EPL410, 4229EPL280, 4229EPL80, 4229EPV20, 4229GM130, 4229GM60, 4229ELP460, 4229ELP470, 4229ELP10, 4229ELP280, 4229ELP560, 4229EPR220, 4229EPR210, 4229EPR230, 4229EPR160, 4229EPR130, 4229EPR40, 4229EPI60, A1020, 4229EPI90, 4229EME50, 4229EME150, 4229EOF580, 4229EOF290, 4229EOF600, 4229EOF280, 4229EOF350, 4229EOF340, 4229EOF100, 4229EOF110, 4229EEL100, 4229EEL60, 4229EIN200, 4229EIN420, 4229EIN190, 4229EIN540, 4229EIN380, 4229EIN350, 4229EIN90, 4229EIN30, 4229EIN260, 4229EIN10, 4229EPL380, 4229EPL200, 4229EPL300, 4229EPV40, 4229GM20, 4229ELP510, 4229ELP110, 4229ELP30, 4229ELP300, 4229ELP540, 4229ELP550, 4229EPI190, 4229EPI240, 4229EPI270, 4229EME90, 4229EME60, 4229EOF410, 4229EOF270 FS+5d, 4229EOF550, 4229EOF230, 4229EOF140, 4229EOF240, 4229EOF50, 4229EOF630, 4229EEL250, 4229EEL260, 4229EEL220, 4229EEL290, 4229EEL70, 4229EEL230, 4229EIN240, 4229EIN400, 4229EIN390, 4229EIN370, 4229EIN290, 4229EIN80, 4229EPL240, 4229EPL320, 4229EPL260, 4229EPL270, 4229EPL50, 4229EPL30, 4229EPL110, 4229EPL360, 4229EPL180, 4229EPL40, A1630, 4229GM70, 4229GM50, 4229GM30, 4229ELP360, 4229ELP150, 4229ELP20, 4229ELP610, 4229ELP330, 4229EPR30, 4229EPR70, 4229EPR60, 4229EPR200, 4229EPI20, 4229EME30, 4229EME80, 4229EME110, 4229EOF610, 4229EOF20, 4229EOF160, 4229EOF60, 4229EOF70, 4229EOF330, 4229EOF300, 4229EEL80, 4229EIN280, 4229EIN140, 4229EIN150, 4229EIN120, 4229EIN330, 4229EIN50, 4229EPL310, 4229EPL230, 4229EPL400, 4229EPL120, 4229EPL370, 4229EPV10, 4229ETE160, 4229PFV210, 4229EME210 |  | 162d |  |
| 4229GM120 |  | Enppi scope completion | 0d | 2013-03-11 | 2013-03-11 | 4229PTA100 FF, 4229PKR100, 4229PIJ100, 4229PHB110, 4229PPB120 FF, 4229PNA100 FF, 4229PIB1090 FF, 4229EIN510 FF, 4229EPL500 FF, 4229EPL510 FF, 4229PMP100 FF, 4229PSU100 FF, 4229PEB100 FF, 4229PFI100 FF, 4229GM100 FF, 4229EPL530 FF, 4229PHS100, 4229PFF100 FF, 4229PPB100 FF, 4229PPV110 FF, 4229PRV100 FF, 4229PVE100 FF, 4229PPL120, 4229PFG100 FF, 4229PFG170 FF, 4229PCP100 FF, 4229PSV100 FF, 4229POV100 FF, 4229PPV120 FF, 4229GM110 FF, 4229EPL520 FF, 4229EPL540 FF, 4229PSG100 FF, 4229ELP580 FF, 4229EIN500 FF, 4229EIN490 FF, 4229EPV70 FF, 4229PAF100, 4229EIN480 FF, 4229EPL550 FF, 4229EPV80 FF, 4229PFL100, 4229PTR100 FF, 4229PIB100 FF, 4229PCV100 FF, 4229PCI100 FF, 4229ELP620 FF, 4229EEL280 FF |  | 199d |  |
|  | 5 | **L/O & Sea Fastening** |  | 2012-09-15 | 2013-04-07 |  |  |  |  |
|  | 3 | **01st Trip (P/L Spools 18" & 8")** |  | 2012-09-15 | 2012-10-22 |  |  |  |  |
| LOPS01 |  | Arrival of 01st Shipment Material Barge ( P/L Spools) | 0d | 2012-09-15 | 2012-09-15 |  |  | 0d | start on 2012-09-15 |
| LOPS11 |  | Arrival of 01st Shipment Material Barge ( P/L Spools) | 0d | 2012-09-15 | 2012-09-15 |  |  | 0d | start on 2012-09-15 |
| LOPS21 |  | Arrival of 01st Shipment Material Barge ( P/L Spools) | 0d | 2012-09-15 | 2012-09-15 |  |  | 0d | start on 2012-09-15 |
| LOPS31 |  | Arrival of 01st Shipment Material Barge ( P/L Spools) | 0d | 2012-09-15 | 2012-09-15 |  |  | 0d | start on 2012-09-15 |
| LOPS02 |  | 1st Shipment Material Barge Preparation | 12d | 2012-10-03 | 2012-10-17 | LOPS01 |  | 136d |  |
| LOPS12 |  | 1st Shipment Material Barge Preparation | 12d | 2012-10-03 | 2012-10-17 | LOPS11 |  | 136d |  |
| LOPS22 |  | 1st Shipment Material Barge Preparation | 12d | 2012-10-03 | 2012-10-17 | LOPS21 |  | 136d |  |
| LOPS32 |  | 1st Shipment Material Barge Preparation | 12d | 2012-10-03 | 2012-10-17 | LOPS31 |  | 136d |  |
| LOPS03 |  | L/O & Sea Fastening (P/L Spools 18" & 8") | 4d | 2012-10-18 | 2012-10-22 | LOPS02 |  | 136d |  |
| LOPS13 |  | L/O & Sea Fastening (P/L Spools 18" & 8") | 4d | 2012-10-18 | 2012-10-22 | LOPS12 |  | 136d |  |
| LOPS23 |  | L/O & Sea Fastening (P/L Spools 18" & 8") | 4d | 2012-10-18 | 2012-10-22 | LOPS22 |  | 136d |  |
| LOPS33 |  | L/O & Sea Fastening (P/L Spools 18" & 8") | 4d | 2012-10-18 | 2012-10-22 | LOPS32 |  | 136d |  |
|  | 1 | **02nd Trip (Jacket & Piles)** |  | 2012-12-01 | 2013-01-31 |  |  |  |  |
| LOJK01 |  | Arrival of 02nd Shipment Material Barge ( Jacket and Piles ) | 0d | 2012-12-01 | 2012-12-01 |  |  | 0d | start on 2012-12-01 |
| LOJK11 |  | Arrival of 02nd Shipment Material Barge ( Jacket and Piles ) | 0d | 2012-12-01 | 2012-12-01 |  |  | 0d | start on 2012-12-01 |
| LOJK21 |  | Arrival of 02nd Shipment Material Barge ( Jacket and Piles ) | 0d | 2012-12-01 | 2012-12-01 |  |  | 0d | start on 2012-12-01 |
| LOJK31 |  | Arrival of 02nd Shipment Material Barge ( Jacket and Piles ) | 0d | 2012-12-01 | 2012-12-01 |  |  | 0d | start on 2012-12-01 |
| LOJK02 |  | 02nd Shipment Material Barge Preparation | 12d | 2013-01-09 | 2013-01-22 | LOJK01, LOJK01 SS |  | 26d |  |
| LOJK12 |  | 02nd Shipment Material Barge Preparation | 12d | 2013-01-09 | 2013-01-22 | LOJK11, LOJK11 SS |  | 26d |  |
| LOJK22 |  | 02nd Shipment Material Barge Preparation | 12d | 2013-01-09 | 2013-01-22 | LOJK21, LOJK21 SS |  | 26d |  |
| LOJK32 |  | 02nd Shipment Material Barge Preparation | 12d | 2013-01-09 | 2013-01-22 | LOJK31, LOJK31 SS |  | 26d |  |
| LOJK03 |  | L/O & Sea fastening ( Jacket & Piles ) | 7d | 2013-01-23 | 2013-01-31 | LOJK02 |  | 26d |  |
| LOJK13 |  | L/O & Sea fastening ( Jacket & Piles ) | 7d | 2013-01-23 | 2013-01-31 | LOJK12 |  | 26d |  |
| LOJK23 |  | L/O & Sea fastening ( Jacket & Piles ) | 7d | 2013-01-23 | 2013-01-31 | LOJK22 |  | 26d |  |
| LOJK33 |  | L/O & Sea fastening ( Jacket & Piles ) | 7d | 2013-01-23 | 2013-01-31 | LOJK32 |  | 26d |  |
|  | 2 | **03rd Trip ( Deck)** |  | 2013-03-02 | 2013-04-07 |  |  |  |  |
| LODK01 |  | Arrival of 03rd Shipment Material Barge ( Deck C/W TSF ) | 0d | 2013-03-02 | 2013-03-02 |  |  | -0d | start on 2013-03-01 |
| LODK11 |  | Arrival of 03rd Shipment Material Barge ( Deck C/W TSF ) | 0d | 2013-03-02 | 2013-03-02 |  |  | -0d | start on 2013-03-01 |
| LODK21 |  | Arrival of 03rd Shipment Material Barge ( Deck C/W TSF ) | 0d | 2013-03-02 | 2013-03-02 |  |  | -0d | start on 2013-03-01 |
| LODK31 |  | Arrival of 03rd Shipment Material Barge ( Deck C/W TSF ) | 0d | 2013-03-02 | 2013-03-02 |  |  | -0d | start on 2013-03-01 |
| LODK02 |  | 3rd Shipment Material Barge Preparation | 12d | 2013-03-17 | 2013-03-30 | LODK01 |  | 0d |  |
| LODK12 |  | 3rd Shipment Material Barge Preparation | 12d | 2013-03-17 | 2013-03-30 | LODK11 |  | 0d |  |

| ID | WBS | Task | Duration | Start | Finish | Predecessors | Complete | Total float | Constraint |
| --- | --- | --- | --- | --- | --- | --- | --- | --- | --- |
| LODK22 |  | 3rd Shipment Material Barge Preparation | 12d | 2013-03-17 | 2013-03-30 | LODK21 |  | 0d |  |
| LODK32 |  | 3rd Shipment Material Barge Preparation | 12d | 2013-03-17 | 2013-03-30 | LODK31 |  | 0d |  |
| LODK03 |  | L/O & Sea fastening ( Deck) | 7d | 2013-03-31 | 2013-04-07 | LODK02 |  | 0d |  |
| LODK13 |  | L/O & Sea fastening ( Deck) | 7d | 2013-03-31 | 2013-04-07 | LODK12 |  | 0d |  |
| LODK23 |  | L/O & Sea fastening ( Deck) | 7d | 2013-03-31 | 2013-04-07 | LODK22 |  | 0d |  |
| LODK33 |  | L/O & Sea fastening ( Deck) | 7d | 2013-03-31 | 2013-04-07 | LODK32 |  | 0d |  |
|  | 7 | **General activities** |  | 2011-08-15 | 2012-06-04 |  |  |  |  |
| 4229GM50 |  | Platform Installation package- Approval | 20d | 2011-08-15 A | 2011-10-23 A | 4229GM30 | 100% |  |  |
| 4229GM30 |  | Platform fabrication package- Approval | 42d | 2011-08-15 A | 2011-10-23 A | 4229GM10 | 100% |  |  |
| 4229GM70 |  | P/L Installation package- Approval | 25d | 2011-09-28 A | 2011-11-02 A | 4229GM30 SS+30d | 100% |  |  |
| 4229GM20 |  | Project Design basis IFA | 10d | 2011-09-29 A | 2011-10-23 A | 4229EPR20 | 100% |  |  |
| 4229GM150 |  | Project quality assurance plan | 20d | 2011-10-17 A | 2011-11-13 A |  | 100% |  |  |
| 4229GM80 |  | Platform Installation package- Final | 20d | 2011-10-23 A | 2011-10-24 A | 4229GM50 FS+10d | 100% |  |  |
| 4229GM60 |  | Platform fabrication package- Final | 15d | 2011-10-23 A | 2011-10-24 A | 4229GM30 FS+10d | 100% |  |  |
| 4229GM40 |  | Final Project Design basis | 10d | 2011-11-14 A | 2011-11-27 A | 4229GM20 FS+10d | 100% |  |  |
| 4229GM90 |  | P/L Installation package- Final | 20d | 2011-11-24 A | 2011-11-29 A | 4229GM70 FS+10d | 100% |  |  |
| 4229GM130 |  | Internal Design Review meeting | 2d | 2012-06-03 | 2012-06-04 | 4229EPR80, 4229EPR130, 4229EPR120, 4229ELP150 |  | 333d |  |
|  | 2 | **Engineering** |  | 2011-08-15 | 2013-01-03 |  |  |  |  |
|  | 1 | **Process** |  | 2011-08-16 | 2012-08-02 |  |  |  |  |
|  | 1 | **Drawings /lists** |  | 2011-09-12 | 2012-07-10 |  |  |  |  |
| 4229EPR20 |  | Isuue PFD's / UFD's & material balance -Approval | 13d | 2011-09-12 A | 2011-09-27 A | 4229GM10 FS+1d, 4229EPR50 | 100% |  |  |
| 4229EPR40 |  | Issue P&ID'S / Equipment list-Approval | 10d | 2011-09-28 A | 2011-10-25 A | 4229EPR20 FS-1d, 4229GM10 | 100% |  |  |
| 4229EPR270 |  | GUPCO approval on PFD's & material balance | 10d | 2011-09-29 A | 2011-10-24 A | 4229EPR20 | 100% |  |  |
| 4229EPR280 |  | GUPCO approval on P&ID'S / Equipment list | 10d | 2011-10-24 A | 2011-11-22 A | 4229EPR40 | 100% |  |  |
| 4229EPR80 |  | Isuue PFD's / UFD's & material balance -Design | 7d | 2011-10-25 A | 2011-10-30 A | 4229EPR270, 4229EPR20 FS+10d, 4229EPR40, 4229EPR50 FS-5d | 100% |  |  |
| 4229EPR90 |  | C&E -Approval | 8d | 2011-10-26 A | 2011-11-23 A | 4229EPR40 | 100% |  |  |
| 4229EPR120 |  | Issue P&ID'S / Equipment list-Design | 10d | 2011-11-23 A | 2011-12-06 A | 4229EPR280, 4229EPR40 FS+10d, 4229EPR80 | 100% |  |  |
| 4229EPR290 |  | GUPCO approval on cause & effect | 10d | 2011-11-24 A | 2011-12-01 A | 4229EPR90 | 100% |  |  |
| 4229EPR130 |  | C&E -Design | 8d | 2011-12-01 A | 2011-12-11 A | 4229EPR120, 4229EPR290 | 100% |  |  |
| 4229EPR320 |  | Issue P&ID'S implementing HAZOP | 10d | 2012-02-12 A | 2012-03-12 A | 4229ELP130 | 100% |  |  |
| 4229EPR190 |  | Isuue PFD's / UFD's & material balance -Construction | 10d | 2012-04-19 A | 2012-07-05 | 4229ELP130, 4229EPR180 FF+5d | 90% | 305d |  |
| 4229EPR180 |  | Issue P&ID'S / Equipment list-Construction | 15d | 2012-06-10 | 2012-06-28 | 4229PMP90 SS+30d, 4229PSV90 SS+20d, 4229PTR90 SS+30d, 4229PTA90 SS+30d, 4229PSU90 SS+30d, 4229PCI90 SS+20d |  | 136d |  |
| 4229EPR200 |  | C&E -Construction | 8d | 2012-07-01 | 2012-07-10 | 4229EPR180 |  | 291d |  |
|  | 2 | **Reports** |  | 2011-08-25 | 2012-07-31 |  |  |  |  |
| 4229EPR50 |  | Process simulation | 10d | 2011-08-25 A | 2011-09-11 A | 4229EPR10, 4229GM10 FS+5d | 100% |  |  |
| 4229EPR30 |  | Flow assurance report-Approval | 20d | 2011-09-26 A | 2011-11-03 A | 4229GM10, 4229EPR20 FS-3d | 100% |  |  |
| 4229EPR100 |  | Shutdown & control philosophy -Approval | 8d | 2011-10-26 A | 2011-11-23 A | 4229EPR40 | 100% |  |  |
| 4229EPR260 |  | Process simulation report-Approval | 8d | 2011-10-31 A | 2011-11-21 A | 4229EPR80 | 100% |  |  |
| 4229EPR220 |  | Process simulation final report | 10d | 2011-11-21 A | 2011-11-21 A | 4229EPR260 FS+5d | 100% |  |  |
| 4229EPR110 |  | Flow assurance report-Final | 5d | 2011-11-24 A | 2011-11-30 A | 4229EPR80, 4229EPR30 FS+5d | 100% |  |  |
| 4229EPR140 |  | Shutdown & control philosophy -Final | 10d | 2011-12-26 A | 2012-05-13 A | 4229EPR120 | 100% |  |  |
| 4229EPR210 |  | Commissioning ,Pre-commissioning & operating philosophy-IFA | 10d | 2012-07-01 | 2012-07-12 | 4229EPR180 |  | 292d |  |
| 4229EPR230 |  | Commissioning ,Pre-commissioning & operating philosophy-Final | 8d | 2012-07-22 | 2012-07-31 | 4229EPR210 FS+5d |  | 292d |  |
|  | 3 | **MRQ's** |  | 2011-08-16 | 2012-08-02 |  |  |  |  |
| 4229EPR10 |  | Issue MRQ for Chemical injection | 7d | 2011-08-16 A | 2011-08-24 A | 4229GM10 FS+1d | 100% |  |  |
| 4229EPR70 |  | T.E.R for Chemical injection | 20d | 2011-09-19 A | 2011-11-24 A | 4229PCI20 | 100% |  |  |
| 4229EPR60 |  | Issue MRQ for PSV | 5d | 2011-10-09 A | 2011-10-19 A | 4229EPR20 FS+5d | 100% |  |  |
| 4229EPR160 |  | T.E.R for PSV | 20d | 2011-11-17 A | 2012-01-31 A | 4229PSV20 | 100% |  |  |
| 4229EPR310 |  | RE-ISSUE T.E.R for Chemical injection | 15d | 2012-01-01 A | 2012-02-21 A |  | 100% |  |  |
| 4229EPR150 |  | MRP for Chemical injection | 3d | 2012-03-25 A | 2012-04-05 A | 4229PCI60 | 100% |  |  |
| 4229EPR250 |  | V.P.R for chemical injection | 50d | 2012-04-01 A | 2012-07-05 | 4229PCI90 SS+30d | 60% | 310d |  |
| 4229EPR170 |  | MRP for PSV | 5d | 2012-04-05 A | 2012-04-09 A | 4229PSV60 | 100% |  |  |
| 4229EPR240 |  | V.P.R for P.S.V | 40d | 2012-04-17 A | 2012-08-02 | 4229PSV90 SS+30d |  | 290d |  |
|  | 10 | **Loss prevention** |  | 2011-09-29 | 2012-10-04 |  |  |  |  |
|  | 1 | **Drawings /lists** |  | 2011-11-10 | 2012-08-30 |  |  |  |  |
| 4229ELP40 |  | Hazardous area classification schedule-IFA | 3d | 2011-11-10 A | 2011-11-13 A | 4229EPI40 | 100% |  |  |
| 4229ELP510 |  | F&G installation details -Approval | 10d | 2011-11-13 A | 2012-02-15 A | 4229ELP40 | 100% |  |  |
| 4229ELP150 |  | Hazardous area classification schedule-IFD | 3d | 2011-11-20 A | 2011-11-23 A | 4229EPI80 | 100% |  |  |
| 4229ELP70 |  | F& G detection layout -Approval | 10d | 2011-11-22 A | 2011-12-28 A | 4229EPI40 | 100% |  |  |
| 4229ELP80 |  | Fire fighting, Safety equipment & escape route layout-Approval | 10d | 2011-11-22 A | 2011-12-29 A | 4229EPI40 FS+5d | 100% |  |  |
| 4229ELP110 |  | F& G cable routing -Approval | 5d | 2012-01-01 A | 2012-01-26 A | 4229EIN140 SS | 100% |  |  |
| 4229ELP480 |  | Interconnection wiring diagram-Approval | 5d | 2012-01-04 A | 2012-02-01 A | 4229ELP80 | 100% |  |  |
| 4229ELP450 |  | F& G cable list -Approval | 5d | 2012-01-09 A | 2012-01-19 A | 4229ELP110 | 100% |  | start on or after 2012-01-09 |
| 4229ELP460 |  | F& G cable list -Design | 5d | 2012-01-15 A | 2012-01-24 A | 4229ELP260 FS+7d | 100% |  |  |
| 4229ELP220 |  | F& G detection layout -Design | 15d | 2012-01-19 A | 2012-02-27 A | 4229EPI80 FS+10d | 100% |  |  |
| 4229ELP230 |  | Fire fighting, Safety equipment & escape route layout-Design | 15d | 2012-01-29 A | 2012-01-29 A | 4229EPI80 | 100% |  | start on or after 2012-01-01 |
| 4229ELP260 |  | F& G cable routing -Design | 10d | 2012-01-29 A | 2012-02-06 A | 4229EIN280 SS | 100% |  |  |
| 4229ELP520 |  | F&G installation details -Design | 10d | 2012-02-26 A | 2012-06-03 | 4229ELP150 | 100% | 330d |  |
| 4229ELP490 |  | Interconnection wiring diagram-Design | 10d | 2012-03-15 A | 2012-03-20 A | 4229ELP230 FS+5d | 100% |  |  |
| 4229ELP360 |  | F& G detection layout -Construction | 15d | 2012-07-22 | 2012-08-09 | 4229EPI160 |  | 280d |  |

| ID | WBS | Task | Duration | Start | Finish | Predecessors | Complete | Total float | Constraint |
| --- | --- | --- | --- | --- | --- | --- | --- | --- | --- |
| 4229ELP370 |  | Hazardous area classification schedule-IFC | 3d | 2012-07-22 | 2012-07-24 | 4229EPI160 |  | 277d |  |
| 4229ELP380 |  | Fire fighting, Safety equipment & escape route layout-Construction | 10d | 2012-07-22 | 2012-08-02 | 4229EPI160 |  | 275d |  |
| 4229ELP390 |  | F& G cable routing -Construction | 10d | 2012-07-29 | 2012-08-09 | 4229EIN460 SS |  | 275d |  |
| 4229ELP470 |  | F& G cable list -Construction | 5d | 2012-08-05 | 2012-08-09 | 4229ELP390 FF |  | 280d |  |
| 4229ELP500 |  | Interconnection wiring diagram-Construction | 10d | 2012-08-05 | 2012-08-16 | 4229ELP380 |  | 275d |  |
| 4229ELP530 |  | F&G installation details -Construction | 5d | 2012-08-26 | 2012-08-30 | 4229ELP380, 4229ELP390, 4229ELP470, 4229ELP80, 4229ELP370, 4229ELP500, 4229ELP450, 4229ELP260, 4229ELP150, 4229ELP510, 4229ELP220, 4229ELP490, 4229ELP520, 4229ELP70, 4229ELP110, 4229ELP40, 4229ELP460, 4229ELP360, 4229ELP230, 4229ELP480 |  | 275d |  |
|  | 2 | **Reports** |  | 2011-09-29 | 2012-08-16 |  |  |  |  |
| 4229ELP10 |  | HSE Plan -Approval | 10d | 2011-09-29 A | 2011-10-13 A | 4229EPR20 | 100% |  |  |
| 4229ELP30 |  | HSE philosophy - Approval | 10d | 2011-10-16 A | 2011-11-03 A | 4229ELP10 | 100% |  |  |
| 4229ELP20 |  | HSE Plan -Final | 5d | 2011-11-13 A | 2011-11-15 A | 4229ELP10 FS+5d | 100% |  |  |
| 4229ELP90 |  | HSE philosophy - Final | 5d | 2011-11-20 A | 2011-11-23 A | 4229ELP30 FS+5d | 100% |  |  |
| 4229ELP100 |  | Fire & explosion HAZARD analysis- Approval | 15d | 2011-11-22 A | 2011-11-23 A | 4229EPI40 | 100% |  |  |
| 4229ELP130 |  | HAZOP meeting /Report | 10d | 2012-02-02 A | 2012-02-21 A | 4229EPR120 FS+1d | 100% |  | start on 2012-02-06 |
| 4229ELP190 |  | SCE performance standards-Approval | 10d | 2012-02-09 A | 2012-02-22 A | 4229ELP140 FS+12d | 100% |  |  |
| 4229ELP140 |  | Fire & Explosion HAZARD analysis- Final | 10d | 2012-02-16 A | 2012-03-05 A | 4229ELP100 FS+9d | 100% |  |  |
| 4229ELP50 |  | Update & issue safety life cycle-Approval | 0d | 2012-02-19 A | 2012-02-23 A | 4229ELP10 FS+36d | 100% |  |  |
| 4229ELP200 |  | QRA -Approval | 15d | 2012-02-26 A | 2012-03-20 A | 4229EPI80 FS+15d | 100% |  |  |
| 4229ELP270 |  | SCE performance standards-Final | 5d | 2012-03-15 A | 2012-03-20 A | 4229ELP190 FS+10d | 100% |  |  |
| 4229ELP210 |  | HAZOP close out report | 15d | 2012-03-28 A | 2012-06-10 | 4229ELP130 FS+30d | 60% | 296d |  |
| 4229ELP240 |  | HAZID report | 10d | 2012-03-28 A | 2012-05-03 A | 4229EPI80 FS+10d | 100% |  |  |
| 4229ELP250 |  | ENVID report | 10d | 2012-03-28 A | 2012-05-03 A | 4229ELP240 SS | 100% |  |  |
| 4229ELP280 |  | PSSR report-Approval | 15d | 2012-03-31 A | 2012-03-31 A | 4229EPI80 FS+20d | 100% |  |  |
| 4229ELP350 |  | PSSR report-Final | 10d | 2012-03-31 A | 2012-03-31 A | 4229ELP280 FS+10d | 100% |  |  |
| 4229ELP540 |  | Update & issue safety life cycle-Design | 22d | 2012-04-05 A | 2012-04-10 A | 4229ELP50 | 100% |  |  |
| 4229ELP300 |  | QRA -Final | 15d | 2012-04-15 A | 2012-04-18 A | 4229ELP200 FS+5d | 100% |  |  |
| 4229ELP160 |  | SIL Review report-Approval | 10d | 2012-04-19 A | 2012-05-09 A | 4229EPR130, 4229EPR120, 4229ELP130 SS | 100% |  | start on or after 2012-04-19 |
| 4229ELP410 |  | SIL Review report-Final | 11d | 2012-04-23 A | 2012-05-30 A | 4229ELP160 FS+5d | 100% |  |  |
| 4229ELP120 |  | SAMS report-Approval | 10d | 2012-06-11 | 2012-06-24 | 4229ELP130 FF, 4229ELP190, 4229ELP280, 4229ELP30, 4229ELP210, 4229ELP130, 4229ELP250, 4229ELP160, 4229ELP200, 4229ELP240 |  | 296d |  |
| 4229ELP180 |  | SAMS report-Final | 10d | 2012-07-02 | 2012-07-15 | 4229ELP120 FS+5d |  | 296d |  |
| 4229ELP340 |  | HAZARD register | 8d | 2012-07-16 | 2012-07-25 | 4229ELP90, 4229ELP120, 4229ELP180, 4229ELP300, 4229ELP190, 4229ELP160, 4229ELP30, 4229ELP240, 4229ELP210, 4229ELP10, 4229ELP20, 4229ELP100, 4229ELP250, 4229ELP130, 4229ELP280, 4229ELP50, 4229ELP140, 4229ELP200 |  | 296d |  |
| 4229ELP290 |  | CHAZOP review report | 12d | 2012-08-01 | 2012-08-16 | 4229ELP210 FS+12d, 4229PSG90 SS+60d |  | 280d |  |
|  | 3 | **MRQ's** |  | 2011-11-21 | 2012-10-04 |  |  |  |  |
| 4229ELP60 |  | MRQ for fire fighting system | 8d | 2011-11-21 A | 2011-11-22 A | 4229EPI40 | 100% |  |  |
| 4229ELP550 |  | MRQ for fire & Gas detection | 2d | 2011-11-28 A | 2012-01-01 A |  | 100% |  |  |
| 4229ELP590 |  | MRQ for life saving equioment | 5d | 2011-12-29 A | 2012-01-02 A | 4229ELP550 FF | 100% |  |  |
| 4229ELP600 |  | T.E.R for life saving equipment | 15d | 2012-02-15 A | 2012-05-15 A | 4229PFG120 | 100% |  |  |
| 4229ELP560 |  | T.E.R for fire & Gas detection | 15d | 2012-02-27 A | 2012-05-03 A | 4229PFG20 | 100% |  |  |
| 4229ELP170 |  | T.E.R for fire fighting system | 20d | 2012-04-03 A | 2012-05-29 A | 4229PFF20 | 100% |  | start on or after 2012-04-03 |
| 4229ELP610 |  | MRP for life saving equipment | 5d | 2012-05-15 A | 2012-05-15 A | 4229PFG140 | 100% |  |  |
| 4229ELP620 |  | V.P.R for life saving equipment | 30d | 2012-05-15 A | 2012-05-15 A | 4229PFG160 SS+30d | 100% |  |  |
| 4229ELP570 |  | MRP for fire & Gas detection | 5d | 2012-05-28 A | 2012-05-29 A | 4229PFG60 | 100% |  |  |
| 4229ELP330 |  | MRP for fire fighting system | 5d | 2012-06-27 | 2012-07-03 | 4229PFF60 |  | 189d |  |
| 4229ELP580 |  | V.P.R for fire & Gas detection | 35d | 2012-07-15 | 2012-09-06 | 4229PFG90 SS+30d |  | 270d |  |
| 4229ELP400 |  | V.P.R for fire fighting system | 30d | 2012-08-26 | 2012-10-04 | 4229PFF90 SS+30d |  | 250d |  |
|  | 4 | **Additional studies** |  | 2012-02-15 | 2012-05-10 |  |  |  |  |
| A1620 |  | Riser impact risk assessment study -IFA | 1d | 2012-02-15 A | 2012-02-27 A |  | 100% |  |  |
| A1630 |  | Final Riser impact risk assessment study | 5d | 2012-02-28 A | 2012-05-10 A |  | 100% |  |  |
|  | 2 | **Piping** |  | 2011-08-15 | 2012-09-30 |  |  |  |  |
|  | 1 | **Drawing/ lists** |  | 2011-10-24 | 2012-09-06 |  |  |  |  |
| 4229EPI20 |  | Line designation table -Approval | 6d | 2011-10-24 A | 2012-01-02 A | 4229EPR40 | 100% |  |  |
| 4229EPI240 |  | Piping & Valves classes - Approval (Deleted) | 5d | 2011-10-24 A | 2011-12-06 A | 4229EPR40 | 100% |  |  |
| 4229EPI260 |  | Piping & Valves classes - Design | 5d | 2011-10-24 A | 2011-12-06 A | 4229EPR120 | 100% |  |  |
| 4229EPI40 |  | Issue plot plans-Approval | 10d | 2011-10-26 A | 2011-11-21 A | 4229EPR40 | 100% |  |  |
| 4229EPI80 |  | Issue plot plans-Design | 15d | 2011-12-20 A | 2012-01-05 A | 4229EPR120, 4229EPI40 FS+5d | 100% |  |  |
| 4229EPI100 |  | Issue GA's -Approval | 28d | 2011-12-22 A | 2012-01-17 A | 4229EPI40 | 100% |  |  |
| 4229EPI120 |  | Line designation table -Design | 8d | 2012-01-10 A | 2012-01-24 A | 4229EPR120, 4229EPI20 FS+5d | 100% |  |  |
| 4229EPI130 |  | Issue GA's -Design | 20d | 2012-02-02 A | 2012-02-16 A | 4229EPI80 FF | 100% |  |  |
| 4229EPI160 |  | Issue plot plans-Construction | 15d | 2012-07-01 | 2012-07-19 | 4229PPV90 SS, 4229PRV90 SS, 4229PSG90 SS, 4229PSU90 SS, 4229PNA90 SS, 4229PCV60, 4229EPR180, 4229PVE90 SS, 4229PCI90 SS, 4229PTR90 SS, 4229PMP90 SS, 4229PSV90 SS, 4229POV90 SS |  | 136d |  |
| 4229EPI180 |  | Line designation table -Construction | 8d | 2012-07-01 | 2012-07-10 | 4229EPR180 |  | 297d |  |
| 4229EPI270 |  | Piping & Valves classes - Construction | 5d | 2012-07-01 | 2012-07-05 | 4229EPR180 |  | 310d |  |
| 4229EPI250 |  | Critical line list-Construction | 10d | 2012-07-11 | 2012-07-24 | 4229EPI180 |  | 297d |  |
| 4229EPI170 |  | Hydrotest maps & loops- Construction | 15d | 2012-07-16 | 2012-08-05 | 4229EPI190 FF+1d, 4229EPR180 |  | 289d |  |
| 4229EPI190 |  | Issue GA's / ISO's -construction(first batch) | 10d | 2012-07-22 | 2012-08-02 | 4229EPI160 |  | 136d |  |
| 4229EPI280 |  | Issue GA's / ISO's -construction(Second batch)- Final MTO | 15d | 2012-08-05 | 2012-08-30 | 4229EPI190 |  | 136d |  |
| 4229EPI220 |  | Piping supports list / MTO -IFC | 10d | 2012-08-26 | 2012-09-06 | 4229EPI190, 4229EPI280 FF+5d |  | 265d |  |
| 4229EPI230 |  | Standard pipe supports -Construction | 5d | 2012-08-26 | 2012-08-30 | 4229EPI190 SS+20d |  | 275d |  |
|  | 3 | **Reports** |  | 2012-05-24 | 2012-07-29 |  |  |  |  |
| 4229EPI200 |  | Stress analysis report | 19d | 2012-05-24 A | 2012-07-29 | 4229EPI160 | 68% | 279d |  |
|  | 2 | **MRQ's** |  | 2011-08-15 | 2012-09-30 |  |  |  |  |
| 4229EPI10 |  | Issue MRQ for L&R traps | 7d | 2011-08-15 A | 2011-08-23 A | 4229GM10 | 100% |  |  |

| ID | WBS | Task | Duration | Start | Finish | Predecessors | Complete | Total float | Constraint |
| --- | --- | --- | --- | --- | --- | --- | --- | --- | --- |
| 4229EPI30 |  | T.E.R for L&R | 15d | 2011-09-22 A | 2011-12-04 A | 4229PTR20 | 100% |  |  |
| 4229EPI60 |  | Issue MRQ for Piping bulk | 8d | 2011-11-15 A | 2011-11-24 A | 4229GM10, 4229EPR80 FF+4d | 100% |  |  |
| A1000 |  | Thermal insulation specification | 5d | 2011-11-21 A | 2011-11-24 A | 4229EPI50 SS, 4229EPI10, 4229EPI60 | 100% |  |  |
| A1010 |  | Piping fabrication and erection specification | 5d | 2011-11-21 A | 2011-11-27 A | A1000 | 100% |  |  |
| A1020 |  | Field test of piping specification. | 5d | 2011-11-21 A | 2011-11-24 A | A1010 | 100% |  |  |
| 4229EPI340 |  | Issue MRQ for Gate, Globe & butterfly valves | 1d | 2011-11-24 A | 2011-12-08 A |  | 100% |  |  |
| 4229EPI50 |  | Issue MRQ for Ball valves | 5d | 2011-11-24 A | 2011-12-08 A | 4229GM10, 4229EPR40 | 100% |  |  |
| 4229EPI90 |  | T.E.R for Piping bulk | 15d | 2011-12-22 A | 2012-01-26 A | 4229PPB20 | 100% |  |  |
| 4229EPI290 |  | T.E.R for Piping Ball Valves | 21d | 2012-01-12 A | 2012-02-13 A |  | 100% |  |  |
| 4229EPI110 |  | T.E.R for Piping Gate, Globe & Butterfly valves | 20d | 2012-01-12 A | 2012-02-08 A | 4229PPV20 | 100% |  | start on or after 2012-01-12 |
| 4229EPI70 |  | MRP for L&R | 5d | 2012-02-09 A | 2012-02-20 A | 4229PTR60 | 100% |  |  |
| 4229EPI140 |  | MRP for Piping bulk | 5d | 2012-03-19 A | 2012-03-27 A | 4229PPB60 | 100% |  |  |
| 4229EPI210 |  | V.P.R for launcher & receiver traps | 80d | 2012-03-27 A | 2012-09-30 | 4229PTR90 SS+30d |  | 254d |  |
| 4229EPI150 |  | MRP for Piping Gate, Globe & Butterfly valves | 5d | 2012-04-08 A | 2012-04-12 A | 4229PPV60 | 100% |  |  |
| 4229EPI300 |  | MRP for Piping Ball Valves | 11d | 2012-04-08 A | 2012-04-12 A | 4229PBV70 | 100% |  |  |
| 4229EPI310 |  | Additional piping bulk MRQ | 15d | 2012-04-15 A | 2012-05-16 A |  | 100% |  |  |
| 4229EPI320 |  | Additional piping bulk T.E.R | 20d | 2012-06-11 | 2012-07-08 | 4229PAP110 |  | 168d |  |
| 4229EPI330 |  | Additional piping bulk MRP | 5d | 2012-08-08 | 2012-08-14 | 4229PAP160 |  | 275d |  |
|  | 3 | **Mechanical** |  | 2011-09-25 | 2012-12-05 |  |  |  |  |
|  | 1 | **Drawings /lists** |  | 2011-09-25 | 2012-07-12 |  |  |  |  |
| 4229EME20 |  | Material selection Guide IFA | 14d | 2011-09-25 A | 2011-10-27 A | 4229EPR20 FS-4d | 100% |  |  |
| 4229EME30 |  | Motor load list IFA | 5d | 2011-10-24 A | 2011-11-16 A | 4229EPR40 | 100% |  |  |
| 4229EME40 |  | Material selection Guide IFD | 5d | 2012-01-17 A | 2012-01-22 A | 4229EPR80 | 100% |  | start on 2012-01-17 |
| 4229EME70 |  | Final Motor load list | 5d | 2012-07-01 | 2012-07-05 | 4229EPR180, 4229EPR120 |  | 295d |  |
| 4229EME210 |  | Material Selection Guide IFF | 5d | 2012-07-08 | 2012-07-12 | 4229EPR190 |  | 305d |  |
|  | 2 | **Reports** |  | 2011-11-30 | 2012-04-04 |  |  |  |  |
| 4229EME50 |  | Material handling study IFA | 10d | 2011-11-30 A | 2012-01-08 A | 4229EPI40 | 100% |  |  |
| 4229EME80 |  | Material Selection philosophy report-Approval | 10d | 2011-11-30 A | 2012-01-29 A | 4229EME50 | 100% |  |  |
| 4229EME90 |  | Final Material handling study | 6d | 2012-01-29 A | 2012-04-04 A | 4229EPI80 | 100% |  |  |
| 4229EME110 |  | Material Selection philosophy report-Final | 10d | 2012-03-04 A | 2012-03-15 A | 4229EME80 FS+5d | 100% |  |  |
|  | 3 | **MRQ's / specifications** |  | 2011-09-28 | 2012-12-05 |  |  |  |  |
| 4229EME10 |  | MRQ for cathodic protection | 15d | 2011-09-28 A | 2011-10-20 A | 4229GM10 FS+30d | 100% |  |  |
| 4229EME60 |  | T.E.R for cathodic protection | 15d | 2011-11-24 A | 2011-12-27 A | 4229PCP20 | 100% |  |  |
| 4229EME100 |  | MRP for cathodic protection | 5d | 2012-02-26 A | 2012-02-28 A | 4229PCP60 | 100% |  |  |
| 4229EME170 |  | MRQ for Progressive Cavity Pump | 5d | 2012-03-07 A | 2012-03-13 A |  | 100% |  |  |
| 4229EME130 |  | Data sheets for corrosion inhibitor pump-Purchase | 3d | 2012-03-25 A | 2012-04-04 A | 4229EPR150 SS | 100% |  |  |
| 4229EME140 |  | Data sheets for demulsifier injection pump-Purchase | 5d | 2012-03-25 A | 2012-03-27 A | 4229EPR150 SS | 100% |  |  |
| 4229EME150 |  | Data sheets for scale inhibitor -Purchase | 5d | 2012-03-25 A | 2012-03-27 A | 4229EME140 SS | 100% |  |  |
| 4229EME160 |  | Specifications for positive displacement pumps | 5d | 2012-03-25 A | 2012-03-27 A | 4229EME130 SS, 4229EME150 SS, 4229EME140 SS | 100% |  |  |
| 4229EME120 |  | V.P.R for cathodic protection | 45d | 2012-03-27 A | 2012-05-22 A | 4229PCP90 SS+30d | 100% |  |  |
| 4229EME180 |  | T.E.R. for Progressive cavity pump | 30d | 2012-04-29 A | 2012-06-05 | 4229PPC110 | 90% | 158d |  |
| 4229EME190 |  | V.P.R for Progressive Cavity pump | 100d | 2012-07-05 | 2012-12-05 | 4229PPC140 SS |  | 211d |  |
| 4229EME200 |  | MRP for Progressive Cavity pump | 5d | 2012-07-05 | 2012-07-11 | 4229PPC190 |  | 296d |  |
|  | 8 | **Pressure vessels** |  | 2011-09-25 | 2012-08-02 |  |  |  |  |
|  | 1 | **Drawings /lists** |  |  |  |  |  |  |  |
|  | 2 | **Reports** |  |  |  |  |  |  |  |
|  | 3 | **MRQ's** |  | 2011-09-25 | 2012-08-02 |  |  |  |  |
| 4229EPV10 |  | Issue MRQ for Small Tanks | 5d | 2011-09-25 A | 2011-10-24 A | 4229GM10, 4229EPI40 | 100% |  |  |
| 4229EPV20 |  | Issue MRQ for Pressure vesseles | 5d | 2011-09-25 A | 2011-11-17 A | 4229GM10 | 100% |  |  |
| 4229EPV30 |  | T.E.R for Small Tanks | 20d | 2011-11-24 A | 2011-12-29 A | 4229PTA20 | 100% |  |  |
| 4229EPV40 |  | T.E.R for Pressure Vessels | 20d | 2011-12-15 A | 2012-02-20 A | 4229PVE20 | 100% |  |  |
| 4229EPV50 |  | MRP for Small Tanks (cancelled) | 5d | 2012-03-03 A | 2012-03-03 A | 4229PTA60 | 100% |  |  |
| 4229EPV70 |  | V.P.R for Small Tanks (cancelled) | 50d | 2012-03-03 A | 2012-03-03 A | 4229PTA90 SS+30d | 100% |  |  |
| 4229EPV60 |  | MRP for Pressure Vessels | 5d | 2012-03-25 A | 2012-03-25 A | 4229PVE60 | 100% |  |  |
| 4229EPV80 |  | V.P.R for Pressure Vesseles | 40d | 2012-04-09 A | 2012-08-02 | 4229PVE90 SS+30d |  | 290d |  |
|  | 5 | **Electrical** |  | 2011-08-15 | 2012-09-06 |  |  |  |  |
|  | 1 | **Drawings /lists** |  | 2011-08-21 | 2012-09-06 |  |  |  |  |
| 4229EEL20 |  | Single line diagram -Approval | 5d | 2011-08-21 A | 2011-08-25 A | 4229EME30, 4229EEL50 | 100% |  |  |
| 4229EEL50 |  | Electrical Load analysis -Design | 5d | 2011-11-02 A | 2011-12-15 A | 4229EME30 FS+15d, 4229EPR40 | 100% |  |  |
| 4229EEL120 |  | Single line diagram -Design | 8d | 2011-11-20 A | 2011-11-27 A | 4229EEL110 FF, 4229EEL20 FS+5d, 4229EME70, 4229EEL130 FF | 100% |  |  |
| 4229EEL70 |  | Hazardous area classification layout -IFA | 10d | 2011-11-21 A | 2011-11-29 A | 4229ELP40 | 100% |  |  |
| 4229EEL80 |  | Electrical layouts IFA | 15d | 2011-11-22 A | 2011-12-08 A | 4229EPI40 | 100% |  |  |
| 4229EEL160 |  | Hazardous area classification layout -IFD | 10d | 2011-11-27 A | 2012-01-24 A | 4229EPI80 FF+5d | 100% |  |  |
| 4229EEL100 |  | Electrical cable routing layouts -Approval | 10d | 2011-11-30 A | 2011-12-20 A | 4229EEL80 | 100% |  | start on 2012-01-11 |
| 4229EEL90 |  | Cable schedule IFA | 5d | 2011-12-04 A | 2011-12-06 A | 4229EEL100 FF | 100% |  |  |
| 4229EEL190 |  | Electrical cable routing layouts -Design | 10d | 2012-01-01 A | 2012-01-30 A | 4229EPI130, 4229EEL170 FF+5d | 100% |  |  |
| 4229EEL170 |  | Electrical layouts IFD | 15d | 2012-01-08 A | 2012-01-29 A | 4229EPI80 | 100% |  |  |
| 4229EEL180 |  | Cable schedule IFD | 5d | 2012-01-19 A | 2012-02-01 A | 4229EEL190 FF, 4229EEL90 FS+5d | 100% |  |  |
| 4229EEL110 |  | Electrical Load analysis -Final | 5d | 2012-07-08 | 2012-07-12 | 4229EME70, 4229EPR120 |  | 295d |  |
| 4229EEL220 |  | Interconnection & wiring diagram- Construction | 15d | 2012-07-12 | 2012-08-01 | 4229PSG90 SS+40d, 4229PSU60 SS+40d |  | 281d |  |

| ID | WBS | Task | Duration | Start | Finish | Predecessors | Complete | Total float | Constraint |
| --- | --- | --- | --- | --- | --- | --- | --- | --- | --- |
| 4229EEL290 |  | Single line diagram -Construction | 10d | 2012-07-19 | 2012-08-01 | 4229EIN480 SS+18d |  | 291d |  |
| 4229EEL230 |  | Electrical layouts-Construction | 10d | 2012-07-22 | 2012-08-02 | 4229EPI160 |  | 275d |  |
| 4229EEL240 |  | Hazardous area classification layout -IFC | 10d | 2012-07-25 | 2012-08-07 | 4229ELP370 |  | 277d |  |
| 4229EEL260 |  | Electrical cable routing layouts -Construction | 10d | 2012-08-05 | 2012-08-16 | 4229EEL230 FF+5d, 4229EPI190 |  | 270d |  |
| 4229EEL250 |  | Cable schedule IFC | 5d | 2012-08-12 | 2012-08-16 | 4229EEL180, 4229EEL260 FF |  | 270d |  |
| 4229EEL270 |  | Electrical installation details -Construction | 10d | 2012-08-26 | 2012-09-06 | 4229EEL260, 4229EEL120, 4229EEL160, 4229EEL240, 4229EEL80, 4229EEL190, 4229EEL20, 4229EEL250, 4229EEL110, 4229EEL170, 4229EEL230, 4229EEL90, 4229EEL220, 4229EEL70, 4229EEL180, 4229EEL100, 4229EEL50 |  | 270d |  |
|  | 2 | **Reports** |  |  |  |  |  |  |  |
|  | 3 | **MRQ's** |  | 2011-08-15 | 2012-09-06 |  |  |  |  |
| 4229EEL10 |  | Issue MRQ for solar power unit | 7d | 2011-08-15 A | 2011-08-23 A | 4229GM10 | 100% |  |  |
| 4229EEL330 |  | Issue MRQ for solar power unit | 7d | 2011-08-15 A | 2011-08-23 A |  | 100% |  |  |
| 4229EEL30 |  | Issue MRQ for Navigation aids | 3d | 2011-09-15 A | 2011-09-19 A | 4229GM10 FS+21d | 100% |  |  |
| 4229EEL40 |  | T.E.R for solar power unit | 15d | 2011-10-13 A | 2012-01-31 A | 4229PSU20 | 100% |  |  |
| 4229EEL60 |  | T.E.R for Navigation aids | 15d | 2011-10-17 A | 2011-12-07 A | 4229PNA20 | 100% |  |  |
| 4229EEL140 |  | Issue MRQ for Electrical bulk | 8d | 2011-12-18 A | 2011-12-27 A | 4229EEL80, 4229GM10 FS+1d, 4229EEL90 | 100% |  |  |
| 4229EEL150 |  | MRP for Navigation aids | 5d | 2012-01-12 A | 2012-01-18 A | 4229PNA60 | 100% |  |  |
| 4229EEL200 |  | T.E.R for Electrical bulk | 15d | 2012-02-02 A | 2012-06-03 | 4229PEB20 | 93% | 205d |  |
| 4229EEL130 |  | MRP for solar power unit | 5d | 2012-03-08 A | 2012-03-28 A | 4229PSU60 | 100% |  |  |
| 4229EEL280 |  | V.P.R for solar power unit | 70d | 2012-04-05 A | 2012-09-06 | 4229PSU90 SS+30d | 14% | 270d |  |
| 4229EEL300 |  | V.P.R for Navigation aids | 13d | 2012-04-26 A | 2012-07-26 | 4229PNA90 SS+45d |  | 295d |  |
| 4229EEL210 |  | MRP for Electrical bulk | 5d | 2012-07-02 | 2012-07-08 | 4229PEB60 |  | 205d |  |
|  | 6 | **Instrument** |  | 2011-08-15 | 2012-12-05 |  |  |  |  |
|  | 1 | **Drawings /lists** |  | 2011-09-29 | 2012-09-06 |  |  |  |  |
| 4229EIN70 |  | Instrument I/O list issued for approval | 2d | 2011-09-29 A | 2011-10-09 A | 4229EPR40 | 100% |  |  |
| 4229EIN150 |  | Instrument I/O list issued for design | 2d | 2011-10-23 A | 2011-12-16 A | 4229EIN130 | 100% |  |  |
| 4229EIN60 |  | Instrument index -Approval | 5d | 2011-10-26 A | 2011-11-20 A | 4229EPR40 | 100% |  |  |
| 4229EIN120 |  | Instrument layouts -Approval | 15d | 2011-11-22 A | 2011-12-15 A | 4229EPI40 | 100% |  |  |
| 4229EIN130 |  | Instrument index issued for design | 5d | 2011-11-28 A | 2011-12-13 A | 4229EPR120 | 100% |  |  |
| 4229EIN140 |  | Instrument cable / tubing routing layouts IFA | 10d | 2011-12-05 A | 2012-01-26 A | 4229EEL100 SS+7d | 100% |  |  |
| 4229EIN520 |  | Instrument wiring diagram-Approval | 10d | 2011-12-09 A | 2011-12-14 A | 4229EPI100 | 100% |  |  |
| 4229EIN190 |  | Instrument hook-ups issued for approval | 10d | 2011-12-12 A | 2012-01-02 A | 4229EPI40 FS+15d | 100% |  |  |
| 4229EIN100 |  | Functional loop diagram-Approval | 15d | 2012-01-05 A | 2012-01-11 A | 4229EIN520, 4229EIN200, 4229EPR90 | 100% |  |  |
| 4229EIN200 |  | Instrument cable / tubing schedule for approval | 5d | 2012-01-05 A | 2012-01-11 A | 4229EIN520, 4229EIN140 FF+5d | 100% |  | start on or after 2012-01-09 |
| 4229EIN310 |  | Instrument hook-ups issued for design | 10d | 2012-01-10 A | 2012-02-02 A | 4229EPI80 FS+15d | 100% |  |  |
| 4229EIN240 |  | Functional loop diagram-Design | 6d | 2012-01-15 A | 2012-02-27 A | 4229EPR130 | 100% |  |  |
| 4229EIN530 |  | Instrument wiring diagram-Design | 10d | 2012-01-15 A | 2012-01-24 A | 4229EPI130 | 100% |  |  |
| 4229EIN300 |  | Instrument cable / tubing schedule for design | 5d | 2012-01-24 A | 2012-01-24 A | 4229EIN280 FF+5d | 100% |  |  |
| 4229EIN270 |  | Instrument layouts -Design | 0d | 2012-01-29 A | 2012-02-16 A | 4229EPI80 | 100% |  |  |
| 4229EIN570 |  | Instrument loop Diagram-Approval | 1d | 2012-02-22 A | 2012-02-26 A | 4229EIN100 | 100% |  |  |
| 4229EIN280 |  | Instrument cable / tubing routing layouts IFD | 8d | 2012-02-29 A | 2012-02-29 A | 4229EPI130 FF | 100% |  |  |
| 4229EIN580 |  | Instrument loop diagram-Design | 10d | 2012-03-28 A | 2012-06-04 | 4229EIN570 FS+5d | 80% | 332d |  |
| 4229EIN400 |  | Instrument index issued for construction | 5d | 2012-07-01 | 2012-07-05 | 4229EPR180 |  | 305d |  |
| 4229EIN410 |  | Instrument I/O list issued for construction | 5d | 2012-07-08 | 2012-07-12 | 4229EIN400 |  | 305d |  |
| 4229EIN420 |  | Functional loop diagram-Construction | 15d | 2012-07-11 | 2012-07-31 | 4229EPR200 |  | 291d |  |
| 4229EIN440 |  | Instrument hook-ups issued for construction | 10d | 2012-07-22 | 2012-08-02 | 4229EPI160 |  | 290d |  |
| 4229EIN450 |  | Instrument layouts -Construction | 10d | 2012-07-22 | 2012-08-02 | 4229EPI160 |  | 275d |  |
| 4229EIN460 |  | Instrument cable / tubing routing layouts IFC | 10d | 2012-07-29 | 2012-08-09 | 4229EPI190 FF, 4229EIN450 FF+5d |  | 275d |  |
| 4229EIN590 |  | Instrument loop diagram-Construction | 1d | 2012-08-01 | 2012-08-01 | 4229EIN420, 4229EIN580 |  | 291d |  |
| 4229EIN390 |  | Safeguard system schematic diagram- Construction | 10d | 2012-08-12 | 2012-08-30 | 4229PSG90 SS+70d |  | 275d |  |
| 4229EIN470 |  | Instrument cable / tubing schedule for construction | 5d | 2012-08-12 | 2012-08-16 | 4229EIN460 FF+5d |  | 280d |  |
| 4229EIN430 |  | Instrument wiring diagram-Construction | 10d | 2012-08-26 | 2012-09-06 | 4229PCV90 SS+60d, 4229PMP90 SS+60d, 4229POV90 SS+60d, 4229PRV90 SS+60d |  | 270d |  |
|  | 2 | **Reports** |  |  |  |  |  |  |  |
|  | 3 | **MRQ's** |  | 2011-08-15 | 2012-12-05 |  |  |  |  |
| 4229EIN10 |  | Issue MRQ for SGS | 8d | 2011-08-15 A | 2011-08-24 A | 4229GM10 | 100% |  |  |
| 4229EIN80 |  | T.E.R for SGS | 25d | 2011-09-28 A | 2012-01-09 A | 4229PSG20 | 100% |  |  |
| 4229EIN20 |  | Issue MRQ for MPFM | 5d | 2011-09-29 A | 2011-10-04 A | 4229GM10 FS+1d, 4229EPR20 | 100% |  |  |
| 4229EIN30 |  | Issue MRQ for Pressure regulator valves | 3d | 2011-10-03 A | 2011-10-09 A | 4229GM10 FS+1d, 4229EIN20 FF+0.1d, 4229EPR20 | 100% |  |  |
| 4229EIN40 |  | Issue MRQ for Choke valves | 5d | 2011-10-10 A | 2011-11-24 A | 4229GM10 FS+1d, 4229EIN30 FS+1d | 100% |  |  |
| 4229EIN50 |  | Issue MRQ for SDV | 5d | 2011-10-12 A | 2011-10-26 A | 4229EIN40 FS-3d | 100% |  |  |
| 4229EIN110 |  | T.E.R for MPFM | 20d | 2011-11-14 A | 2011-12-21 A | 4229PMP20 | 100% |  |  |
| 4229EIN90 |  | Issue MRQ for field Instrument | 5d | 2011-11-16 A | 2011-12-13 A | 4229EPR40 FS+10d, 4229GM10 FS+1d | 100% |  |  |
| 4229EIN220 |  | T.E.R for SDV | 20d | 2011-11-28 A | 2012-02-01 A | 4229POV20 | 100% |  |  |
| 4229EIN170 |  | T.E.R for choke valves | 20d | 2011-12-27 A | 2012-04-03 A | 4229PCV20 | 100% |  |  |
| 4229EIN180 |  | Issue MRQ for Instrument mechanical bulk | 10d | 2012-01-08 A | 2012-02-19 A | 4229EIN140, 4229GM10 FS+1d | 100% |  |  |
| 4229EIN230 |  | Issue MRQ for Instrument electrical bulk | 10d | 2012-01-16 A | 2012-02-27 A | 4229GM10 FS+1d, 4229EIN280 FF-10d | 100% |  | start on or after 2012-01-16 |
| 4229EIN250 |  | T.E.R for field Instrument | 15d | 2012-01-17 A | 2012-05-02 A | 4229PFI20 | 100% |  | start on or after 2012-01-17 |
| 4229EIN160 |  | T.E.R for Pressure regulator valves | 15d | 2012-02-02 A | 2012-04-03 A | 4229PRV20 | 100% |  |  |
| 4229EIN260 |  | MRP for MPFM | 5d | 2012-02-09 A | 2012-02-20 A | 4229PMP60 | 100% |  |  |
| 4229EIN490 |  | V.P.R for MPFM | 90d | 2012-03-08 A | 2012-10-11 | 4229PMP90 SS+45d |  | 245d |  |
| 4229EIN210 |  | MRP for SGS | 5d | 2012-03-08 A | 2012-05-08 A | 4229PSG60 | 100% |  |  |
| 4229EIN360 |  | T.E.R for Instrument electrical bulk | 15d | 2012-03-26 A | 2012-06-03 | 4229PIB1010 | 93% | 216d |  |

| ID | WBS | Task | Duration | Start | Finish | Predecessors | Complete | Total float | Constraint |
| --- | --- | --- | --- | --- | --- | --- | --- | --- | --- |
| 4229EIN340 |  | T.E.R for Instrument Mechanical bulk | 15d | 2012-03-27 A | 2012-03-27 A | 4229PIB20 | 100% |  |  |
| 4229EIN330 |  | MRP for SDV | 5d | 2012-04-22 A | 2012-04-26 A | 4229POV60 | 100% |  |  |
| 4229EPR300 |  | V.P.R for Shutdown valves | 85d | 2012-04-29 A | 2012-10-30 | 4229POV90 SS+45d |  | 237d |  |
| 4229EIN600 |  | Additional shutdown valves MRQ | 10d | 2012-04-29 A | 2012-05-06 A |  | 100% |  |  |
| 4229EIN480 |  | V.P.R for safeguard system | 80d | 2012-05-10 A | 2012-10-15 | 4229PSG90 SS+45d | 25% | 243d |  |
| 4229EIN290 |  | MRP for Choke valves | 5d | 2012-05-27 A | 2012-06-04 | 4229PCV60 | 60% | 213d |  |
| 4229EIN320 |  | MRP for pressure regulator valves | 5d | 2012-05-27 A | 2012-06-05 | 4229PRV60 | 40% | 151d |  |
| 4229EIN610 |  | Additional shutdown valves T.E.R | 14d | 2012-05-27 A | 2012-06-20 | 4229PFV110 |  | 160d |  |
| 4229EIN370 |  | MRP for Instrument Mechanical bulk | 5d | 2012-05-31 A | 2012-05-31 A | 4229PIB60 | 100% |  |  |
| 4229EIN550 |  | V.P.R for Instrument Mechanical bulk | 30d | 2012-05-31 A | 2012-05-31 A | 4229PIB90 SS+45d | 100% |  |  |
| 4229EIN350 |  | MRP for field Instrument | 5d | 2012-06-24 | 2012-06-28 | 4229PFI60 |  | 197d |  |
| 4229EIN380 |  | MRP for Instrument electrical bulk | 5d | 2012-07-02 | 2012-07-08 | 4229PIB1050 |  | 216d |  |
| 4229EIN510 |  | V.P.R for Pressure regulator valves | 90d | 2012-07-08 | 2012-11-22 | 4229PRV90 SS+30d |  | 220d |  |
| 4229EIN620 |  | Additional shutdown valves MRP | 5d | 2012-07-18 | 2012-07-24 | 4229PFV160 |  | 290d |  |
| 4229EIN500 |  | V.P.R for choke valves | 90d | 2012-07-19 | 2012-12-05 | 4229PCV90 SS+30d |  | 211d |  |
| 4229EIN540 |  | V.P.R for field instruments | 35d | 2012-09-05 | 2012-10-30 | 4229PFI90 SS+45d |  | 237d |  |
| 4229EIN560 |  | V.P.R for Instrument Electrical bulk | 20d | 2012-09-13 | 2012-10-10 | 4229PIB1080 SS+45d |  | 246d |  |
|  | 9 | **Telecommunication** |  | 2011-10-13 | 2013-01-03 |  |  |  |  |
|  | 1 | **Drawings /lists** |  | 2011-12-05 | 2012-08-09 |  |  |  |  |
| 4229ETE100 |  | Telecommunication equipment layout IFA | 12d | 2011-12-05 A | 2011-12-08 A | 4229EPI40 | 100% |  |  |
| 4229ETE130 |  | Telecommunication cable routing IFA | 10d | 2011-12-05 A | 2012-01-19 A | 4229EIN140 SS | 100% |  |  |
| 4229ETE140 |  | Telecommunication cable routing IFD | 10d | 2012-02-01 A | 2012-02-19 A | 4229EIN280 SS | 100% |  |  |
| 4229ETE110 |  | Telecommunication equipment layout IFD (Expected to be cancelled) | 3d | 2012-06-03 | 2012-06-05 | 4229EPI80 FS+90d, A1180 |  | 317d |  |
| 4229ETE120 |  | Telecommunication equipment layout IFC (Expected to be cancelled) | 10d | 2012-07-22 | 2012-08-02 | 4229EPI160, 4229ETE110 FS+5d |  | 290d |  |
| 4229ETE150 |  | Telecommunication cable routing IFC | 10d | 2012-07-29 | 2012-08-09 | 4229EIN460 SS |  | 285d |  |
|  | 2 | **Reports** |  | 2011-10-13 | 2011-12-04 |  |  |  |  |
| 4229ETE10 |  | Telecommunication Philosophy IFA | 10d | 2011-10-13 A | 2011-10-26 A | 4229GM10 FS+40d | 100% |  |  |
| 4229ETE20 |  | Final Telecommunication Philosophy | 8d | 2011-11-28 A | 2011-12-04 A | 4229ETE10 FS+10d | 100% |  |  |
|  | 3 | **Specifications /MRQ's** |  | 2011-10-17 | 2013-01-03 |  |  |  |  |
| 4229ETE30 |  | Point To Point VHF Radio System specification | 9d | 2011-10-17 A | 2011-11-17 A | 4229EIN210 FF-3d, 4229ETE10 | 100% |  |  |
| 4229ETE40 |  | Radar system specification IFA | 20d | 2011-10-17 A | 2011-11-17 A | 4229GM140 | 100% |  |  |
| 4229ETE50 |  | Radar system specification IFD | 10d | 2011-11-21 A | 2011-11-30 A | 4229ETE40 FS+5d, 4229ETE80 SS+1d | 100% |  |  |
| 4229ETE70 |  | MRQ for Radar System IFA | 8d | 2011-11-21 A | 2011-11-30 A | 4229ETE40 FS+5d | 100% |  |  |
| 4229ETE80 |  | MRQ for Radar System IFI | 4d | 2011-11-21 A | 2011-11-30 A | 4229ETE70 FS+4d | 100% |  |  |
| 4229ETE170 |  | T.E.R for Radar System | 23d | 2012-07-03 | 2012-08-02 | 4229PRS20 |  | 0d | start on 2012-07-03 |
| 4229ETE60 |  | Radar system specification IFP | 5d | 2012-09-05 | 2012-09-11 | 4229ETE90 FF |  | 267d |  |
| 4229ETE90 |  | MRP for Radar System | 5d | 2012-09-05 | 2012-09-11 | 4229PRS60 |  | 174d |  |
| 4229ETE160 |  | V.P.R for Radar System | 50d | 2012-10-28 | 2013-01-03 | 4229PRS90 SS+30d |  | 190d |  |
|  | 4 | **Offshore** |  | 2011-10-19 | 2012-09-20 |  |  |  |  |
|  | 1 | **Drawings / lists** |  | 2011-10-19 | 2012-09-06 |  |  |  |  |
| 4229EOF10 |  | Jacket primary steel Drawings-Approval | 25d | 2011-10-19 A | 2011-11-22 A | 4229EPI40 FF, 4229GM10 FS+44d | 100% |  |  |
| 4229EOF120 |  | General drawings-Approval | 25d | 2011-10-19 A | 2011-11-22 A | 4229EOF10 SS | 100% |  |  |
| 4229EOF130 |  | Deck primary steel Drawings- Approval | 20d | 2011-11-22 A | 2011-12-29 A | 4229EPI40 | 100% |  |  |
| 4229EOF170 |  | Jacket secondary steel & piles Drawings-Approval | 15d | 2011-11-23 A | 2011-12-15 A | 4229EOF10 | 100% |  |  |
| 4229EOF270 |  | Genral Drawings- Construction | 20d | 2011-12-07 A | 2011-12-29 A | 4229EOF260 SS, 4229EOF120 FS+5d | 100% |  |  |
| 4229EOF200 |  | Jacket appartenues Drawings-Approval | 20d | 2011-12-14 A | 2011-12-25 A | 4229EOF170, 4229EPL240 FF+5d, 4229EPL230 FF+5d | 100% |  |  |
| 4229EOF230 |  | Deck secondary steel Drawings- Approval | 20d | 2011-12-14 A | 2012-01-08 A | 4229EOF130 | 100% |  |  |
| 4229EOF260 |  | Jacket primary steel Drawings- Construction | 20d | 2011-12-15 A | 2011-12-29 A | 4229EOF10 FS+10d | 100% |  |  |
| 4229EOF290 |  | Stairs drawings-Approval | 10d | 2012-01-01 A | 2012-02-20 A | 4229EOF200 | 100% |  |  |
| 4229EOF310 |  | Grating & handrails drawings-Approval | 15d | 2012-01-04 A | 2012-01-08 A | 4229EOF130, 4229EOF230 | 100% |  |  |
| 4229EOF410 |  | Grating & handrails drawings-Construction | 15d | 2012-01-10 A | 2012-01-19 A | 4229EOF310 FS+5d | 100% |  |  |
| 4229EOF350 |  | Jacket secondary steel & piles Drawings- Construction | 15d | 2012-01-15 A | 2012-02-28 A | 4229EOF260, 4229EOF170 FS+10d | 100% |  |  |
| 4229EOF280 |  | Cable trays supports -Approval | 12d | 2012-01-29 A | 2012-06-20 | 4229ELP110, 4229EEL100, 4229EEL190 FS+30d, 4229EIN140, 4229EIN280 FS+30d |  | 306d | start on 2012-05-15 |
| 4229EOF550 |  | Deck primary steel Drawings- Construction | 15d | 2012-05-20 A | 2012-08-09 | 4229EPI160, 4229EOF130 FS+7d, 4229EOF130 FF, 4229EOF10 |  | 260d |  |
| 4229EOF560 |  | Deck secondary steel Drawings- Construction | 15d | 2012-05-20 A | 2012-09-06 | 4229EOF550 |  | 260d |  |
| 4229EOF520 |  | Jacket Appurtenances Drawings-Construction | 14d | 2012-06-03 | 2012-06-20 | 4229EPL420 FF+5d, 4229EPL430 FF+5d, 4229EOF350 |  | 321d |  |
| 4229EOF390 |  | Stairs drawings-Construction | 10d | 2012-07-22 | 2012-08-02 | 4229EPI160, 4229EOF290 FS+5d |  | 290d |  |
| 4229EOF600 |  | Equipment fixation deatils-Construction | 10d | 2012-07-25 | 2012-08-07 | 4229PSG90 SS+53d, 4229EPI210 SS+42d, 4229EME120 SS+20d, 4229EPR250 SS+40d, 4229EPR240 SS+20d |  | 287d |  |
| 4229EOF360 |  | Piping supports -Approval | 10d | 2012-07-30 | 2012-08-12 | 4229EPI130 FS+60d, 4229EPI200 |  | 279d |  |
| 4229EOF580 |  | Piping supports -Construction | 5d | 2012-08-13 | 2012-08-26 | 4229EOF360, 4229EPI190 |  | 279d |  |
| 4229EOF590 |  | Cable trays supports -Construction | 10d | 2012-08-26 | 2012-09-06 | 4229EOF280 FS+5d, 4229ELP390, 4229EEL260, 4229EIN460 |  | 270d |  |
|  | 2 | **Reports** |  | 2011-10-19 | 2012-09-20 |  |  |  |  |
| 4229EOF100 |  | Jacket on-bottom stability report-Approval | 62d | 2011-10-19 A | 2012-01-31 A | 4229EOF70 SS | 100% |  |  |
| 4229EOF110 |  | Pile foundation design report-Approval | 81d | 2011-10-19 A | 2012-03-14 A | 4229EOF100 SS | 100% |  |  |
| 4229EOF20 |  | In-place analysis design report-Approval | 72d | 2011-10-19 A | 2012-02-16 A | 4229EOF10 SS | 100% |  |  |
| 4229EOF30 |  | Earthquake analysis design report-Approval | 72d | 2011-10-19 A | 2012-02-28 A | 4229EOF20 SS | 100% |  |  |
| 4229EOF40 |  | Fatigue analysis design report-Approval | 77d | 2011-10-19 A | 2012-02-09 A | 4229EOF20 SS | 100% |  |  |
| 4229EOF50 |  | Boat impact design analysis report-Approval | 77d | 2011-10-19 A | 2012-02-26 A | 4229EOF40 SS | 100% |  |  |
| 4229EOF60 |  | Jacket loadout analysis design report-Approval | 52d | 2011-10-19 A | 2012-01-22 A | 4229EOF10 SS | 100% |  |  |
| 4229EOF70 |  | Jacket transportation analysis design report-Approval | 52d | 2011-10-19 A | 2012-01-22 A | 4229EOF60 SS | 100% |  |  |

| ID | WBS | Task | Duration | Start | Finish | Predecessors | Complete | Total float | Constraint |
| --- | --- | --- | --- | --- | --- | --- | --- | --- | --- |
| 4229EOF80 |  | Jacket lifting analysis design report-Approval | 52d | 2011-10-19 A | 2012-01-05 A | 4229EOF70 SS | 100% |  |  |
| 4229EOF90 |  | Jacket floatation & upending analysis report-Approval | 62d | 2011-10-19 A | 2012-01-31 A | 4229EOF60 SS | 100% |  |  |
| 4229EOF150 |  | Deck transportation analysis report-Approval | 70d | 2011-10-27 A | 2012-02-16 A | 4229EOF130 SS | 100% |  |  |
| 4229EOF160 |  | Deck lifting analysis design report-Approval | 70d | 2011-10-27 A | 2012-03-08 A | 4229EOF130 SS | 100% |  |  |
| 4229EOF300 |  | Topside weight control report- Approval | 8d | 2011-11-22 A | 2012-01-31 A | 4229EOF130, 4229EOF230 | 100% |  |  |
| 4229EOF180 |  | Jacket miscellaneous design report-Approval | 49d | 2011-11-23 A | 2012-02-09 A | 4229EOF170 SS | 100% |  |  |
| 4229EOF190 |  | Jacket weight control report -Approval | 8d | 2011-12-14 A | 2012-01-26 A | 4229EOF10, 4229EOF170 | 100% |  |  |
| 4229EOF240 |  | Deck miscellaneous design report-Approval | 55d | 2011-12-14 A | 2012-08-27 | 4229EOF360 FF+5d, 4229EOF230 SS | 100% | 279d |  |
| 4229EOF250 |  | Pushover analysis design SOW | 18d | 2011-12-15 A | 2011-12-29 A | 4229EOF60 FS-3d | 100% |  | start on 2012-03-01 |
| 4229EOF430 |  | Jacket weight control report -Final | 8d | 2012-01-11 A | 2012-02-09 A | 4229EOF350, 4229EOF260 | 100% |  |  |
| 4229EOF340 |  | Jacket lifting analysis design report-Final | 10d | 2012-01-29 A | 2012-02-09 A | 4229EOF80 FS+10d | 100% |  |  |
| 4229EOF480 |  | Pushover analysis design T.E.R | 10d | 2012-02-01 A | 2012-03-04 A |  | 100% |  |  |
| 4229EOF320 |  | Jacket loadout analysis design report-Final | 10d | 2012-02-07 A | 2012-02-09 A | 4229EOF60 FS+10d | 100% |  | start on or after 2012-01-30 |
| 4229EOF330 |  | Jacket transportation analysis design report- Final | 10d | 2012-02-07 A | 2012-02-09 A | 4229EOF70 FS+10d | 100% |  |  |
| 4229EOF370 |  | Jacket floatation & upending analysis report-Final | 10d | 2012-02-13 A | 2012-03-07 A | 4229EOF90 FS+10d | 100% |  |  |
| 4229EOF380 |  | Jacket on-bottom stability report-Final | 10d | 2012-02-13 A | 2012-02-26 A | 4229EOF100 FS+10d | 100% |  |  |
| 4229EOF450 |  | Fatigue analysis design report-Final | 10d | 2012-02-21 A | 2012-03-08 A | 4229EOF40 FS+10d | 100% |  |  |
| 4229EOF140 |  | Deck loadout analysis report-Approval | 70d | 2012-02-26 A | 2012-02-26 A | 4229EOF130 SS | 100% |  |  |
| 4229EOF460 |  | Boat impact design analysis report-Final | 10d | 2012-03-11 A | 2012-03-26 A | 4229EOF50 FS+10d | 100% |  |  |
| 4229EOF420 |  | In-place analysis design report-Final | 10d | 2012-08-05 | 2012-08-16 | 4229EOF550 FF+5d |  | 280d |  |
| 4229EOF500 |  | Deck transportation analysis report-Final | 10d | 2012-08-05 | 2012-08-16 | 4229EOF150 FS+10d, 4229EOF550 FF+5d |  | 280d |  |
| 4229EOF510 |  | Deck lifting analysis design report-Final | 10d | 2012-08-05 | 2012-08-16 | 4229EOF550 FF+5d |  | 280d |  |
| 4229EOF440 |  | Earthquake analysis design report-Final | 10d | 2012-08-12 | 2012-08-30 | 4229EOF550 FF+10d, 4229EOF40 FS+10d |  | 275d |  |
| 4229EOF470 |  | Pile foundation design report-Final | 10d | 2012-08-12 | 2012-08-30 | 4229EOF550 |  | 275d |  |
| 4229EOF490 |  | Deck loadout analysis report-Final | 10d | 2012-08-12 | 2012-08-30 | 4229EOF140 FS+10d, 4229EOF550 FF+10d |  | 275d |  |
| 4229EOF530 |  | Deck miscellaneous design report-Final | 10d | 2012-08-12 | 2012-08-30 | 4229EOF550 |  | 275d |  |
| 4229EOF570 |  | Constructability study report | 10d | 2012-08-15 | 2012-09-05 | 4229EOF610 FF-10d |  | 272d |  |
| 4229EOF610 |  | Topside weight control report- Final | 8d | 2012-09-09 | 2012-09-18 | 4229EOF560, 4229EOF550 |  | 262d |  |
| 4229EOF630 |  | Jacket miscellaneous design report-Final | 10d | 2012-09-09 | 2012-09-20 | 4229EOF560, 4229EOF550 |  | 260d |  |
|  | 3 | **Specifications / MTO's** |  | 2011-12-13 | 2011-12-28 |  |  |  |  |
| 4229EOF210 |  | Steel structure specification | 6d | 2011-12-13 A | 2011-12-20 A | 4229EOF170 FS+1d | 100% |  |  |
| 4229EOF220 |  | Weight control procedures | 6d | 2011-12-13 A | 2011-12-20 A | 4229EOF210 SS | 100% |  |  |
| 4229EOF620 |  | Deck Secondary Steel structure MTO | 5d | 2011-12-18 A | 2011-12-28 A | 4229EOF560, 4229EOF230, 4229EOF130, 4229EOF550 | 100% |  |  |
| 4229EOF660 |  | Jacket app. MTO | 5d | 2011-12-18 A | 2011-12-28 A | 4229EOF520 | 100% |  |  |
| 4229EOF540 |  | Jacket secondary steel & Piles MTO | 5d | 2011-12-18 A | 2011-12-28 A | 4229EOF10, 4229EOF350, 4229EOF200, 4229EOF260, 4229EOF170 | 100% |  |  |
| 4229EOF640 |  | Jacket Primary Steel structure MTO | 5d | 2011-12-18 A | 2011-12-25 A | 4229EOF260 | 100% |  |  |
| 4229EOF650 |  | Deck Primary Steel structure MTO | 5d | 2011-12-18 A | 2011-12-28 A | 4229EOF130 | 100% |  |  |
|  | 4 | **Additonal studies** |  |  |  |  |  |  |  |
|  | 7 | **Pipeline** |  | 2011-08-15 | 2012-09-13 |  |  |  |  |
|  | 1 | **Drawings /lists** |  | 2011-11-15 | 2012-06-10 |  |  |  |  |
| 4229EPL160 |  | 18" spool arrangement drawing -Approval | 15d | 2011-11-15 A | 2011-12-15 A | 4229EOF10, 4229EPI40 | 100% |  |  |
| 4229EPL170 |  | 8" spool arrangement drawing -Approval | 15d | 2011-11-23 A | 2011-12-15 A | 4229EPL160 SS | 100% |  |  |
| 4229EPL230 |  | 8" riser arrangement drawing -Approval | 10d | 2011-12-14 A | 2011-12-28 A | 4229EPL240 SS | 100% |  |  |
| 4229EPL240 |  | 18" riser arrangement drawing -Approval | 10d | 2011-12-14 A | 2011-12-28 A | 4229EPL160, 4229EPL170 | 100% |  |  |
| 4229EPL290 |  | 18" spool arangement drawing -Design | 15d | 2011-12-29 A | 2012-02-13 A | 4229EPL160, 4229EPL160 FF | 100% |  |  |
| 4229EPL310 |  | 8" spool arrangement drawing -Design | 15d | 2011-12-29 A | 2012-02-13 A | 4229EPL170 FS+10d | 100% |  |  |
| 4229EPL320 |  | 18"Spool ISO-IFD | 15d | 2012-02-01 A | 2012-02-21 A | 4229EPL290 | 100% |  |  |
| 4229EPL340 |  | 8"Spool ISO-IFD | 15d | 2012-02-01 A | 2012-02-21 A | 4229EPL310 | 100% |  |  |
| 4229EPL330 |  | 8" riser arrangement drawing -Design | 10d | 2012-02-26 A | 2012-02-29 A | 4229EPL310, 4229EPL230 FS+10d | 100% |  |  |
| 4229EPL350 |  | 18" riser arrangement drawing -Design | 10d | 2012-02-26 A | 2012-02-29 A | 4229EPL240 FS+10d, 4229EPL330 FS-10d | 100% |  |  |
| 4229EPL380 |  | 8"Riser ISO-IFD | 15d | 2012-02-26 A | 2012-03-15 A | 4229EPL330 | 100% |  |  |
| 4229EPL400 |  | 18"Riser ISO-IFD | 15d | 2012-02-26 A | 2012-03-15 A | 4229EPL350 | 100% |  |  |
| 4229EPL390 |  | 18" spool arangement drawing -Construction | 15d | 2012-03-18 A | 2012-03-27 A | 4229EPL350, 4229EPL290, 4229EPL330 | 100% |  |  |
| 4229EPL410 |  | 8" spool arangement drawing -Construction | 15d | 2012-03-18 A | 2012-03-27 A | 4229EPL310, 4229EPL390 FF | 100% |  |  |
| 4229EPL420 |  | 8" riser arrangement drawing -Construction | 15d | 2012-03-25 A | 2012-04-19 A | 4229EPL390, 4229EPL410 | 100% |  |  |
| 4229EPL430 |  | 18" riser arrangement drawing -Construction | 15d | 2012-03-25 A | 2012-04-19 A | 4229EPL420 SS | 100% |  |  |
| 4229EPL440 |  | 18"Spool ISO-IFC | 0d | 2012-05-02 A | 2012-05-29 A | 4229EPL430, 4229EPL410, 4229EPL420, 4229EPL390 | 100% |  |  |
| 4229EPL450 |  | 8"Spool ISO-IFC | 0d | 2012-05-02 A | 2012-05-29 A | 4229EPL390, 4229EPL420, 4229EPL430, 4229EPL410 | 100% |  |  |
| 4229EPL460 |  | 8"Riser ISO-IFC | 0d | 2012-05-02 A | 2012-05-29 A | 4229EPL390, 4229EPL430, 4229EPL410, 4229EPL420 | 100% |  |  |
| 4229EPL470 |  | 18"Riser ISO-IFC | 0d | 2012-05-02 A | 2012-05-29 A | 4229EPL410, 4229EPL390, 4229EPL430, 4229EPL420 | 100% |  |  |
| 4229EPL480 |  | MTO for risers / spools | 6d | 2012-06-03 | 2012-06-10 | 4229EPL460, 4229EPL440, 4229EPL450, 4229EPL470 |  | 329d |  |
|  | 2 | **Reports** |  | 2011-11-30 | 2012-06-07 |  |  |  |  |
| 4229EPL120 |  | Wall thickness report for risers & spools-Approval | 5d | 2011-11-30 A | 2011-12-05 A | 4229EPL170 SS+5d | 100% |  |  |
| 4229EPL200 |  | Wall thickness report for risers & spools-Final | 5d | 2011-12-06 A | 2011-12-19 A | 4229EPL120 FS+5d | 100% |  |  |
| 4229EPL490 |  | Risers / spoolpieces stress analysis report-Construction | 10d | 2012-04-26 A | 2012-06-07 | 4229EPL440 FF+5d, 4229EPL450 FF+5d, 4229EPL460 FF+5d, 4229EPL470 FF+5d | 50% | 330d |  |
|  | 3 | **MRQ's** |  | 2011-08-15 | 2012-09-13 |  |  |  |  |
| 4229EPL10 |  | Pipeline specifications & data sheets | 21d | 2011-08-15 A | 2011-09-14 A | 4229GM10 SS | 100% |  |  |
| 4229EPL20 |  | MRQ for hot bends | 15d | 2011-09-15 A | 2011-10-02 A | 4229EPL10 | 100% |  |  |
| 4229EPL60 |  | MRQ for Kamos ring | 10d | 2011-09-22 A | 2011-10-02 A | 4229EPL20 FF | 100% |  |  |
| 4229EPL40 |  | MRQ for heat shrink sleeves | 10d | 2011-09-27 A | 2011-10-11 A | 4229EPL10 FF, 4229EPL10 FS+8d | 100% |  |  |

| ID | WBS | Task | Duration | Start | Finish | Predecessors | Complete | Total float | Constraint |
| --- | --- | --- | --- | --- | --- | --- | --- | --- | --- |
| 4229EPL80 |  | MRQ for isolating joints | 10d | 2011-10-04 A | 2011-10-19 A | 4229EPL60 SS+8d | 100% |  |  |
| 4229EPL30 |  | MRQ for flanges | 5d | 2011-10-09 A | 2011-10-13 A | 4229EPL20 | 100% |  |  |
| 4229EPL560 |  | MRQ for 8" line pipe | 10d | 2011-10-09 A | 2011-10-23 A | 4229EPL50 FF-3d | 100% |  |  |
| 4229EPL50 |  | MRQ for anchor flanges | 8d | 2011-10-16 A | 2011-10-25 A | 4229EPL30 | 100% |  |  |
| 4229EPL90 |  | T.E.R for hot bends | 20d | 2011-10-30 A | 2011-12-08 A | 4229PHB20 | 100% |  |  |
| 4229EPL130 |  | T.E.R for heat shrink sleeves | 15d | 2011-11-03 A | 2011-12-05 A | 4229PHS20, 4229EPL40 FS+10d | 100% |  |  |
| 4229EPL140 |  | T.E.R for kamos ring | 15d | 2011-11-13 A | 2011-11-20 A | 4229PKR20 FF, 4229PKR20 | 100% |  |  |
| 4229EPL210 |  | T.E.R for isolating joints | 15d | 2011-11-13 A | 2011-12-08 A | 4229EPL40 FS+10d, 4229PIJ20 | 100% |  |  |
| 4229EPL70 |  | T.E.R for 8"line pipe | 20d | 2011-11-22 A | 2012-01-08 A | 4229PPL10 | 100% |  |  |
| 4229EPL100 |  | T.E.R for flanges | 20d | 2011-12-01 A | 2012-01-18 A | 4229EPL20 FS+10d, 4229P4220 | 100% |  |  |
| 4229EPL180 |  | Welding & NDT specification-Design | 10d | 2011-12-01 A | 2011-12-21 A | 4229EPL250 SS-9d | 100% |  |  |
| 4229EPL150 |  | T.E.R for anchor flanges | 15d | 2011-12-06 A | 2012-01-05 A | 4229PAF20, 4229EPL20 FS+10d | 100% |  |  |
| 4229EPL250 |  | Testing & pre-commissioning specification-Approval | 10d | 2011-12-14 A | 2012-01-02 A | 4229EPL160, 4229EPL60, 4229EPL30, 4229EPL170, 4229EPL80, 4229EPL40, 4229EPL50, 4229EPL20 | 100% |  |  |
| 4229EPL270 |  | MRP for kamos ring | 5d | 2011-12-21 A | 2011-12-26 A | 4229PKR60 | 100% |  |  |
| 4229EPL370 |  | Welding & NDT specification-Final | 5d | 2012-01-01 A | 2012-03-08 A | 4229EPL180 | 100% |  |  |
| 4229EPL550 |  | VPR for isolating joints | 40d | 2012-01-09 A | 2012-04-16 A | 4229PIJ90 SS+30d | 100% |  |  |
| 4229EPL300 |  | MRP for isolating joints | 1d | 2012-01-24 A | 2012-01-31 A | 4229PIJ60 | 100% |  |  |
| 4229EPL260 |  | MRP for heat shrink sleeves | 5d | 2012-01-24 A | 2012-02-02 A | 4229PHS60 | 100% |  |  |
| 4229EPL540 |  | VPR for kamos ring | 40d | 2012-02-01 A | 2012-03-01 A | 4229PKR90 SS+30d | 100% |  |  |
| 4229EPL190 |  | MRP for hot bends | 5d | 2012-02-09 A | 2012-02-19 A | 4229PHB70 | 100% |  |  |
| 4229EPL280 |  | MRP for anchor flanges | 5d | 2012-02-14 A | 2012-02-28 A | 4229PAF60 | 100% |  |  |
| 4229EPL530 |  | VPR for heat shrink sleeves | 40d | 2012-02-19 A | 2012-02-29 A | 4229PHS90 SS+30d | 100% |  |  |
| 4229EPL110 |  | MRP for 8" pipeline | 5d | 2012-02-21 A | 2012-02-26 A | 4229PPL80 | 100% |  |  |
| 4229EPL520 |  | VPR for anchor flanges | 40d | 2012-02-21 A | 2012-03-20 A | 4229PAF90 SS+30d | 100% |  |  |
| 4229EPL220 |  | MRP for flanges | 5d | 2012-02-26 A | 2012-02-28 A | 4229PFL60 | 100% |  |  |
| 4229EPL510 |  | VPR for flanges | 40d | 2012-03-11 A | 2012-08-02 | 4229PFL90 SS+30d |  | 290d |  |
| 4229EPL570 |  | VPR for 8"line pipe | 40d | 2012-04-05 A | 2012-06-21 | 4229PPL110 SS+30d | 75% | 320d |  |
| 4229EPL500 |  | VPR for hot bends | 40d | 2012-04-18 A | 2012-08-02 | 4229PHB100 SS+30d |  | 290d |  |
| 4229EPL360 |  | Testing & pre-commissioning specification-Final | 5d | 2012-09-09 | 2012-09-13 | 4229EPL310, 4229EPI220, 4229EPL250 FS+5d, 4229EPL290, 4229EPL330, 4229EPL350 |  | 265d |  |
|  | 3 | **Procurement** |  | 2011-08-23 | 2013-03-11 |  |  |  |  |
|  | 13 | **Fire & gas detectors** |  | 2012-01-10 | 2012-11-02 |  |  |  |  |
| 4229PFG10 |  | Issue RFQ for Fire & gas detectors | 2d | 2012-01-10 A | 2012-01-10 A |  | 100% |  | start on or after 2012-01-10 |
| 4229PFG20 |  | Bidding Fire & gas detectors | 17d | 2012-01-11 A | 2012-02-26 A | 4229PFG10 | 100% |  |  |
| A1060 |  | T.E.R for fire & Gas detection | 15d | 2012-02-27 A | 2012-05-03 A | 4229ELP560 SS, 4229ELP560 FF | 100% |  |  |
| 4229PFG30 |  | Receive revised commercial offers | 5d | 2012-05-06 A | 2012-05-10 A | 4229ELP560 | 100% |  |  |
| 4229PFG40 |  | commercial evaluation & bid committee for Fire & gas detectors | 10d | 2012-05-10 A | 2012-05-13 A | 4229PFG30 | 100% |  |  |
| 4229PFG50 |  | Client approval on bid committee reccomendation | 2d | 2012-05-14 A | 2012-05-16 A | 4229PFG40 | 100% |  |  |
| 4229PFG60 |  | F.O.C for Fire & gas detectors | 3d | 2012-05-17 A | 2012-05-27 A | 4229PFG40, 4229PFG50 | 100% |  |  |
| A1340 |  | MRP for fire & Gas detection | 5d | 2012-05-28 A | 2012-05-29 A | 4229ELP570 FF, 4229ELP570 SS | 100% |  |  |
| 4229PFG70 |  | P.O for Fire & gas detectors | 5d | 2012-06-03 | 2012-06-07 | 4229ELP570 |  | 232d |  |
| 4229PFG80 |  | L.C issued by Gupco | 5d | 2012-06-10 | 2012-06-14 | 4229PFG70 |  | 232d |  |
| 4229PFG90 |  | Fabrication upto R.F.S | 84d | 2012-06-15 | 2012-09-18 | 4229PFG70, 4229PFG80 |  | 328d |  |
| 4229PFG100 |  | Delivery upto site | 45d | 2012-09-19 | 2012-11-02 | 4229PFG90 |  | 330d |  |
|  | 22 | **Pressure safety valves** |  | 2011-10-19 | 2012-09-25 |  |  |  |  |
| 4229PSV10 |  | Issue RFQ for PSV | 2d | 2011-10-19 A | 2011-10-20 A | 4229EPR60 | 100% |  |  |
| 4229PSV20 |  | Bidding for PSV | 30d | 2011-10-21 A | 2011-11-16 A | 4229PSV10 | 100% |  |  |
| A1040 |  | T.E.R for PSV | 27.88d | 2011-11-17 A | 2012-01-31 A | 4229EPR160 FF, 4229EPR160 SS | 100% |  |  |
| 4229PSV30 |  | Receive revised commercial offers | 5d | 2012-02-01 A | 2012-02-27 A | 4229EPR160 | 100% |  |  |
| 4229PSV40 |  | commercial evaluation & bid committee for PSV | 10d | 2012-02-28 A | 2012-03-06 A | 4229PSV30, 4229EPR160 | 100% |  |  |
| 4229PSV50 |  | Client approval on bid committee reccomendation | 2d | 2012-03-07 A | 2012-04-02 A | 4229PSV40 | 100% |  |  |
| 4229PSV60 |  | F.O.C for PSV | 3d | 2012-04-02 A | 2012-04-03 A | 4229PSV50, 4229PSV40 | 100% |  |  |
| A1320 |  | MRP for PSV | 2d | 2012-04-05 A | 2012-04-09 A | 4229EPR170 FF, 4229EPR170 SS | 100% |  |  |
| 4229PSV70 |  | P.O for PSV | 5d | 2012-04-10 A | 2012-04-11 A | 4229EPR170 | 100% |  |  |
| 4229PSV90 |  | Fabrication upto R.F.S | 147d | 2012-04-11 A | 2012-09-11 | 4229PSV70, 4229PSV80 | 43% | 194d |  |
| 4229PSV80 |  | L.C issued by Gupco | 5d | 2012-06-03 | 2012-06-07 | 4229PSV70 |  | 136d |  |
| 4229PSV100 |  | Delivery upto site | 14d | 2012-09-12 | 2012-09-25 | 4229PSV90 |  | 368d |  |
|  | 3 | **Fire fighting system** |  | 2012-01-09 | 2013-01-01 |  |  |  |  |
| 4229PFF10 |  | Issue RFQ for Fire fighting | 2d | 2012-01-09 A | 2012-01-10 A | 4229ELP60 | 100% |  | start on or after 2012-01-09 |
| 4229PFF110 |  | Re-issue RFQ for Fire Fighting | 1d | 2012-03-01 A | 2012-03-03 A | 4229PFF10 | 100% |  |  |
| 4229PFF20 |  | Bidding for Fire fighting | 20d | 2012-03-04 A | 2012-04-03 A | 4229PFF10, 4229PFF110 | 100% |  | start on or after 2012-01-11 |
| A1050 |  | T.E.R for fire fighting system | 21d | 2012-04-03 A | 2012-05-29 A | 4229ELP170 FF, 4229ELP170 SS | 100% |  |  |
| 4229PFF30 |  | Receive revised commercial offers | 5d | 2012-05-30 A | 2012-06-05 | 4229ELP170 | 40% | 189d |  |
| 4229PFF40 |  | commercial evaluation & bid committee for Fire fighting | 10d | 2012-06-06 | 2012-06-19 | 4229PFF30, 4229ELP170 |  | 189d |  |
| 4229PFF50 |  | Client approval on bid committee reccomendation | 2d | 2012-06-20 | 2012-06-21 | 4229PFF40 |  | 189d |  |
| 4229PFF60 |  | F.O.C for Fire fighting | 3d | 2012-06-24 | 2012-06-26 | 4229PFF50, 4229PFF40 |  | 189d |  |
| A1330 |  | MRP for fire fighting system | 5d | 2012-06-27 | 2012-07-03 | 4229ELP330 FF, 4229ELP330 SS |  | 189d |  |
| 4229PFF70 |  | P.O for Fire fighting | 5d | 2012-07-04 | 2012-07-10 | 4229ELP330 |  | 189d |  |
| 4229PFF80 |  | L.C issued by Gupco | 5d | 2012-07-11 | 2012-07-17 | 4229PFF70 |  | 189d |  |
| 4229PFF90 |  | Fabrication upto R.F.S | 112d | 2012-07-18 | 2012-11-18 | 4229PFF80, 4229PFF70 |  | 267d |  |
| 4229PFF100 |  | Delivery upto site | 45d | 2012-11-19 | 2013-01-01 | 4229PFF90 |  | 269d |  |

| ID | WBS | Task | Duration | Start | Finish | Predecessors | Complete | Total float | Constraint |
| --- | --- | --- | --- | --- | --- | --- | --- | --- | --- |
|  | 6 | **Chemical injection PKG** |  | 2011-08-24 | 2012-09-20 |  |  |  |  |
| 4229PCI10 |  | Issue RFQ for Chemical injection Pkg. | 2d | 2011-08-24 A | 2011-08-25 A | 4229GM10 FS+1d, 4229EPR10 FS-1d | 100% |  |  |
| 4229PCI20 |  | Bidding for Chemical injection Pkg. | 24d | 2011-08-26 A | 2011-09-19 A | 4229PCI10 | 100% |  |  |
| A1030 |  | T.E.R for Chemical injection | 20d | 2011-09-19 A | 2011-11-24 A | 4229EPR70 FF, 4229EPR70 SS | 100% |  |  |
| 4229PCI30 |  | Receive revised commercial offers | 5d | 2012-02-05 A | 2012-02-27 A | 4229EPR70 FS+15d, 4229EPR310 | 100% |  |  |
| 4229PCI40 |  | Commercial evaluation & bid committee for Chemical injection Pkg. | 10d | 2012-02-28 A | 2012-03-06 A | 4229PCI30, 4229EPR70 | 100% |  |  |
| 4229PCI60 |  | F.O.C for Chemical injection Pkg. | 3d | 2012-03-07 A | 2012-03-20 A | 4229PCI40, 4229PCI50 | 100% |  |  |
| 4229PCI50 |  | Client approval on bid committee reccomendation | 2d | 2012-03-13 A | 2012-03-18 A | 4229PCI40 | 100% |  |  |
| 4229PCI90 |  | Fabrication upto R.F.S | 140d | 2012-03-21 A | 2012-08-06 | 4229PCI80, 4229PCI70 | 57% | 194d |  |
| A1310 |  | MRP for Chemical injection | 3d | 2012-03-25 A | 2012-04-05 A | 4229EPR150 FF, 4229EPR150 SS | 100% |  |  |
| 4229PCI70 |  | P.O for Chemical injection Pkg. | 5d | 2012-04-08 A | 2012-04-08 A | 4229EPR150, 4229PCI60 | 100% |  |  |
| 4229PCI80 |  | L.C issued by Gupco | 5d | 2012-06-03 | 2012-06-07 | 4229PCI70 |  | 136d |  |
| 4229PCI100 |  | Delivery upto site | 45d | 2012-08-07 | 2012-09-20 | 4229PCI90 |  | 373d |  |
|  | 31 | **Life saving equipment (Cancelled)** |  | 2012-01-05 | 2012-05-23 |  |  |  |  |
| 4229PFG110 |  | Issue RFQ for Life saving equipment | 2d | 2012-01-05 A | 2012-01-05 A | 4229ELP590 | 100% |  | start on or after 2012-01-05 |
| 4229PFG120 |  | Bidding Life saving equipment | 25d | 2012-01-09 A | 2012-02-28 A | 4229PFG110 | 100% |  | start on or after 2012-01-09 |
| A1070 |  | T.E.R for life saving equipment | 15d | 2012-02-15 A | 2012-05-15 A | 4229ELP600 SS, 4229ELP600 FF | 100% |  |  |
| A1350 |  | MRP for life saving equipment | 0d | 2012-05-15 A | 2012-05-15 A | 4229ELP610 FF, 4229ELP610 SS | 100% |  |  |
| 4229PFG130 |  | commercial evaluation & bid committee for Life saving equipment | 10d | 2012-05-23 A | 2012-05-23 A | 4229PFG180 | 100% |  |  |
| 4229PFG140 |  | F.O.C for Life saving equipment | 3d | 2012-05-23 A | 2012-05-23 A | 4229PFG130, 4229PFG190 | 100% |  |  |
| 4229PFG150 |  | P.O for Life saving equipment | 5d | 2012-05-23 A | 2012-05-23 A | 4229ELP610 | 100% |  |  |
| 4229PFG160 |  | Fabrication upto R.F.S | 90d | 2012-05-23 A | 2012-05-23 A | 4229PFG150, 4229PFG200 | 100% |  |  |
| 4229PFG170 |  | Delivery upto site | 45d | 2012-05-23 A | 2012-05-23 A | 4229PFG160 | 100% |  |  |
| 4229PFG180 |  | Receive revised commercial offers | 5d | 2012-05-23 A | 2012-05-23 A | 4229ELP600 | 100% |  |  |
| 4229PFG190 |  | Client approval on bid committee reccomendation | 2d | 2012-05-23 A | 2012-05-23 A | 4229PFG130 | 100% |  |  |
| 4229PFG200 |  | L.C issued by Gupco | 5d | 2012-05-23 A | 2012-05-23 A | 4229PFG150 | 100% |  |  |
|  | 7 | **Piping Bulk** |  | 2011-11-24 | 2013-03-11 |  |  |  |  |
| 4229PPB10 |  | Issue RFQ for Piping bulk | 2d | 2011-11-24 A | 2011-11-24 A | 4229GM10, 4229EPI60 | 100% |  |  |
| 4229PPB20 |  | Bidding for Piping bulk | 14d | 2011-11-25 A | 2011-12-20 A | 4229PPB10 | 100% |  |  |
| A1100 |  | T.E.R for Piping bulk | 15d | 2011-12-22 A | 2012-01-26 A | 4229EPI90 FF, 4229EPI90 SS | 100% |  |  |
| 4229PPB30 |  | Receive revised commercial offers | 5d | 2012-01-25 A | 2012-02-07 A | 4229EPI90 | 100% |  |  |
| 4229PPB40 |  | commercial evaluation & bid committee for Piping bulk | 12d | 2012-02-08 A | 2012-02-23 A | 4229PPB30, 4229EPI90 | 100% |  |  |
| 4229PPB50 |  | Client approval on bid committee reccomendation | 2d | 2012-02-23 A | 2012-02-29 A | 4229PPB40 | 100% |  |  |
| 4229PPB60 |  | F.O.C for Piping bulk | 3d | 2012-03-01 A | 2012-03-18 A | 4229PPB50, 4229PPB40 | 100% |  |  |
| A1370 |  | MRP for Piping bulk | 7d | 2012-03-19 A | 2012-03-27 A | 4229EPI140 FF, 4229EPI140 SS | 100% |  |  |
| 4229PPB70 |  | P.O for Piping bulk | 2d | 2012-03-28 A | 2012-03-29 A | 4229EPI140 | 100% |  |  |
| 4229PPB90 |  | Fabrication upto R.F.S (1st Batch) | 98d | 2012-04-01 A | 2012-07-31 | 4229PPB80, 4229PPB70 | 45% | 365d |  |
| 4229PPB80 |  | L.C issued by Gupco | 5d | 2012-06-03 | 2012-06-07 | 4229PPB70 |  | 259d |  |
| 4229PPB100 |  | Delivery upto site (1st Batch) | 45d | 2012-08-01 | 2012-09-14 | 4229PPB90 |  | 379d |  |
| 4229PPB110 |  | Fabrication upto R.F.S for minimal piping balance | 120d | 2012-09-28 | 2013-01-25 | 4229EPI190, 4229EPI280 FS+20d |  | 199d |  |
| 4229PPB120 |  | Delivery upto site (2nd Batch) for minimal piping balance | 45d | 2013-01-26 | 2013-03-11 | 4229PPB110 |  | 199d |  |
|  | 35 | **Additional piping bulk** |  | 2012-05-15 | 2013-01-29 |  |  |  |  |
| 4229PAP100 |  | Issue RFQ for Piping bulk | 2d | 2012-05-15 A | 2012-05-16 A | 4229EPI310 | 100% |  |  |
| 4229PAP110 |  | Bidding for Piping bulk | 25d | 2012-05-17 A | 2012-06-10 | 4229PAP100 | 64% | 236d |  |
| 4229PAP120 |  | T.E.R for Piping bulk | 20d | 2012-06-11 | 2012-07-08 | 4229EPI320 SS, 4229EPI320 FF |  | 168d |  |
| 4229PAP130 |  | Receive revised commercial offers | 5d | 2012-07-09 | 2012-07-15 | 4229EPI320 |  | 168d |  |
| 4229PAP140 |  | commercial evaluation & bid committee for Piping bulk | 12d | 2012-07-16 | 2012-07-31 | 4229PAP130 |  | 168d |  |
| 4229PAP150 |  | Client approval on bid committee reccomendation | 2d | 2012-08-01 | 2012-08-02 | 4229PAP140 |  | 168d |  |
| 4229PAP160 |  | F.O.C for Piping bulk | 3d | 2012-08-05 | 2012-08-07 | 4229PAP150, 4229PAP140 |  | 168d |  |
| 4229PAP170 |  | MRP for Piping bulk | 5d | 2012-08-08 | 2012-08-14 | 4229EPI330 SS, 4229EPI330 FF |  | 275d |  |
| 4229PAP200 |  | Fabrication upto R.F.S | 120d | 2012-08-08 | 2012-12-17 | 4229PAP160 |  | 238d |  |
| 4229PAP180 |  | P.O for Piping bulk | 2d | 2012-08-15 | 2012-08-16 | 4229EPI330, 4229PAP170 |  | 275d |  |
| 4229PAP190 |  | L.C issued by Gupco | 5d | 2012-08-26 | 2012-08-30 | 4229PAP180 |  | 275d |  |
| 4229PAP210 |  | Delivery upto site | 45d | 2012-12-18 | 2013-01-29 | 4229PAP200 |  | 240d |  |
|  | 8 | **Piping Gate,Globe & Butterfly valves** |  | 2011-12-08 | 2013-03-11 |  |  |  |  |
| 4229PPV10 |  | Issue RFQ for Piping valves | 2d | 2011-12-08 A | 2011-12-08 A | 4229GM10 | 100% |  |  |
| 4229PPV20 |  | Bidding for Piping valves | 14d | 2011-12-09 A | 2012-01-03 A | 4229PPV10 | 100% |  |  |
| A1110 |  | T.E.R for Piping valves | 21d | 2012-01-12 A | 2012-02-08 A | 4229EPI110 FF, 4229EPI110 SS | 100% |  |  |
| 4229PPV30 |  | Receive revised commercial offers | 5d | 2012-02-09 A | 2012-02-22 A | 4229EPI110 | 100% |  |  |
| 4229PPV40 |  | commercial evaluation & bid committee for Piping valves | 10d | 2012-02-23 A | 2012-03-14 A | 4229PPV30, 4229EPI110 | 100% |  |  |
| 4229PPV50 |  | Client approval on bid committee reccomendation | 2d | 2012-03-15 A | 2012-04-04 A | 4229PPV40 | 100% |  |  |
| 4229PPV60 |  | F.O.C for Piping valves | 3d | 2012-04-05 A | 2012-04-05 A | 4229PPV40, 4229PPV50 | 100% |  |  |
| A1380 |  | MRP for Piping valves | 4d | 2012-04-08 A | 2012-04-12 A | 4229EPI150 SS, 4229EPI150 FF | 100% |  |  |
| 4229PPV70 |  | P.O for Piping valves | 2d | 2012-04-12 A | 2012-04-17 A | 4229EPI150 | 100% |  |  |
| 4229PPV90 |  | Fabrication upto R.F.S (1st Batch) | 136d | 2012-04-17 A | 2012-08-19 | 4229PPV70, 4229PPV80 | 46% | 215d |  |
| 4229PPV80 |  | L.C issued by Gupco | 5d | 2012-06-03 | 2012-06-07 | 4229PPV70 |  | 151d |  |
| 4229PPV110 |  | Delivery upto site (1st Batch) | 14d | 2012-08-20 | 2012-09-02 | 4229PPV90 |  | 391d |  |
| 4229PPV100 |  | Fabrication upto R.F.S (2nd Batch) for minimal balance | 120d | 2012-09-28 | 2013-01-25 | 4229EPI190, 4229EPI280 FS+20d |  | 199d |  |
| 4229PPV120 |  | Delivery upto site (2nd Batch) for minimal balance | 45d | 2013-01-26 | 2013-03-11 | 4229PPV100 |  | 199d |  |
|  | 32 | **Piping Ball Valves** |  | 2011-12-08 | 2013-03-11 |  |  |  |  |

| ID | WBS | Task | Duration | Start | Finish | Predecessors | Complete | Total float |
| --- | --- | --- | --- | --- | --- | --- | --- | --- |
| 4229PBV10 |  | Issue RFQ for Piping Ball Valves | 2d | 2011-12-08 A | 2011-12-08 A | 4229EPI50 | 100% |  |
| 4229PBV20 |  | Bidding for Piping Ball Valves | 14d | 2011-12-09 A | 2012-01-11 A | 4229PBV10 | 100% |  |
| 4229PBV30 |  | T.E.R for Piping Ball Valves | 12d | 2012-01-12 A | 2012-02-13 A | 4229EPI290 SS, 4229EPI290 FF | 100% |  |
| 4229PBV40 |  | Receive revised commercial offers | 5d | 2012-02-14 A | 2012-03-13 A | 4229PBV20, 4229EPI290 | 100% |  |
| 4229PBV50 |  | commercial evaluation & bid committee | 10d | 2012-03-14 A | 2012-03-26 A | 4229PBV40 | 100% |  |
| 4229PBV60 |  | Client approval on bid committee reccomendation | 2d | 2012-03-27 A | 2012-04-03 A | 4229PBV50 | 100% |  |
| 4229PBV70 |  | F.O.C for Piping Ball Valves | 3d | 2012-04-04 A | 2012-04-05 A | 4229PBV60, 4229PBV80, 4229PBV50 | 100% |  |
| 4229PBV80 |  | MRP for Piping Ball Valves | 4d | 2012-04-08 A | 2012-04-12 A | 4229EPI300 SS, 4229EPI300 FF | 100% |  |
| 4229PBV90 |  | P.O for Piping Ball Valves | 2d | 2012-04-15 A | 2012-04-17 A | 4229EPI300 | 100% |  |
| 4229PBV110 |  | Fabrication upto R.F.S (1st Batch) | 126d | 2012-04-17 A | 2012-08-19 | 4229PBV150, 4229PBV90, 4229PBV70 | 42% | 346d |
| 4229PBV150 |  | L.C issued by Gupco | 5d | 2012-06-03 | 2012-06-07 | 4229PBV90 |  | 245d |
| 4229PBV130 |  | Delivery upto site (1st Batch) | 45d | 2012-08-20 | 2012-10-03 | 4229PBV110 |  | 360d |
| 4229PBV120 |  | Fabrication upto R.F.S (2nd Batch) for minimal balance | 120d | 2012-09-28 | 2013-01-25 | 4229EPI280 FS+20d |  | 199d |
| 4229PBV140 |  | Delivery upto site (2nd Batch) for minimal balance | 45d | 2013-01-26 | 2013-03-11 | 4229PBV120 |  | 199d |
|  | 2 | **Launcher & Receiver traps** |  | 2011-08-23 | 2012-10-23 |  |  |  |
| 4229PTR10 |  | Issue RFQ for L&R traps | 2d | 2011-08-23 A | 2011-08-25 A | 4229EPI10 FS-1d | 100% |  |
| 4229PTR20 |  | Bidding for L&R traps | 28d | 2011-08-26 A | 2011-09-19 A | 4229PTR10 | 100% |  |
| A1080 |  | T.E.R for L&R | 15d | 2011-09-22 A | 2011-12-04 A | 4229EPI30 SS, 4229EPI30 FF | 100% |  |
| 4229PTR30 |  | Receive revised commercial offers | 5d | 2011-12-05 A | 2011-12-11 A | 4229EPI30 | 100% |  |
| 4229PTR40 |  | commercial evaluation & bid committee for L&R traps | 10d | 2011-12-12 A | 2011-12-22 A | 4229EPI30, 4229PTR30 | 100% |  |
| 4229PTR50 |  | Client approval on bid committee reccomendation | 2d | 2011-12-25 A | 2012-01-31 A | 4229PTR40 | 100% |  |
| 4229PTR60 |  | F.O.C for L&R traps | 3d | 2012-02-01 A | 2012-02-08 A | 4229PTR50, 4229PTR40 | 100% |  |
| A1360 |  | MRP for L&R | 5d | 2012-02-09 A | 2012-02-19 A | 4229EPI70 SS, 4229EPI70 FF | 100% |  |
| 4229PTR70 |  | P.O for L&R traps | 2d | 2012-02-20 A | 2012-02-21 A | 4229PTR40, 4229EPI70 | 100% |  |
| 4229PTR80 |  | L.C issued by Gupco | 5d | 2012-02-22 A | 2012-06-03 | 4229PTR70 | 80% | 140d |
| 4229PTR90 |  | Fabrication upto R.F.S | 161d | 2012-02-22 A | 2012-10-16 | 4229PTR80, 4229PTR70 | 24% | 198d |
| 4229PTR100 |  | Delivery upto site | 7d | 2012-10-17 | 2012-10-23 | 4229PTR90 |  | 340d |
|  | 12 | **Instrument electrical bulk** |  | 2012-02-29 | 2012-11-26 |  |  |  |
| 4229PIB1000 |  | Issue RFQ for Instrument electrical bulk | 1d | 2012-02-29 A | 2012-03-04 A | 4229EIN230, 4229GM10 FS+1d | 100% |  |
| 4229PIB1010 |  | Bidding for Instrument electrical bulk | 25d | 2012-03-05 A | 2012-03-26 A | 4229PIB1000 | 100% |  |
| A1300 |  | T.E.R for Instrument electrical bulk | 15d | 2012-03-26 A | 2012-06-03 | 4229EIN360 FF, 4229EIN360 SS | 93% | 216d |
| 4229PIB1020 |  | Receive revised commercial offers | 5d | 2012-06-04 | 2012-06-10 | 4229EIN360 |  | 216d |
| 4229PIB1030 |  | commercial evaluation & bid committee for Instrument electrical bulk | 10d | 2012-06-11 | 2012-06-24 | 4229EIN360, 4229PIB1020 |  | 216d |
| 4229PIB1040 |  | Client approval on bid committee reccomendation | 2d | 2012-06-25 | 2012-06-26 | 4229PIB1030 |  | 216d |
| 4229PIB1050 |  | F.O.C for Instrument electrical bulk | 3d | 2012-06-27 | 2012-07-01 | 4229PIB1040, 4229PIB1030 |  | 216d |
| A1520 |  | MRP for Instrument electrical bulk | 5d | 2012-07-02 | 2012-07-08 | 4229EIN380 FF, 4229EIN380 SS |  | 216d |
| 4229PIB1060 |  | P.O for Instrument electrical bulk | 2d | 2012-07-09 | 2012-07-10 | 4229EIN380 |  | 216d |
| 4229PIB1070 |  | L.C issued by Gupco | 5d | 2012-07-11 | 2012-07-17 | 4229PIB1060 |  | 216d |
| 4229PIB1080 |  | Fabrication upto R.F.S | 90d | 2012-07-18 | 2012-10-27 | 4229PIB1070, 4229PIB1060 |  | 304d |
| 4229PIB1090 |  | Delivery upto site | 30d | 2012-10-28 | 2012-11-26 | 4229PIB1080 |  | 306d |
|  | 14 | **Instrument mechanical bulk** |  | 2012-01-25 | 2012-05-31 |  |  |  |
| 4229PIB10 |  | Issue RFQ for Instrument mechanical bulk | 2d | 2012-01-25 A | 2012-02-21 A | 4229EIN180, 4229GM10 FS+1d | 100% |  |
| 4229PIB20 |  | Bidding for Instrument mechanical bulk | 18d | 2012-02-22 A | 2012-03-29 A | 4229PIB10 | 100% |  |
| A1250 |  | T.E.R for Instrument Mechanical bulk | 15d | 2012-03-27 A | 2012-03-27 A | 4229EIN340 SS, 4229EIN340 FF | 100% |  |
| 4229PIB30 |  | Receive revised commercial offers | 5d | 2012-05-30 A | 2012-05-30 A | 4229EIN340 | 100% |  |
| 4229PIB100 |  | Delivery upto site | 35d | 2012-05-31 A | 2012-05-31 A | 4229PIB90 | 100% |  |
| 4229PIB40 |  | commercial evaluation & bid committee for Instrument mechanical bulk | 10d | 2012-05-31 A | 2012-05-31 A | 4229EIN340, 4229PIB30 | 100% |  |
| 4229PIB50 |  | Client approval on bid committee reccommendation | 2d | 2012-05-31 A | 2012-05-31 A | 4229PIB40 | 100% |  |
| 4229PIB60 |  | F.O.C for Instrument mechanical bulk | 3d | 2012-05-31 A | 2012-05-31 A | 4229PIB40, 4229PIB50 | 100% |  |
| 4229PIB70 |  | P.O for Instrument mechanical bulk | 2d | 2012-05-31 A | 2012-05-31 A | 4229EIN370 | 100% |  |
| 4229PIB80 |  | L.C issued by Gupco | 5d | 2012-05-31 A | 2012-05-31 A | 4229PIB70 | 100% |  |
| 4229PIB90 |  | Fabrication upto R.F.S | 90d | 2012-05-31 A | 2012-05-31 A | 4229PIB70, 4229PIB80 | 100% |  |
| A1510 |  | MRP for Instrument Mechanical bulk | 1d | 2012-05-31 A | 2012-05-31 A | 4229EIN370 SS, 4229EIN370 FF | 100% |  |
|  | 15 | **Field instrument** |  | 2011-12-13 | 2012-12-23 |  |  |  |
| 4229PFI10 |  | Issue RFQ for Field Instrument | 1d | 2011-12-13 A | 2011-12-14 A | 4229GM10 FS+1d, 4229EIN90 | 100% |  |
| 4229PFI20 |  | Bidding for field Instrument | 21d | 2011-12-15 A | 2012-01-12 A | 4229PFI10 | 100% |  |
| A1260 |  | T.E.R for field Instrument | 10d | 2012-01-17 A | 2012-05-02 A | 4229EIN250 FF, 4229EIN250 SS | 100% |  |
| 4229PFI30 |  | Receive revised commercial offers | 5d | 2012-05-03 A | 2012-06-03 | 4229EIN250 | 100% | 197d |
| 4229PFI40 |  | commercial evaluation & bid committee for field Instrument | 10d | 2012-06-03 | 2012-06-14 | 4229EIN250, 4229PFI30 |  | 197d |
| 4229PFI50 |  | Client approval on bid committee reccomendation | 2d | 2012-06-17 | 2012-06-18 | 4229PFI40 |  | 197d |
| 4229PFI60 |  | F.O.C for field Instrument | 3d | 2012-06-19 | 2012-06-21 | 4229PFI50, 4229PFI40 |  | 197d |
| A1500 |  | MRP for field Instrument | 5d | 2012-06-24 | 2012-06-28 | 4229EIN350 SS, 4229EIN350 FF |  | 197d |
| 4229PFI70 |  | P.O for field Instrument | 2d | 2012-07-01 | 2012-07-02 | 4229EIN350 |  | 197d |
| 4229PFI80 |  | L.C issued by Gupco | 5d | 2012-07-03 | 2012-07-09 | 4229PFI70 |  | 197d |
| 4229PFI90 |  | Fabrication upto R.F.S | 120d | 2012-07-10 | 2012-11-18 | 4229PFI80, 4229PFI70 |  | 277d |
| 4229PFI100 |  | Delivery upto site | 35d | 2012-11-19 | 2012-12-23 | 4229PFI90 |  | 279d |
|  | 16 | **Choke valves** |  | 2011-11-24 | 2012-10-30 |  |  |  |
| 4229PCV10 |  | Issue RFQ for Choke valves | 2d | 2011-11-24 A | 2011-11-24 A | 4229GM10 FS+1d, 4229EIN40 | 100% |  |
| 4229PCV20 |  | Bidding for Choke valves | 30d | 2011-11-25 A | 2011-12-26 A | 4229PCV10 | 100% |  |
| A1280 |  | T.E.R for choke valves | 20d | 2011-12-27 A | 2012-04-02 A | 4229EIN170 SS, 4229EIN170 FF | 100% |  |

| ID | WBS | Task | Duration | Start | Finish | Predecessors | Complete | Total float |
| --- | --- | --- | --- | --- | --- | --- | --- | --- |
| 4229PCV30 |  | Receive revised commercial offers | 5d | 2012-04-10 A | 2012-04-26 A | 4229EIN170 | 100% |  |
| 4229PCV40 |  | commercial evaluation & bid committee for Choke valves | 10d | 2012-04-29 A | 2012-05-13 A | 4229EIN170, 4229PCV30 | 100% |  |
| 4229PCV50 |  | Client approval on bid committee reccomendation | 2d | 2012-05-13 A | 2012-05-17 A | 4229PCV40 | 100% |  |
| 4229PCV60 |  | F.O.C for Choke valves | 3d | 2012-05-17 A | 2012-06-03 | 4229PCV50 | 100% | 156d |
| A1480 |  | MRP for Choke valves | 5d | 2012-05-27 A | 2012-06-04 | 4229EIN290 FF, 4229EIN290 SS | 60% | 213d |
| 4229PCV70 |  | P.O for Choke valves | 5d | 2012-06-05 | 2012-06-11 | 4229EIN290, 4229PCV60 |  | 213d |
| 4229PCV80 |  | L.C issued by Gupco | 5d | 2012-06-12 | 2012-06-18 | 4229PCV70 |  | 213d |
| 4229PCV90 |  | Fabrication upto R.F.S | 87d | 2012-06-19 | 2012-09-25 | 4229PCV70, 4229PCV80 |  | 299d |
| 4229PCV100 |  | Delivery upto site | 35d | 2012-09-26 | 2012-10-30 | 4229PCV90 |  | 333d |
|  | 17 | **Pressure regulator valves** |  | 2011-10-06 | 2012-12-19 |  |  |  |
| 4229PRV10 |  | Issue RFQ for pressure regulator valves | 2d | 2011-10-06 A | 2011-10-09 A | 4229GM10 FS+1d, 4229EIN30 | 100% |  |
| 4229PRV20 |  | Bidding for pressure regulator valves | 31d | 2011-10-10 A | 2012-02-01 A | 4229PRV10 | 100% |  |
| A1290 |  | T.E.R for Pressure regulator valves | 15d | 2012-02-02 A | 2012-04-03 A | 4229EIN160 FF, 4229EIN160 SS | 100% |  |
| 4229PRV30 |  | Receive revised commercial offers | 5d | 2012-04-04 A | 2012-04-15 A | 4229EIN160 | 100% |  |
| 4229PRV40 |  | Commercial evaluation & bid committee for pressure regulator valves | 10d | 2012-04-17 A | 2012-05-10 A | 4229EIN160, 4229PRV30 | 100% |  |
| 4229PRV50 |  | Client approval on bid committee reccommendation | 2d | 2012-05-13 A | 2012-05-14 A | 4229PRV40 | 100% |  |
| 4229PRV60 |  | F.O.C for pressure regulator valves | 2d | 2012-05-15 A | 2012-06-03 | 4229PRV40, 4229PRV50 | 100% | 151d |
| A1470 |  | MRP for pressure regulator valves | 5d | 2012-05-27 A | 2012-06-05 | 4229EIN320 FF, 4229EIN320 SS | 40% | 151d |
| 4229PRV70 |  | P.O for pressure regulator valves | 2d | 2012-06-06 | 2012-06-07 | 4229EIN320 |  | 151d |
| 4229PRV90 |  | Fabrication upto R.F.S | 153d | 2012-06-08 | 2012-11-19 | 4229PRV70 |  | 215d |
| 4229PRV80 |  | L.C issued by Gupco | 3d | 2012-06-10 | 2012-06-12 | 4229PRV70 |  | 327d |
| 4229PRV100 |  | Delivery upto site | 30d | 2012-11-20 | 2012-12-19 | 4229PRV90 |  | 283d |
|  | 23 | **shutdown valves** |  | 2011-10-27 | 2012-12-16 |  |  |  |
| 4229POV10 |  | Issue RFQ for SDV | 2d | 2011-10-27 A | 2011-10-27 A | 4229EIN50 | 100% |  |
| 4229POV20 |  | Bidding for SDV | 30d | 2011-10-28 A | 2011-11-27 A | 4229POV10 | 100% |  |
| A1270 |  | T.E.R for SDV | 20d | 2011-11-28 A | 2012-02-01 A | 4229EIN220 FF, 4229EIN220 SS | 100% |  |
| 4229POV30 |  | Receive revised commercial offers | 5d | 2012-02-02 A | 2012-02-16 A | 4229EIN220 | 100% |  |
| 4229POV40 |  | Commercial evaluation & bid committee for SDV | 10d | 2012-02-16 A | 2012-02-19 A |  | 100% |  |
| 4229POV50 |  | Client approval on bid committee reccommendation | 2d | 2012-03-05 A | 2012-03-28 A | 4229POV40 | 100% |  |
| 4229POV60 |  | F.O.C for SDV | 2d | 2012-03-29 A | 2012-04-22 A | 4229POV50, 4229POV40 | 100% |  |
| A1490 |  | MRP for SDV | 5d | 2012-04-22 A | 2012-04-26 A | 4229EIN330 FF, 4229EIN330 SS | 100% |  |
| 4229POV70 |  | P.O for SDV | 2d | 2012-04-29 A | 2012-04-29 A | 4229EIN330 | 100% |  |
| 4229POV90 |  | Fabrication upto R.F.S | 181d | 2012-04-30 A | 2012-11-16 | 4229POV80, 4229POV70 | 17% | 215d |
| 4229POV80 |  | L.C issued by Gupco | 5d | 2012-06-03 | 2012-06-07 | 4229POV70 |  | 151d |
| 4229POV100 |  | Delivery upto site | 30d | 2012-11-17 | 2012-12-16 | 4229POV90 |  | 284d |
|  | 34 | **Additonal shutdown valves** |  | 2012-05-01 | 2013-02-12 |  |  |  |
| 4229PFV110 |  | Bidding for SDV | 30d | 2012-05-01 A | 2012-06-02 | 4229PFV100 | 100% | 227d |
| 4229PFV100 |  | Issue RFQ for SDV | 2d | 2012-05-06 A | 2012-05-07 A | 4229EIN600 | 100% |  |
| 4229PFV120 |  | T.E.R for SDV | 10d | 2012-05-27 A | 2012-06-20 | 4229EIN610 SS, 4229EIN610 FF |  | 160d |
| 4229PFV130 |  | Receive revised commercial offers | 5d | 2012-06-21 | 2012-06-27 | 4229EIN610 |  | 160d |
| 4229PFV140 |  | Commercial evaluation & bid committee for SDV | 10d | 2012-06-28 | 2012-07-11 | 4229PFV130 |  | 160d |
| 4229PFV150 |  | Client approval on bid committee reccommendation | 2d | 2012-07-12 | 2012-07-15 | 4229PFV140 |  | 160d |
| 4229PFV160 |  | F.O.C for SDV | 2d | 2012-07-16 | 2012-07-17 | 4229PFV150, 4229PFV140 |  | 160d |
| 4229PFV170 |  | MRP for SDV | 5d | 2012-07-18 | 2012-07-24 | 4229EIN620 SS, 4229EIN620 FF |  | 290d |
| 4229PFV200 |  | Fabrication upto R.F.S | 168d | 2012-07-18 | 2013-01-13 | 4229PFV160 |  | 226d |
| 4229PFV180 |  | P.O for SDV | 2d | 2012-07-25 | 2012-07-26 | 4229EIN620 |  | 290d |
| 4229PFV190 |  | L.C issued by Gupco | 5d | 2012-07-29 | 2012-08-02 | 4229PFV180 |  | 290d |
| 4229PFV210 |  | Delivery upto site | 30d | 2013-01-14 | 2013-02-12 | 4229PFV200 |  | 226d |
|  | 18 | **Multiphase flowmeter** |  | 2011-10-09 | 2012-11-22 |  |  |  |
| 4229PMP10 |  | Issue RFQ for MPFM | 2d | 2011-10-09 A | 2011-10-09 A | 4229EIN20 | 100% |  |
| 4229PMP20 |  | Bidding for MPFM | 30d | 2011-10-10 A | 2011-11-13 A | 4229PMP10 | 100% |  |
| A1240 |  | T.E.R for MPFM | 20d | 2011-11-14 A | 2011-12-21 A | 4229EIN110 SS, 4229EIN110 FF | 100% |  |
| 4229PMP30 |  | Receive revised commercial offers | 4d | 2011-12-22 A | 2011-12-25 A | 4229EIN110 | 100% |  |
| 4229PMP40 |  | commercial evaluation & bid committee for MPFM | 10d | 2011-12-27 A | 2011-12-28 A | 4229PMP30, 4229EIN110 | 100% |  |
| 4229PMP50 |  | Client approval on bid committee reccomendation | 2d | 2011-12-29 A | 2012-01-31 A | 4229PMP40 | 100% |  |
| 4229PMP60 |  | F.O.C for MPFM | 3d | 2012-02-01 A | 2012-02-08 A | 4229PMP50, 4229PMP40 | 100% |  |
| A1460 |  | MRP for MPFM | 5d | 2012-02-09 A | 2012-02-20 A | 4229EIN260 FF, 4229EIN260 SS | 100% |  |
| 4229PMP70 |  | P.O for MPFM | 2d | 2012-02-20 A | 2012-02-21 A | 4229EIN260 | 100% |  |
| 4229PMP90 |  | Fabrication upto R.F.S | 236d | 2012-02-22 A | 2012-10-23 | 4229PMP70 | 44% | 200d |
| 4229PMP80 |  | L.C issued by Gupco | 5d | 2012-06-03 | 2012-06-07 | 4229PMP70 |  | 330d |
| 4229PMP100 |  | Delivery upto site | 30d | 2012-10-24 | 2012-11-22 | 4229PMP90 |  | 308d |
|  | 19 | **Safe guard system** |  | 2011-08-25 | 2012-12-15 |  |  |  |
| 4229PSG10 |  | Issue RFQ for SGS | 2d | 2011-08-25 A | 2011-08-28 A | 4229GM10, 4229EIN10 FS-1d | 100% |  |
| 4229PSG20 |  | Bidding for SGS | 33d | 2011-08-29 A | 2011-09-26 A | 4229PSG10 | 100% |  |
| A1230 |  | T.E.R for SGS | 25d | 2011-09-28 A | 2012-01-16 A | 4229EIN80 SS, 4229EIN80 FF | 100% |  |
| 4229PSG30 |  | Receive revised commercial offers | 5d | 2012-01-16 A | 2012-01-30 A | 4229EIN80 | 100% |  |
| 4229PSG40 |  | commercial evaluation & bid committee for SGS | 22d | 2012-02-01 A | 2012-02-29 A | 4229EIN80, 4229PSG30 | 100% |  |
| 4229PSG50 |  | Client approval on bid committee reccomendation | 2d | 2012-02-29 A | 2012-03-11 A | 4229PSG40 | 100% |  |
| A1450 |  | MRP for SGS | 5d | 2012-03-08 A | 2012-05-08 A | 4229EIN210 FF, 4229EIN210 SS | 100% |  |
| 4229PSG60 |  | F.O.C for SGS | 3d | 2012-03-12 A | 2012-05-06 A | 4229PSG40, 4229PSG50 | 100% |  |

| ID | WBS | Task | Duration | Start | Finish | Predecessors | Complete | Total float |
| --- | --- | --- | --- | --- | --- | --- | --- | --- |
| 4229PSG70 |  | P.O for SGS | 2d | 2012-05-08 A | 2012-05-27 A | 4229EIN210 | 100% |  |
| 4229PSG90 |  | Fabrication upto R.F.S | 170d | 2012-05-27 A | 2012-12-06 | 4229PSG80, 4229PSG70 |  | 215d |
| 4229PSG80 |  | L.C issued by Gupco | 5d | 2012-06-03 | 2012-06-07 | 4229PSG70 |  | 151d |
| 4229PSG100 |  | Delivery upto site | 9d | 2012-12-07 | 2012-12-15 | 4229PSG90 |  | 287d |
|  | 4 | **Radar System** |  | 2011-11-30 | 2013-01-16 |  |  |  |
| 4229PRS10 |  | Issue RFQ for Radar system | 2d | 2011-11-30 A | 2011-11-30 A | 4229ETE80 | 100% |  |
| 4229PRS20 |  | Bidding for Radar system | 15d | 2011-12-01 A | 2012-06-30 | 4229PRS10 |  | 2d |
| A1180 |  | T.E.R for Radar System | 23d | 2012-07-03 | 2012-08-02 | 4229ETE170 FF, 4229ETE170 SS |  | 272d |
| 4229PRS30 |  | Receive revised commercial offers | 3d | 2012-08-05 | 2012-08-07 | 4229ETE170 |  | 174d |
| 4229PRS40 |  | commercial evaluation & bid committee for Radar system | 10d | 2012-08-08 | 2012-08-28 | 4229PRS30 |  | 174d |
| 4229PRS50 |  | Client approval on bid committee reccomendation | 2d | 2012-08-29 | 2012-08-30 | 4229PRS40 |  | 174d |
| 4229PRS60 |  | F.O.C for Radar system | 3d | 2012-09-02 | 2012-09-04 | 4229PRS40, 4229PRS50 |  | 174d |
| A1530 |  | MRP for Radar System | 5d | 2012-09-05 | 2012-09-11 | 4229ETE90 SS, 4229ETE90 FF |  | 174d |
| 4229PRS70 |  | P.O for Radar system | 2d | 2012-09-12 | 2012-09-13 | 4229ETE90 |  | 174d |
| 4229PRS80 |  | L.C issued by Gupco | 5d | 2012-09-16 | 2012-09-20 | 4229PRS70 |  | 174d |
| 4229PRS90 |  | Fabrication upto R.F.S | 90d | 2012-09-21 | 2012-12-19 | 4229PRS80, 4229PRS70 |  | 251d |
| 4229PRS100 |  | Delivery upto site | 30d | 2012-12-20 | 2013-01-16 | 4229PRS90 |  | 253d |
|  | 9 | **Solar power unit** |  | 2011-08-23 | 2012-11-09 |  |  |  |
| 4229PSU10 |  | Issue RFQ for solar power unit | 2d | 2011-08-23 A | 2011-08-24 A | 4229EEL10, 4229GM10 | 100% |  |
| 4229PSU20 |  | Bidding for solar power unit | 49d | 2011-08-25 A | 2011-10-13 A | 4229PSU10 | 100% |  |
| A1610 |  | T.ER for solar power unit | 15d | 2011-10-13 A | 2012-01-31 A | 4229EEL40 FF, 4229EEL40 SS | 100% |  |
| 4229PSU30 |  | Receive revised commercial offers | 5d | 2012-02-01 A | 2012-02-12 A | 4229EEL40 | 100% |  |
| 4229PSU40 |  | commercial evaluation & bid committee for solar power unit | 15d | 2012-02-13 A | 2012-02-29 A | 4229PSU30, 4229EEL40 | 100% |  |
| 4229PSU50 |  | Client approval on bid committee reccomendation | 2d | 2012-02-29 A | 2012-03-11 A | 4229PSU40 | 100% |  |
| A1420 |  | MRP for solar power unit | 5d | 2012-03-08 A | 2012-03-28 A | 4229EEL130 SS, 4229EEL130 FF | 100% |  |
| 4229PSU60 |  | F.O.C for solar power unit | 3d | 2012-03-28 A | 2012-03-28 A | 4229PSU40, 4229PSU50 | 100% |  |
| 4229PSU70 |  | P.O for solar power unit | 5d | 2012-04-01 A | 2012-04-04 A | 4229EEL130 | 100% |  |
| 4229PSU90 |  | Fabrication upto R.F.S | 175d | 2012-04-05 A | 2012-09-25 | 4229PSU70, 4229PSU80 | 44% | 194d |
| 4229PSU80 |  | L.C issued by Gupco | 5d | 2012-06-03 | 2012-06-07 | 4229PSU70 |  | 136d |
| 4229PSU100 |  | Delivery upto site | 45d | 2012-09-26 | 2012-11-09 | 4229PSU90 |  | 323d |
|  | 10 | **Navigation aids** |  | 2011-09-18 | 2012-08-15 |  |  |  |
| 4229PNA10 |  | Issue RFQ for Navigation aids | 2d | 2011-09-18 A | 2011-09-18 A | 4229EEL30, 4229GM10 | 100% |  |
| 4229PNA20 |  | Bidding for Navigation aids | 61d | 2011-09-19 A | 2011-10-16 A | 4229PNA10 | 100% |  |
| 4229EEL320 |  | T.E.R for Navigation aids | 15d | 2011-10-17 A | 2011-12-07 A | 4229EEL60 FF, 4229EEL60 SS | 100% |  |
| 4229PNA30 |  | Receive revised commercial offers | 5d | 2011-12-08 A | 2011-12-13 A | 4229EEL60 | 100% |  |
| 4229PNA50 |  | Client approval on bid committee reccomendation | 2d | 2011-12-13 A | 2012-01-11 A | 4229PNA40 | 100% |  |
| 4229PNA40 |  | commercial evaluation & bid committee for Navigation aids | 10d | 2011-12-14 A | 2011-12-21 A | 4229EEL60, 4229PNA30 | 100% |  |
| 4229PNA60 |  | F.O.C for Navigation aids | 3d | 2012-01-11 A | 2012-01-12 A | 4229PNA40, 4229PNA50 | 100% |  |
| A1430 |  | MRP for Navigation aids | 4d | 2012-01-12 A | 2012-01-18 A | 4229EEL150 FF, 4229EEL150 SS | 100% |  |
| 4229PNA70 |  | P.O for Navigation aids | 5d | 2012-01-19 A | 2012-02-01 A | 4229EEL150 | 100% |  |
| 4229PNA90 |  | Fabrication upto R.F.S | 130d | 2012-02-01 A | 2012-07-01 | 4229PNA70, 4229PNA80 | 82% | 215d |
| 4229PNA80 |  | L.C issued by Gupco | 5d | 2012-06-03 | 2012-06-07 | 4229PNA70 |  | 151d |
| 4229PNA100 |  | Delivery upto site | 45d | 2012-07-02 | 2012-08-15 | 4229PNA90 |  | 409d |
|  | 11 | **Electrical bulk** |  | 2011-12-28 | 2012-12-11 |  |  |  |
| 4229PEB10 |  | Issue RFQ for Electrical bulk | 2d | 2011-12-28 A | 2011-12-29 A | 4229GM10 FS+1d, 4229EEL140 | 100% |  |
| 4229PEB20 |  | Bidding for Electrical bulk | 25d | 2011-12-30 A | 2012-02-01 A | 4229PEB10 | 100% |  |
| 4229EEL310 |  | T.E.R for Electrical bulk | 15d | 2012-02-02 A | 2012-06-03 | 4229EEL200 SS, 4229EEL200 FF | 93% | 205d |
| 4229PEB30 |  | Receive revised commercial offers | 5d | 2012-06-04 | 2012-06-10 | 4229EEL200 |  | 205d |
| 4229PEB40 |  | commercial evaluation & bid committee for Electrical bulk | 10d | 2012-06-11 | 2012-06-24 | 4229PEB30, 4229EEL200 |  | 205d |
| 4229PEB50 |  | Client approval on bid committee reccomendation | 2d | 2012-06-25 | 2012-06-26 | 4229PEB40 |  | 205d |
| 4229PEB60 |  | F.O.C for Electrical bulk | 3d | 2012-06-27 | 2012-07-01 | 4229PEB50, 4229PEB40 |  | 205d |
| A1440 |  | MRP for Electrical bulk | 5d | 2012-07-02 | 2012-07-08 | 4229EEL210 SS, 4229EEL210 FF |  | 205d |
| 4229PEB70 |  | P.O for Electrical bulk | 2d | 2012-07-09 | 2012-07-10 | 4229EEL210 |  | 205d |
| 4229PEB80 |  | L.C issued by Gupco | 5d | 2012-07-11 | 2012-07-17 | 4229PEB70 |  | 205d |
| 4229PEB90 |  | Fabrication upto R.F.S | 90d | 2012-07-18 | 2012-10-27 | 4229PEB70, 4229PEB80 |  | 289d |
| 4229PEB100 |  | Delivery upto site | 45d | 2012-10-28 | 2012-12-11 | 4229PEB90 |  | 291d |
|  | 1 | **Cathodic protection** |  | 2011-10-26 | 2012-07-22 |  |  |  |
| 4229PCP10 |  | Issue RFQ for Cathodic protection | 2d | 2011-10-26 A | 2011-10-26 A | 4229EME10 | 100% |  |
| 4229PCP20 |  | Bidding for Cathodic protection | 25d | 2011-10-27 A | 2011-11-24 A | 4229PCP10 | 100% |  |
| A1120 |  | T.E.R for cathodic protection | 18.88d | 2011-11-24 A | 2011-12-27 A | 4229EME60 FF, 4229EME60 SS | 100% |  |
| 4229PCP30 |  | Receive revised commercial offers | 5d | 2011-12-28 A | 2012-01-15 A | 4229EME60 | 100% |  |
| 4229PCP40 |  | Commercial evaluation & bid committee for Cathodic protection | 10d | 2012-01-16 A | 2012-01-23 A | 4229PCP30, 4229EME60 | 100% |  |
| 4229PCP50 |  | Client approval on bid committee reccommendation | 2d | 2012-02-09 A | 2012-02-20 A | 4229PCP40 | 100% |  |
| 4229PCP60 |  | F.O.C for Cathodic protection | 3d | 2012-02-21 A | 2012-02-26 A | 4229PCP40, 4229PCP50 | 100% |  |
| 4229PCP90 |  | Fabrication upto R.F.S | 70d | 2012-02-26 A | 2012-05-28 A | 4229PCP80, 4229PCP70 | 100% |  |
| A1390 |  | MRP for cathodic protection | 5d | 2012-02-27 A | 2012-02-28 A | 4229EME100 SS, 4229EME100 FF | 100% |  |
| 4229PCP70 |  | P.O for Cathodic protection | 5d | 2012-02-29 A | 2012-03-01 A | 4229EME100 | 100% |  |
| 4229PCP100 |  | Delivery upto site | 45d | 2012-05-29 A | 2012-07-22 | 4229PCP90 |  | 433d |
| 4229PCP80 |  | L.C issued by Gupco | 5d | 2012-06-03 | 2012-06-07 | 4229PCP70 |  | 297d |
|  | 20 | **Pressure Vessels** |  | 2011-11-17 | 2012-10-12 |  |  |  |

| ID | WBS | Task | Duration | Start | Finish | Predecessors | Complete | Total float | Constraint |
| --- | --- | --- | --- | --- | --- | --- | --- | --- | --- |
| 4229PVE10 |  | Issue RFQ for pressure vessels | 2d | 2011-11-17 A | 2011-11-17 A | 4229EPV20, 4229GM10 | 100% |  |  |
| 4229PVE20 |  | Bidding for pressure vessels | 30d | 2011-11-18 A | 2011-12-08 A | 4229PVE10 | 100% |  |  |
| A1140 |  | T.E.R for pressure vessels | 20d | 2011-12-15 A | 2012-02-20 A | 4229EPV40 SS, 4229EPV40 FF | 100% |  |  |
| 4229PVE30 |  | Receive revised commercial offers | 5d | 2012-02-21 A | 2012-02-27 A | 4229EPV40 | 100% |  |  |
| 4229PVE40 |  | commercial evaluation & bid committee for pressure vessels | 10d | 2012-02-28 A | 2012-03-18 A | 4229EPV40, 4229PVE30 | 100% |  |  |
| 4229PVE50 |  | Client approval on bid committee reccommendation | 2d | 2012-03-19 A | 2012-03-19 A | 4229PVE40 | 100% |  |  |
| 4229PVE60 |  | F.O.C for pressure vessels | 3d | 2012-03-19 A | 2012-03-20 A | 4229PVE50, 4229PVE40 | 100% |  |  |
| A1410 |  | MRP for K.O drum | 2d | 2012-03-21 A | 2012-03-25 A | 4229EPV60 SS, 4229EPV60 FF | 100% |  |  |
| 4229PVE70 |  | P.O for pressure vessels | 5d | 2012-03-26 A | 2012-04-01 A | 4229EPV60 | 100% |  |  |
| 4229PVE90 |  | Fabrication upto R.F.S | 182d | 2012-04-01 A | 2012-09-28 | 4229PVE70, 4229PVE80 | 45% | 215d |  |
| 4229PVE80 |  | L.C issued by Gupco | 5d | 2012-06-03 | 2012-06-07 | 4229PVE70 |  | 151d |  |
| 4229PVE100 |  | Delivery upto site | 14d | 2012-09-29 | 2012-10-12 | 4229PVE90 |  | 351d |  |
|  | 21 | **Open drain Tanks (Cancelled)** |  | 2011-10-27 | 2012-03-03 |  |  |  |  |
| 4229PTA10 |  | Issue RFQ for tanks | 2d | 2011-10-27 A | 2011-10-27 A | 4229EPV10, 4229GM10 | 100% |  |  |
| 4229PTA20 |  | Bidding for tanks | 30d | 2011-10-27 A | 2011-11-24 A |  | 100% |  |  |
| A1130 |  | T.E.R for tanks | 20d | 2011-11-24 A | 2011-12-29 A | 4229EPV30 SS, 4229EPV30 FF | 100% |  |  |
| 4229PTA30 |  | Receive revised commercial offers | 5d | 2011-12-29 A | 2012-01-05 A | 4229EPV30 | 100% |  |  |
| 4229PTA40 |  | commercial evaluation & bid committee for tanks | 10d | 2012-01-08 A | 2012-03-03 A | 4229PTA30, 4229EPV30 | 100% |  | start on or after 2012-01-08 |
| A1400 |  | MRP for tanks | 5d | 2012-03-01 A | 2012-03-03 A | 4229EPV50 FF, 4229EPV50 SS | 100% |  |  |
| 4229PTA100 |  | Delivery upto site | 45d | 2012-03-03 A | 2012-03-03 A | 4229PTA90 | 100% |  |  |
| 4229PTA50 |  | Client approval on bid committee reccomendation | 2d | 2012-03-03 A | 2012-03-03 A | 4229PTA40 | 100% |  |  |
| 4229PTA60 |  | F.O.C for tanks | 3d | 2012-03-03 A | 2012-03-03 A | 4229PTA40, 4229PTA50 | 100% |  |  |
| 4229PTA70 |  | P.O for tanks | 5d | 2012-03-03 A | 2012-03-03 A | 4229EPV50 | 100% |  |  |
| 4229PTA80 |  | L.C issued by Gupco | 5d | 2012-03-03 A | 2012-03-03 A | 4229PTA70 | 100% |  |  |
| 4229PTA90 |  | Fabrication upto R.F.S | 120d | 2012-03-03 A | 2012-03-03 A | 4229PTA80, 4229PTA70 | 100% |  |  |
|  | 33 | **Progress cavity pump** |  | 2012-03-14 | 2013-02-13 |  |  |  |  |
| 4229PPC100 |  | Issue RFQ for pump | 2d | 2012-03-14 A | 2012-03-20 A | 4229EME170 | 100% |  |  |
| 4229PPC110 |  | Bidding for pump | 40d | 2012-03-21 A | 2012-04-28 A | 4229PPC100 | 100% |  |  |
| 4229PPC120 |  | T.E.R for pump | 30d | 2012-04-29 A | 2012-06-05 | 4229EME180 SS, 4229EME180 FF | 90% | 158d |  |
| 4229PPC130 |  | Receive revised commercial offers for pump | 5d | 2012-06-06 | 2012-06-12 | 4229EME180 |  | 158d |  |
| 4229PPC180 |  | commercial evaluation & bid committee for pump | 11d | 2012-06-13 | 2012-06-27 | 4229PPC130 |  | 158d |  |
| 4229PPC160 |  | Client approval on bid committee reccomendation | 2d | 2012-06-28 | 2012-07-01 | 4229PPC180 |  | 158d |  |
| 4229PPC190 |  | F.O.C for pump | 3d | 2012-07-02 | 2012-07-04 | 4229PPC160, 4229PPC180 |  | 158d |  |
| 4229PPC140 |  | Fabrication upto R.F.S for pump | 168d | 2012-07-05 | 2012-12-31 | 4229PPC190 |  | 224d |  |
| 4229PPC210 |  | MRP for pump | 5d | 2012-07-05 | 2012-07-11 | 4229EME200 FF, 4229EME200 SS |  | 296d |  |
| 4229PPC200 |  | P.O for pump | 5d | 2012-07-12 | 2012-07-18 | 4229EME200 |  | 296d |  |
| 4229PPC170 |  | L.C issued by Gupco | 5d | 2012-07-19 | 2012-07-25 | 4229PPC200 |  | 296d |  |
| 4229PPC150 |  | Delivery upto site for pump | 45d | 2012-12-31 | 2013-02-13 | 4229PPC140 |  | 225d |  |
|  | 24 | **18" pipeline** |  |  |  |  |  |  |  |
|  | 5 | **8"pipeline** |  | 2011-10-31 | 2012-08-06 |  |  |  |  |
| 4229PPL50 |  | Issue RFQ for 8" pipeline | 2d | 2011-10-31 A | 2011-10-31 A | 4229EPL560 | 100% |  |  |
| 4229PPL10 |  | Bidding for 8" pipeline | 35d | 2011-11-01 A | 2011-11-21 A | 4229PPL50, 4229EPL560 | 100% |  |  |
| A1150 |  | T.E.R for 8"line pipe | 28.88d | 2011-11-22 A | 2012-01-08 A | 4229EPL70 SS, 4229EPL70 FF | 100% |  |  |
| 4229PPL20 |  | Receive revised commercial offers for 8"pipeline | 5d | 2012-01-09 A | 2012-01-24 A | 4229EPL70 | 100% |  |  |
| 4229PPL60 |  | commercial evaluation & bid committee for 8"pipeline | 10d | 2012-01-25 A | 2012-01-30 A | 4229PPL20 | 100% |  |  |
| 4229PPL70 |  | Client approval on bid committee reccomendation | 2d | 2012-02-13 A | 2012-02-19 A | 4229PPL60 | 100% |  |  |
| 4229PPL80 |  | F.O.C for 8" pipeline | 3d | 2012-02-21 A | 2012-02-26 A | 4229PPL70, 4229PPL60 | 100% |  |  |
| A1600 |  | MRP for 8" pipeline | 5d | 2012-02-21 A | 2012-02-26 A | 4229EPL110 SS, 4229EPL110 FF | 100% |  |  |
| 4229PPL90 |  | P.O for 8" pipeline | 5d | 2012-02-27 A | 2012-02-29 A | 4229EPL110 | 100% |  |  |
| 4229PPL110 |  | Fabrication upto R.F.S | 126d | 2012-02-29 A | 2012-07-07 | 4229PPL100, 4229PPL90 | 76% | 404d |  |
| 4229PPL100 |  | L.C issued by Gupco | 5d | 2012-06-03 | 2012-06-07 | 4229PPL90 |  | 286d |  |
| 4229PPL120 |  | Delivery upto site | 30d | 2012-07-08 | 2012-08-06 | 4229PPL110 |  | 418d |  |
|  | 30 | **Hot bends** |  | 2011-10-09 | 2012-10-05 |  |  |  |  |
| 4229PHB10 |  | Issue RFQ for hot bends | 2d | 2011-10-09 A | 2011-10-09 A | 4229EPL20 | 100% |  |  |
| 4229PHB20 |  | Bidding for hot bends | 25d | 2011-10-10 A | 2011-10-30 A | 4229PHB10 | 100% |  | start on or after 2011-10-10 |
| A1200 |  | T.E.R for hot bends | 25.88d | 2011-10-30 A | 2011-12-08 A | 4229EPL90 SS, 4229EPL90 FF | 100% |  |  |
| 4229PHB30 |  | Receive revised commercial offers for hot bends | 5d | 2011-12-09 A | 2011-12-28 A | 4229EPL90 | 100% |  |  |
| 4229PHB50 |  | commercial evaluation & bid committee for hot bends | 10d | 2011-12-29 A | 2012-01-24 A | 4229PHB30 | 100% |  |  |
| 4229PHB60 |  | Client approval on bid committee reccomendation | 2d | 2012-01-26 A | 2012-01-31 A | 4229PHB50 | 100% |  |  |
| A1560 |  | MRP for hot bends | 6d | 2012-02-09 A | 2012-02-19 A | 4229EPL190 SS, 4229EPL190 FF | 100% |  |  |
| 4229PHB70 |  | F.O.C for hot bends | 3d | 2012-04-01 A | 2012-04-05 A | 4229PHB60, 4229PHB50 | 100% |  | start on or after 2012-02-01 |
| 4229PHB100 |  | Fabrication upto R.F.S | 112d | 2012-04-06 A | 2012-09-05 | 4229PHB70, 4229PHB90 | 30% | 356d | start on or after 2012-02-09 |
| 4229PHB80 |  | P.O for hot bends | 5d | 2012-04-10 A | 2012-04-18 A | 4229EPL190 | 100% |  |  |
| 4229PHB90 |  | L.C issued by Gupco | 5d | 2012-06-03 | 2012-06-07 | 4229PHB80 |  | 252d |  |
| 4229PHB110 |  | Delivery upto site | 30d | 2012-09-06 | 2012-10-05 | 4229PHB100 |  | 358d |  |
|  | 29 | **Flanges** |  | 2011-10-31 | 2012-07-03 |  |  |  |  |
| 4229PFL10 |  | Issue RFQ for Flanges | 2d | 2011-10-31 A | 2011-11-02 A | 4229EPL30 | 100% |  |  |
| 4229P4220 |  | Bidding for Flanges | 2d | 2011-11-03 A | 2011-11-28 A | 4229PFL10 | 100% |  |  |
| A1190 |  | T.E.R for flanges | 20d | 2011-12-01 A | 2012-01-18 A | 4229EPL100 SS, 4229EPL100 FF | 100% |  |  |
| 4229PFL30 |  | Receive revised commercial offers for Flanges | 5d | 2012-01-19 A | 2012-01-24 A | 4229EPL100 | 100% |  |  |

| ID | WBS | Task | Duration | Start | Finish | Predecessors | Complete | Total float | Constraint |
| --- | --- | --- | --- | --- | --- | --- | --- | --- | --- |
| 4229PFL40 |  | commercial evaluation & bid committee for Flanges | 10d | 2012-01-25 A | 2012-02-20 A | 4229PFL30 | 100% |  |  |
| 4229PFL50 |  | Client approval on bid committee reccomendation | 2d | 2012-02-20 A | 2012-02-21 A | 4229PFL40 | 100% |  |  |
| 4229PFL60 |  | F.O.C for Flanges | 3d | 2012-02-22 A | 2012-02-26 A | 4229PFL50, 4229PFL40 | 100% |  |  |
| A1580 |  | MRP for flanges | 2d | 2012-02-26 A | 2012-02-27 A | 4229EPL220 FF, 4229EPL220 SS | 100% |  |  |
| 4229PFL70 |  | P.O for Flanges | 5d | 2012-02-28 A | 2012-02-28 A | 4229EPL220 | 100% |  |  |
| 4229PFL90 |  | Fabrication upto R.F.S | 112d | 2012-02-28 A | 2012-06-19 | 4229PFL70 | 84% | 409d |  |
| 4229PFL80 |  | L.C issued by Gupco | 5d | 2012-06-03 | 2012-06-07 | 4229PFL70 |  | 330d |  |
| 4229PFL100 |  | Delivery upto site | 14d | 2012-06-20 | 2012-07-03 | 4229PFL90 |  | 452d |  |
|  | 26 | **Anchor flanges** |  | 2011-10-25 | 2012-07-07 |  |  |  |  |
| 4229PAF10 |  | Issue RFQ for Anchor Flanges | 2d | 2011-10-25 A | 2011-10-26 A | 4229EPL50 | 100% |  |  |
| 4229PAF20 |  | Bidding for Anchor Flanges | 25d | 2011-10-27 A | 2011-12-01 A | 4229PAF10 | 100% |  |  |
| A1160 |  | T.E.R for anchor flanges | 15d | 2011-12-06 A | 2012-01-05 A | 4229EPL150 FF, 4229EPL150 SS | 100% |  |  |
| 4229PAF30 |  | Receive revised commercial offers for Anchor Flanges | 5d | 2012-01-08 A | 2012-01-12 A | 4229EPL150 | 100% |  | start on or after 2012-01-08 |
| 4229PAF40 |  | commercial evaluation & bid committee for Anchor Flanges | 10d | 2012-01-15 A | 2012-02-06 A | 4229PAF30 | 100% |  |  |
| 4229PAF50 |  | Client approval on bid committee reccomendation | 2d | 2012-02-07 A | 2012-02-09 A | 4229PAF40 | 100% |  |  |
| 4229PAF60 |  | F.O.C for Anchor Flanges | 3d | 2012-02-12 A | 2012-02-13 A | 4229PAF50, 4229PAF40 | 100% |  |  |
| A1590 |  | MRP for anchor flanges | 5d | 2012-02-14 A | 2012-02-28 A | 4229EPL280 FF, 4229EPL280 SS | 100% |  |  |
| 4229PAF70 |  | P.O for Anchor Flanges | 5d | 2012-02-28 A | 2012-02-28 A | 4229EPL280 | 100% |  |  |
| 4229PAF90 |  | Fabrication upto R.F.S | 56d | 2012-02-28 A | 2012-05-15 A | 4229PAF80, 4229PAF70 | 100% |  |  |
| 4229PAF100 |  | Delivery upto site | 30d | 2012-05-18 A | 2012-07-07 | 4229PAF90 |  | 448d |  |
| 4229PAF80 |  | L.C issued by Gupco | 5d | 2012-06-03 | 2012-06-07 | 4229PAF70 |  | 308d |  |
|  | 27 | **Isolating joints** |  | 2011-10-19 | 2012-07-07 |  |  |  |  |
| 4229PIJ10 |  | Issue RFQ for Isolating joints | 2d | 2011-10-19 A | 2011-10-19 A | 4229EPL80 | 100% |  |  |
| 4229PIJ20 |  | Bidding for Isolating joints | 25d | 2011-10-20 A | 2011-11-10 A | 4229PIJ10 | 100% |  |  |
| A1170 |  | T.E.R for isolating joints | 18.88d | 2011-11-13 A | 2011-12-08 A | 4229EPL210 SS, 4229EPL210 FF | 100% |  |  |
| 4229PIJ40 |  | commercial evaluation & bid committee for Isolating joints | 10d | 2011-12-13 A | 2011-12-21 A | 4229PIJ30 | 100% |  |  |
| 4229PIJ30 |  | Receive revised commercial offers for Isolating joints | 5d | 2011-12-13 A | 2011-12-21 A | 4229EPL210 | 100% |  |  |
| 4229PIJ50 |  | Client approval on bid committee reccomendation | 2d | 2011-12-22 A | 2012-01-03 A | 4229PIJ40 | 100% |  |  |
| 4229PIJ60 |  | F.O.C for Isolating joints | 3d | 2012-01-04 A | 2012-01-23 A | 4229PIJ50, 4229PIJ40 | 100% |  |  |
| A1570 |  | MRP for isolating joints | 4d | 2012-01-24 A | 2012-01-31 A | 4229EPL300 FF, 4229EPL300 SS | 100% |  |  |
| 4229PIJ70 |  | P.O for Isolating joints | 5d | 2012-02-01 A | 2012-02-02 A | 4229EPL300 | 100% |  |  |
| 4229PIJ90 |  | Fabrication upto R.F.S | 98d | 2012-02-03 A | 2012-06-08 | 4229PIJ80, 4229PIJ70 | 100% | 434d |  |
| 4229PIJ80 |  | L.C issued by Gupco | 5d | 2012-06-03 | 2012-06-07 | 4229PIJ70 |  | 308d |  |
| 4229PIJ100 |  | Delivery upto site | 30d | 2012-06-08 | 2012-07-07 | 4229PIJ90 |  | 448d |  |
|  | 28 | **Heat shrink sleeves** |  | 2011-10-12 | 2012-05-27 |  |  |  |  |
| 4229PHS10 |  | Issue RFQ for Heat shrink sleeves | 2d | 2011-10-12 A | 2011-10-12 A | 4229EPL40 | 100% |  |  |
| 4229PHS20 |  | Bidding for Heat shrink sleeves | 25d | 2011-10-13 A | 2011-11-02 A | 4229PHS10 | 100% |  |  |
| A1210 |  | T.E.R for heat shrink sleeves | 18.88d | 2011-11-03 A | 2011-12-05 A | 4229EPL130 SS, 4229EPL130 FF | 100% |  |  |
| 4229PHS30 |  | Receive revised commercial offers for Heat shrink sleeves | 5d | 2011-12-06 A | 2011-12-08 A | 4229EPL130 | 100% |  |  |
| 4229PHS40 |  | commercial evaluation & bid committee for Heat shrink sleeves | 10d | 2011-12-09 A | 2011-12-12 A | 4229PHS30 | 100% |  |  |
| 4229PHS50 |  | Client approval on bid committee reccomendation | 2d | 2011-12-22 A | 2012-01-03 A | 4229PHS40 | 100% |  |  |
| 4229PHS60 |  | F.O.C for Heat shrink sleeves | 3d | 2012-01-04 A | 2012-01-23 A | 4229PHS40, 4229PHS50 | 100% |  |  |
| 4229PHS80 |  | L.C issued by Gupco (not Applicable) | 5d | 2012-01-23 A | 2012-01-23 A | 4229PHS70 | 100% |  |  |
| 4229PHS90 |  | Fabrication upto R.F.S | 49d | 2012-01-24 A | 2012-03-22 A | 4229PHS80, 4229PHS70 | 100% |  |  |
| A1550 |  | MRP for heat shrink sleeves | 5d | 2012-01-24 A | 2012-01-30 A | 4229EPL260 SS, 4229EPL260 FF | 100% |  |  |
| 4229PHS70 |  | P.O for Heat shrink sleeves | 5d | 2012-01-30 A | 2012-02-05 A | 4229EPL260 | 100% |  |  |
| 4229PHS100 |  | Delivery upto site | 15d | 2012-03-23 A | 2012-05-27 A | 4229PHS90 | 100% |  |  |
|  | 25 | **Kamos ring** |  | 2011-10-05 | 2012-03-24 |  |  |  |  |
| 4229PKR10 |  | Issue RFQ for Kamos ring | 2d | 2011-10-05 A | 2011-10-05 A | 4229EPL60 | 100% |  |  |
| 4229PKR20 |  | Bidding for Kamos ring | 25d | 2011-10-06 A | 2011-11-12 A | 4229PKR10 | 100% |  |  |
| A1220 |  | T.E.R for kamos ring | 18.88d | 2011-11-13 A | 2011-11-20 A | 4229EPL140 SS, 4229EPL140 FF | 100% |  |  |
| 4229PKR30 |  | Receive revised commercial offers for Kamos ring | 5d | 2011-11-21 A | 2011-11-27 A | 4229EPL140 | 100% |  |  |
| 4229PKR40 |  | commercial evaluation & bid committee for Kamos ring | 10d | 2011-11-27 A | 2011-12-07 A | 4229PKR30 | 100% |  |  |
| 4229PKR50 |  | Client approval on bid committee reccomendation | 2d | 2011-12-07 A | 2011-12-11 A | 4229PKR40 | 100% |  |  |
| 4229PKR60 |  | F.O.C for Kamos ring | 3d | 2011-12-12 A | 2011-12-20 A | 4229PKR40, 4229PKR50 | 100% |  |  |
| A1540 |  | MRP for kamos ring | 5d | 2011-12-21 A | 2011-12-26 A | 4229EPL270 FF, 4229EPL270 SS | 100% |  |  |
| 4229PKR70 |  | P.O for Kamos ring | 4d | 2011-12-27 A | 2012-01-01 A | 4229EPL270 | 100% |  |  |
| 4229PKR80 |  | L.C issued by Gupco | 1d | 2012-01-02 A | 2012-01-02 A | 4229PKR70 | 100% |  |  |
| 4229PKR90 |  | Fabrication upto R.F.S | 91d | 2012-01-02 A | 2012-03-04 A | 4229PKR80, 4229PKR70 | 100% |  |  |
| 4229PKR100 |  | Delivery upto site | 30d | 2012-03-05 A | 2012-03-24 A | 4229PKR90 | 100% |  |  |
|  | Master Rev.F-N-4 | **Hillal-B PLATFORM DEVELOPMENT-Normal** |  | 2011-11-30 | 2013-04-07 |  |  |  |  |
|  | 1 | **General Milestone** |  | 2012-01-21 | 2013-03-31 |  |  |  |  |
| GM01 |  | Reciving Fax of Award | 0d | 2012-01-21 | 2012-01-21 |  |  | -0d | finish on 2012-01-20 |
| GM11 |  | Reciving Fax of Award | 0d | 2012-01-21 | 2012-01-21 |  |  | -0d | finish on 2012-01-20 |
| GM21 |  | Reciving Fax of Award | 0d | 2012-01-21 | 2012-01-21 |  |  | -0d | finish on 2012-01-20 |
| GM31 |  | Reciving Fax of Award | 0d | 2012-01-21 | 2012-01-21 |  |  | -0d | finish on 2012-01-20 |
| GM02 |  | Project Fab. Start | 0d | 2012-06-13 | 2012-06-13 | PRS04 |  | 244d |  |
| GM12 |  | Project Fab. Start | 0d | 2012-06-13 | 2012-06-13 | PRS14 |  | 244d |  |
| GM22 |  | Project Fab. Start | 0d | 2012-06-13 | 2012-06-13 | PRS24 |  | 244d |  |
| GM32 |  | Project Fab. Start | 0d | 2012-06-13 | 2012-06-13 | PRS34 |  | 244d |  |

| ID | WBS | Task | Duration | Start | Finish | Predecessors | Total float | Constraint |
| --- | --- | --- | --- | --- | --- | --- | --- | --- |
| GM03 |  | Ready for Load out (01st Shipment / Pipeline Spools 18" & 8") | 0d | 2012-10-18 | 2012-10-18 | LOPS43 SS | 140d |  |
| GM13 |  | Ready for Load out (01st Shipment / Pipeline Spools 18" & 8") | 0d | 2012-10-18 | 2012-10-18 | LOPS53 SS | 140d |  |
| GM23 |  | Ready for Load out (01st Shipment / Pipeline Spools 18" & 8") | 0d | 2012-10-18 | 2012-10-18 | LOPS63 SS | 140d |  |
| GM33 |  | Ready for Load out (01st Shipment / Pipeline Spools 18" & 8") | 0d | 2012-10-18 | 2012-10-18 | LOPS73 SS | 140d |  |
| GM04 |  | Ready for Load out ( 02nd Shipment/ Jacket & Piles ) | 0d | 2013-01-23 | 2013-01-23 | LOJK43 SS | 26d |  |
| GM14 |  | Ready for Load out ( 02nd Shipment/ Jacket & Piles ) | 0d | 2013-01-23 | 2013-01-23 | LOJK53 SS | 26d |  |
| GM24 |  | Ready for Load out ( 02nd Shipment/ Jacket & Piles ) | 0d | 2013-01-23 | 2013-01-23 | LOJK63 SS | 26d |  |
| GM34 |  | Ready for Load out ( 02nd Shipment/ Jacket & Piles ) | 0d | 2013-01-23 | 2013-01-23 | LOJK73 SS | 26d |  |
| GM05 |  | Ready for Load out ( 03rd Shipment/ Deck C/W TSF ) | 0d | 2013-03-31 | 2013-03-31 | LODK43 SS | 7d |  |
| GM15 |  | Ready for Load out ( 03rd Shipment/ Deck C/W TSF ) | 0d | 2013-03-31 | 2013-03-31 | LODK53 SS | 7d |  |
| GM25 |  | Ready for Load out ( 03rd Shipment/ Deck C/W TSF ) | 0d | 2013-03-31 | 2013-03-31 | LODK63 SS | 7d |  |
| GM35 |  | Ready for Load out ( 03rd Shipment/ Deck C/W TSF ) | 0d | 2013-03-31 | 2013-03-31 | LODK73 SS | 7d |  |
|  | 2 | **Engineering** |  | 2011-11-30 | 2012-04-30 |  |  |  |
|  | 1 | **Structure** |  | 2011-11-30 | 2012-04-30 |  |  |  |
| ENS03 |  | Receiving Jacket Primary & Secondary Steel IFC DWG`s | 138d | 2011-11-30 | 2012-04-16 |  | 0d | start on 2011-11-30 |
| ENS13 |  | Receiving Jacket Primary & Secondary Steel IFC DWG`s | 138d | 2011-11-30 | 2012-04-16 |  | 0d | start on 2011-11-30 |
| ENS23 |  | Receiving Jacket Primary & Secondary Steel IFC DWG`s | 138d | 2011-11-30 | 2012-04-16 |  | 0d | start on 2011-11-30 |
| ENS33 |  | Receiving Jacket Primary & Secondary Steel IFC DWG`s | 138d | 2011-11-30 | 2012-04-16 |  | 0d | start on 2011-11-30 |
| ENS04 |  | Receiving Piles IFC DWG`s | 0d | 2012-01-17 | 2012-01-17 |  | 0d | finish on 2012-01-17 |
| ENS14 |  | Receiving Piles IFC DWG`s | 0d | 2012-01-17 | 2012-01-17 |  | 0d | finish on 2012-01-17 |
| ENS24 |  | Receiving Piles IFC DWG`s | 0d | 2012-01-17 | 2012-01-17 |  | 0d | finish on 2012-01-17 |
| ENS34 |  | Receiving Piles IFC DWG`s | 0d | 2012-01-17 | 2012-01-17 |  | 0d | finish on 2012-01-17 |
| ENS01 |  | Receiving Final Jacket , Boat Land & Piles MTO | 0d | 2012-01-29 | 2012-01-29 | GM01 FF+7d | 17d |  |
| ENS02 |  | Receiving Final Deck Str. MTO | 0d | 2012-01-29 | 2012-01-29 | GM01 FF+7d | 17d |  |
| ENS11 |  | Receiving Final Jacket , Boat Land & Piles MTO | 0d | 2012-01-29 | 2012-01-29 | GM11 FF+7d | 17d |  |
| ENS12 |  | Receiving Final Deck Str. MTO | 0d | 2012-01-29 | 2012-01-29 | GM11 FF+7d | 17d |  |
| ENS21 |  | Receiving Final Jacket , Boat Land & Piles MTO | 0d | 2012-01-29 | 2012-01-29 | GM21 FF+7d | 17d |  |
| ENS22 |  | Receiving Final Deck Str. MTO | 0d | 2012-01-29 | 2012-01-29 | GM21 FF+7d | 17d |  |
| ENS31 |  | Receiving Final Jacket , Boat Land & Piles MTO | 0d | 2012-01-29 | 2012-01-29 | GM31 FF+7d | 17d |  |
| ENS32 |  | Receiving Final Deck Str. MTO | 0d | 2012-01-29 | 2012-01-29 | GM31 FF+7d | 17d |  |
| ENS05 |  | Receiving Deck Str. Primary & Secondary IFC DWG`s | 41d | 2012-02-07 | 2012-03-19 |  | 0d | start on 2012-02-07 |
| ENS15 |  | Receiving Deck Str. Primary & Secondary IFC DWG`s | 41d | 2012-02-07 | 2012-03-19 |  | 0d | start on 2012-02-07 |
| ENS25 |  | Receiving Deck Str. Primary & Secondary IFC DWG`s | 41d | 2012-02-07 | 2012-03-19 |  | 0d | start on 2012-02-07 |
| ENS35 |  | Receiving Deck Str. Primary & Secondary IFC DWG`s | 41d | 2012-02-07 | 2012-03-19 |  | 0d | start on 2012-02-07 |
| ENS06 |  | Receiving Piping Supports IFC DWG's | 20d | 2012-02-28 | 2012-03-19 |  | 0d | start on 2012-02-28 |
| ENS16 |  | Receiving Piping Supports IFC DWG's | 20d | 2012-02-28 | 2012-03-19 |  | 0d | start on 2012-02-28 |
| ENS26 |  | Receiving Piping Supports IFC DWG's | 20d | 2012-02-28 | 2012-03-19 |  | 0d | start on 2012-02-28 |
| ENS36 |  | Receiving Piping Supports IFC DWG's | 20d | 2012-02-28 | 2012-03-19 |  | 0d | start on 2012-02-28 |
| ENS07 |  | Receiving Cable tarys Support IFC DWG's | 13d | 2012-03-13 | 2012-03-26 |  | 0d | start on 2012-03-13 |
| ENS17 |  | Receiving Cable tarys Support IFC DWG's | 13d | 2012-03-13 | 2012-03-26 |  | 0d | start on 2012-03-13 |
| ENS27 |  | Receiving Cable tarys Support IFC DWG's | 13d | 2012-03-13 | 2012-03-26 |  | 0d | start on 2012-03-13 |
| ENS37 |  | Receiving Cable tarys Support IFC DWG's | 13d | 2012-03-13 | 2012-03-26 |  | 0d | start on 2012-03-13 |
| ENS08 |  | Receiving IFC Equipment fixation DWG`s | 13d | 2012-04-04 | 2012-04-17 |  | 0d | start on 2012-04-04 |
| ENS18 |  | Receiving IFC Equipment fixation DWG`s | 13d | 2012-04-04 | 2012-04-17 |  | 0d | start on 2012-04-04 |
| ENS28 |  | Receiving IFC Equipment fixation DWG`s | 13d | 2012-04-04 | 2012-04-17 |  | 0d | start on 2012-04-04 |
| ENS38 |  | Receiving IFC Equipment fixation DWG`s | 13d | 2012-04-04 | 2012-04-17 |  | 0d | start on 2012-04-04 |
| ENS09 |  | Receiving P/L 8" & 18" IFC DWG's | 20d | 2012-04-10 | 2012-04-30 |  | 0d | start on 2012-04-10 |
| ENS19 |  | Receiving P/L 8" & 18" IFC DWG's | 20d | 2012-04-10 | 2012-04-30 |  | 0d | start on 2012-04-10 |
| ENS29 |  | Receiving P/L 8" & 18" IFC DWG's | 20d | 2012-04-10 | 2012-04-30 |  | 0d | start on 2012-04-10 |
| ENS39 |  | Receiving P/L 8" & 18" IFC DWG's | 20d | 2012-04-10 | 2012-04-30 |  | 0d | start on 2012-04-10 |
|  | 2 | **TSF, E&I** |  | 2012-01-15 | 2012-03-12 |  |  |  |
| ENT01 |  | Issue Approved P&ID's / Equipment List IFC DWG's | 0d | 2012-01-15 | 2012-01-15 |  | 0d | finish on 2012-01-15 |
| ENT11 |  | Issue Approved P&ID's / Equipment List IFC DWG's | 0d | 2012-01-15 | 2012-01-15 |  | 0d | finish on 2012-01-15 |
| ENT21 |  | Issue Approved P&ID's / Equipment List IFC DWG's | 0d | 2012-01-15 | 2012-01-15 |  | 0d | finish on 2012-01-15 |
| ENT31 |  | Issue Approved P&ID's / Equipment List IFC DWG's | 0d | 2012-01-15 | 2012-01-15 |  | 0d | finish on 2012-01-15 |
| ENT02 |  | Issue plat plans IFC DWG's | 0d | 2012-02-06 | 2012-02-06 |  | 0d | finish on 2012-02-06 |
| ENT12 |  | Issue plat plans IFC DWG's | 0d | 2012-02-06 | 2012-02-06 |  | 0d | finish on 2012-02-06 |
| ENT22 |  | Issue plat plans IFC DWG's | 0d | 2012-02-06 | 2012-02-06 |  | 0d | finish on 2012-02-06 |
| ENT32 |  | Issue plat plans IFC DWG's | 0d | 2012-02-06 | 2012-02-06 |  | 0d | finish on 2012-02-06 |
| ENT03 |  | Receiving Piping ISO`s IFC DWG's | 14d | 2012-02-27 | 2012-03-12 |  | 0d | start on 2012-02-27 |
| ENT13 |  | Receiving Piping ISO`s IFC DWG's | 14d | 2012-02-27 | 2012-03-12 |  | 0d | start on 2012-02-27 |
| ENT23 |  | Receiving Piping ISO`s IFC DWG's | 14d | 2012-02-27 | 2012-03-12 |  | 0d | start on 2012-02-27 |
| ENT33 |  | Receiving Piping ISO`s IFC DWG's | 14d | 2012-02-27 | 2012-03-12 |  | 0d | start on 2012-02-27 |
| ENT04 |  | Issue Hydrotest maps & loops IFC DWG's | 0d | 2012-02-28 | 2012-02-28 |  | 0d | finish on 2012-02-28 |
| ENT14 |  | Issue Hydrotest maps & loops IFC DWG's | 0d | 2012-02-28 | 2012-02-28 |  | 0d | finish on 2012-02-28 |
| ENT24 |  | Issue Hydrotest maps & loops IFC DWG's | 0d | 2012-02-28 | 2012-02-28 |  | 0d | finish on 2012-02-28 |
| ENT34 |  | Issue Hydrotest maps & loops IFC DWG's | 0d | 2012-02-28 | 2012-02-28 |  | 0d | finish on 2012-02-28 |
|  | 3 | **Electrical & Instrumentation (E&I)** |  | 2012-01-23 | 2012-04-29 |  |  |  |
| ENE01 |  | Receiving E&I IFC DWG`s | 97d | 2012-01-23 | 2012-04-29 |  | 0d | start on 2012-01-23 |
| ENE11 |  | Receiving E&I IFC DWG`s | 97d | 2012-01-23 | 2012-04-29 |  | 0d | start on 2012-01-23 |

| ID | WBS | Task | Duration | Start | Finish | Predecessors | Total float | Constraint |
| --- | --- | --- | --- | --- | --- | --- | --- | --- |
| ENE21 |  | Receiving E&I IFC DWG`s | 97d | 2012-01-23 | 2012-04-29 |  | 0d | start on 2012-01-23 |
| ENE31 |  | Receiving E&I IFC DWG`s | 97d | 2012-01-23 | 2012-04-29 |  | 0d | start on 2012-01-23 |
|  | 3 | **Procurment** |  | 2012-02-07 | 2012-09-24 |  |  |  |
|  | 1 | **Structure Material** |  | 2012-02-07 | 2012-09-24 |  |  |  |
| PRS01 |  | Issue Structural Material P.O's ( Gupco Responsability) | 0d | 2012-02-07 | 2012-02-07 |  | 0d | start on 2012-02-07 |
| PRS11 |  | Issue Structural Material P.O's ( Gupco Responsability) | 0d | 2012-02-07 | 2012-02-07 |  | 0d | start on 2012-02-07 |
| PRS21 |  | Issue Structural Material P.O's ( Gupco Responsability) | 0d | 2012-02-07 | 2012-02-07 |  | 0d | start on 2012-02-07 |
| PRS31 |  | Issue Structural Material P.O's ( Gupco Responsability) | 0d | 2012-02-07 | 2012-02-07 |  | 0d | start on 2012-02-07 |
| PRS02 |  | Issue LC ( Gupco Responsability) | 0d | 2012-02-15 | 2012-02-15 | PRS01 | 0d | start on 2012-02-15 |
| PRS03 |  | Delivery of Structure Material (F.O.B - 13 Wks.) - (Gupco Responsability) | 91d | 2012-02-15 | 2012-05-15 | ENS01, ENS02, PRS01, PRS02 | 0d |  |
| PRS12 |  | Issue LC ( Gupco Responsability) | 0d | 2012-02-15 | 2012-02-15 | PRS11 | 0d | start on 2012-02-15 |
| PRS13 |  | Delivery of Structure Material (F.O.B - 13 Wks.) - (Gupco Responsability) | 91d | 2012-02-15 | 2012-05-15 | ENS11, ENS12, PRS11, PRS12 | 0d |  |
| PRS22 |  | Issue LC ( Gupco Responsability) | 0d | 2012-02-15 | 2012-02-15 | PRS21 | 0d | start on 2012-02-15 |
| PRS23 |  | Delivery of Structure Material (F.O.B - 13 Wks.) - (Gupco Responsability) | 91d | 2012-02-15 | 2012-05-15 | ENS21, ENS22, PRS21, PRS22 | 0d |  |
| PRS32 |  | Issue LC ( Gupco Responsability) | 0d | 2012-02-15 | 2012-02-15 | PRS31 | 0d | start on 2012-02-15 |
| PRS33 |  | Delivery of Structure Material (F.O.B - 13 Wks.) - (Gupco Responsability) | 91d | 2012-02-15 | 2012-05-15 | ENS31, ENS32, PRS31, PRS32 | 0d |  |
| PRS05 |  | Material check with IFC DWG's to Prepare balance material | 7d | 2012-04-16 | 2012-04-23 | ENS03, ENS04, ENS05 | 195.87d |  |
| PRS15 |  | Material check with IFC DWG's to Prepare balance material | 7d | 2012-04-16 | 2012-04-23 | ENS13, ENS14, ENS15 | 195.87d |  |
| PRS25 |  | Material check with IFC DWG's to Prepare balance material | 7d | 2012-04-16 | 2012-04-23 | ENS23, ENS24, ENS25 | 195.87d |  |
| PRS35 |  | Material check with IFC DWG's to Prepare balance material | 7d | 2012-04-16 | 2012-04-23 | ENS33, ENS34, ENS35 | 195.87d |  |
| PRS06 |  | Delivery of balance material | 154d | 2012-04-23 | 2012-09-24 | PRS05 | 195.87d |  |
| PRS16 |  | Delivery of balance material | 154d | 2012-04-23 | 2012-09-24 | PRS15 | 195.87d |  |
| PRS26 |  | Delivery of balance material | 154d | 2012-04-23 | 2012-09-24 | PRS25 | 195.87d |  |
| PRS36 |  | Delivery of balance material | 154d | 2012-04-23 | 2012-09-24 | PRS35 | 195.87d |  |
| PRS04 |  | Delivery of Structure Material at Site (4 Wks.) | 28d | 2012-05-16 | 2012-06-12 | PRS03 | 0d |  |
| PRS14 |  | Delivery of Structure Material at Site (4 Wks.) | 28d | 2012-05-16 | 2012-06-12 | PRS13 | 0d |  |
| PRS24 |  | Delivery of Structure Material at Site (4 Wks.) | 28d | 2012-05-16 | 2012-06-12 | PRS23 | 0d |  |
| PRS34 |  | Delivery of Structure Material at Site (4 Wks.) | 28d | 2012-05-16 | 2012-06-12 | PRS33 | 0d |  |
|  | 2 | **P/L Spools Material** |  | 2012-05-31 | 2012-07-20 |  |  |  |
| PRP01 |  | Pipeline 18" & Fittings | 51d | 2012-05-31 | 2012-07-20 |  | 0d | start on 2012-05-31 |
| PRP02 |  | Pipeline 8" & Fittings | 51d | 2012-05-31 | 2012-07-20 |  | -0d | start on 2012-05-30 |
| PRP11 |  | Pipeline 18" & Fittings | 51d | 2012-05-31 | 2012-07-20 |  | 0d | start on 2012-05-31 |
| PRP12 |  | Pipeline 8" & Fittings | 51d | 2012-05-31 | 2012-07-20 |  | -0d | start on 2012-05-30 |
| PRP21 |  | Pipeline 18" & Fittings | 51d | 2012-05-31 | 2012-07-20 |  | 0d | start on 2012-05-31 |
| PRP22 |  | Pipeline 8" & Fittings | 51d | 2012-05-31 | 2012-07-20 |  | -0d | start on 2012-05-30 |
| PRP31 |  | Pipeline 18" & Fittings | 51d | 2012-05-31 | 2012-07-20 |  | 0d | start on 2012-05-31 |
| PRP32 |  | Pipeline 8" & Fittings | 51d | 2012-05-31 | 2012-07-20 |  | -0d | start on 2012-05-30 |
| PRP42 |  | Pipeline 8" & Fittings | 51d | 2012-05-31 | 2012-07-20 |  | -0d | start on 2012-05-30 |
| PRP52 |  | Pipeline 8" & Fittings | 51d | 2012-05-31 | 2012-07-20 |  | -0d | start on 2012-05-30 |
| PRP62 |  | Pipeline 8" & Fittings | 51d | 2012-05-31 | 2012-07-20 |  | -0d | start on 2012-05-30 |
| PRP72 |  | Pipeline 8" & Fittings | 51d | 2012-05-31 | 2012-07-20 |  | -0d | start on 2012-05-30 |
|  | 3 | **Piping Material** |  | 2012-05-08 | 2012-09-04 |  |  |  |
| PRT01 |  | Piping Bulk material 1st batch | 30d | 2012-05-08 | 2012-06-06 |  | -0d | start on 2012-05-07 |
| PRT21 |  | Piping Bulk material 1st batch | 30d | 2012-05-08 | 2012-06-06 |  | -0d | start on 2012-05-07 |
| PRT41 |  | Piping Bulk material 1st batch | 30d | 2012-05-08 | 2012-06-06 |  | -0d | start on 2012-05-07 |
| PRT61 |  | Piping Bulk material 1st batch | 30d | 2012-05-08 | 2012-06-06 |  | -0d | start on 2012-05-07 |
| PRT06 |  | Pressure Safety Valve | 44d | 2012-06-05 | 2012-07-18 |  | -0d | start on 2012-06-04 |
| PRT16 |  | Pressure Safety Valve | 44d | 2012-06-05 | 2012-07-18 |  | -0d | start on 2012-06-04 |
| PRT26 |  | Pressure Safety Valve | 44d | 2012-06-05 | 2012-07-18 |  | -0d | start on 2012-06-04 |
| PRT36 |  | Pressure Safety Valve | 44d | 2012-06-05 | 2012-07-18 |  | -0d | start on 2012-06-04 |
| PRT02 |  | Piping Bulk material 2nd batch | 30d | 2012-06-11 | 2012-07-10 |  | -0d | start on 2012-06-10 |
| PRT22 |  | Piping Bulk material 2nd batch | 30d | 2012-06-11 | 2012-07-10 |  | -0d | start on 2012-06-10 |
| PRT42 |  | Piping Bulk material 2nd batch | 30d | 2012-06-11 | 2012-07-10 |  | -0d | start on 2012-06-10 |
| PRT62 |  | Piping Bulk material 2nd batch | 30d | 2012-06-11 | 2012-07-10 |  | -0d | start on 2012-06-10 |
| PRT03 |  | Piping Valves Bulk material 1st batch | 14d | 2012-06-24 | 2012-07-07 |  | -0d | start on 2012-06-23 |
| PRT13 |  | Piping Valves Bulk material 1st batch | 14d | 2012-06-24 | 2012-07-07 |  | -0d | start on 2012-06-23 |
| PRT23 |  | Piping Valves Bulk material 1st batch | 14d | 2012-06-24 | 2012-07-07 |  | -0d | start on 2012-06-23 |
| PRT33 |  | Piping Valves Bulk material 1st batch | 14d | 2012-06-24 | 2012-07-07 |  | -0d | start on 2012-06-23 |
| PRT05 |  | Flanges | 45d | 2012-07-14 | 2012-08-27 |  | -0d | start on 2012-07-13 |
| PRT15 |  | Flanges | 45d | 2012-07-14 | 2012-08-27 |  | -0d | start on 2012-07-13 |
| PRT25 |  | Flanges | 45d | 2012-07-14 | 2012-08-27 |  | -0d | start on 2012-07-13 |
| PRT35 |  | Flanges | 45d | 2012-07-14 | 2012-08-27 |  | -0d | start on 2012-07-13 |
| PRT04 |  | Piping valves Bulk material 2nd batch | 14d | 2012-07-23 | 2012-08-05 |  | -0d | start on 2012-07-22 |
| PRT14 |  | Piping valves Bulk material 2nd batch | 14d | 2012-07-23 | 2012-08-05 |  | -0d | start on 2012-07-22 |
| PRT24 |  | Piping valves Bulk material 2nd batch | 14d | 2012-07-23 | 2012-08-05 |  | -0d | start on 2012-07-22 |
| PRT34 |  | Piping valves Bulk material 2nd batch | 14d | 2012-07-23 | 2012-08-05 |  | -0d | start on 2012-07-22 |
| PRT07 |  | Pressure regulator Valve | 30d | 2012-07-25 | 2012-08-23 |  | -0d | start on 2012-07-24 |
| PRT17 |  | Pressure regulator Valve | 30d | 2012-07-25 | 2012-08-23 |  | -0d | start on 2012-07-24 |
| PRT27 |  | Pressure regulator Valve | 30d | 2012-07-25 | 2012-08-23 |  | -0d | start on 2012-07-24 |
| PRT37 |  | Pressure regulator Valve | 30d | 2012-07-25 | 2012-08-23 |  | -0d | start on 2012-07-24 |

| ID | WBS | Task | Duration | Start | Finish | Total float | Constraint |
| --- | --- | --- | --- | --- | --- | --- | --- |
| PRT08 |  | Shutdown Valve | 31d | 2012-08-05 | 2012-09-04 | -0d | start on 2012-08-04 |
| PRT18 |  | Shutdown Valve | 31d | 2012-08-05 | 2012-09-04 | -0d | start on 2012-08-04 |
| PRT28 |  | Shutdown Valve | 31d | 2012-08-05 | 2012-09-04 | -0d | start on 2012-08-04 |
| PRT38 |  | Shutdown Valve | 31d | 2012-08-05 | 2012-09-04 | -0d | start on 2012-08-04 |
|  | 4 | **Equipment** |  | 2012-05-09 | 2012-08-11 |  |  |
| PRT09 |  | Chemical Injection PKG. | 45d | 2012-05-09 | 2012-06-22 | -0d | start on 2012-05-08 |
| PRT19 |  | Chemical Injection PKG. | 45d | 2012-05-09 | 2012-06-22 | -0d | start on 2012-05-08 |
| PRT29 |  | Chemical Injection PKG. | 45d | 2012-05-09 | 2012-06-22 | -0d | start on 2012-05-08 |
| PRT39 |  | Chemical Injection PKG. | 45d | 2012-05-09 | 2012-06-22 | -0d | start on 2012-05-08 |
| PRT10 |  | Launcher recivier | 45d | 2012-06-16 | 2012-07-30 | -0d | start on 2012-06-15 |
| PRT20 |  | Launcher recivier | 45d | 2012-06-16 | 2012-07-30 | -0d | start on 2012-06-15 |
| PRT30 |  | Launcher recivier | 45d | 2012-06-16 | 2012-07-30 | -0d | start on 2012-06-15 |
| PRT40 |  | Launcher recivier | 45d | 2012-06-16 | 2012-07-30 | -0d | start on 2012-06-15 |
| PRT11 |  | Vent KOD | 45d | 2012-06-28 | 2012-08-11 | -0d | start on 2012-06-27 |
| PRT12 |  | Open Drain Tank | 45d | 2012-06-28 | 2012-08-11 | -0d | start on 2012-06-27 |
| PRT31 |  | Vent KOD | 45d | 2012-06-28 | 2012-08-11 | -0d | start on 2012-06-27 |
| PRT32 |  | Open Drain Tank | 45d | 2012-06-28 | 2012-08-11 | -0d | start on 2012-06-27 |
| PRT51 |  | Vent KOD | 45d | 2012-06-28 | 2012-08-11 | -0d | start on 2012-06-27 |
| PRT52 |  | Open Drain Tank | 45d | 2012-06-28 | 2012-08-11 | -0d | start on 2012-06-27 |
| PRT71 |  | Vent KOD | 45d | 2012-06-28 | 2012-08-11 | -0d | start on 2012-06-27 |
| PRT72 |  | Open Drain Tank | 45d | 2012-06-28 | 2012-08-11 | -0d | start on 2012-06-27 |
|  | 5 | **E&I Material** |  | 2012-04-06 | 2012-09-16 |  |  |
|  | 1 | **Electrical Material** |  | 2012-05-24 | 2012-09-06 |  |  |
| PRE02 |  | Cathodic Protection | 45d | 2012-05-24 | 2012-07-07 | -0d | start on 2012-05-23 |
| PRE22 |  | Cathodic Protection | 45d | 2012-05-24 | 2012-07-07 | -0d | start on 2012-05-23 |
| PRE42 |  | Cathodic Protection | 45d | 2012-05-24 | 2012-07-07 | -0d | start on 2012-05-23 |
| PRE62 |  | Cathodic Protection | 45d | 2012-05-24 | 2012-07-07 | -0d | start on 2012-05-23 |
| PRE03 |  | Solar Power | 45d | 2012-06-04 | 2012-07-18 | -0d | start on 2012-06-03 |
| PRE23 |  | Solar Power | 45d | 2012-06-04 | 2012-07-18 | -0d | start on 2012-06-03 |
| PRE43 |  | Solar Power | 45d | 2012-06-04 | 2012-07-18 | -0d | start on 2012-06-03 |
| PRE63 |  | Solar Power | 45d | 2012-06-04 | 2012-07-18 | -0d | start on 2012-06-03 |
| PRE01 |  | Electrical Bulks | 45d | 2012-07-24 | 2012-09-06 | -0d | start on 2012-07-23 |
| PRE21 |  | Electrical Bulks | 45d | 2012-07-24 | 2012-09-06 | -0d | start on 2012-07-23 |
| PRE41 |  | Electrical Bulks | 45d | 2012-07-24 | 2012-09-06 | -0d | start on 2012-07-23 |
| PRE61 |  | Electrical Bulks | 45d | 2012-07-24 | 2012-09-06 | -0d | start on 2012-07-23 |
|  | 2 | **F&G Material** |  | 2012-06-28 | 2012-08-20 |  |  |
| PRE05 |  | Fire fighting system | 45d | 2012-06-28 | 2012-08-11 | -0d | start on 2012-06-27 |
| PRE15 |  | Fire fighting system | 45d | 2012-06-28 | 2012-08-11 | -0d | start on 2012-06-27 |
| PRE25 |  | Fire fighting system | 45d | 2012-06-28 | 2012-08-11 | -0d | start on 2012-06-27 |
| PRE35 |  | Fire fighting system | 45d | 2012-06-28 | 2012-08-11 | -0d | start on 2012-06-27 |
| PRE06 |  | Life Saving Equipment | 45d | 2012-07-05 | 2012-08-18 | -0d | start on 2012-07-04 |
| PRE16 |  | Life Saving Equipment | 45d | 2012-07-05 | 2012-08-18 | -0d | start on 2012-07-04 |
| PRE26 |  | Life Saving Equipment | 45d | 2012-07-05 | 2012-08-18 | -0d | start on 2012-07-04 |
| PRE36 |  | Life Saving Equipment | 45d | 2012-07-05 | 2012-08-18 | -0d | start on 2012-07-04 |
| PRE04 |  | F&G Detector | 45d | 2012-07-07 | 2012-08-20 | -0d | start on 2012-07-06 |
| PRE14 |  | F&G Detector | 45d | 2012-07-07 | 2012-08-20 | -0d | start on 2012-07-06 |
| PRE24 |  | F&G Detector | 45d | 2012-07-07 | 2012-08-20 | -0d | start on 2012-07-06 |
| PRE34 |  | F&G Detector | 45d | 2012-07-07 | 2012-08-20 | -0d | start on 2012-07-06 |
|  | 3 | **Telecom Material** |  | 2012-04-06 | 2012-07-19 |  |  |
| PRE08 |  | Navegation Aids | 45d | 2012-04-06 | 2012-05-20 | -0d | start on 2012-04-05 |
| PRE18 |  | Navegation Aids | 45d | 2012-04-06 | 2012-05-20 | -0d | start on 2012-04-05 |
| PRE28 |  | Navegation Aids | 45d | 2012-04-06 | 2012-05-20 | -0d | start on 2012-04-05 |
| PRE38 |  | Navegation Aids | 45d | 2012-04-06 | 2012-05-20 | -0d | start on 2012-04-05 |
| PRE07 |  | Radar system | 30d | 2012-06-20 | 2012-07-19 | -0d | start on 2012-06-19 |
| PRE17 |  | Radar system | 30d | 2012-06-20 | 2012-07-19 | -0d | start on 2012-06-19 |
| PRE27 |  | Radar system | 30d | 2012-06-20 | 2012-07-19 | -0d | start on 2012-06-19 |
| PRE37 |  | Radar system | 30d | 2012-06-20 | 2012-07-19 | -0d | start on 2012-06-19 |
|  | 4 | **Instrument Material** |  | 2012-06-23 | 2012-09-16 |  |  |
| PRE11 |  | Field Instrument | 45d | 2012-06-23 | 2012-08-06 | -0d | start on 2012-06-22 |
| PRE31 |  | Field Instrument | 45d | 2012-06-23 | 2012-08-06 | -0d | start on 2012-06-22 |
| PRE51 |  | Field Instrument | 45d | 2012-06-23 | 2012-08-06 | -0d | start on 2012-06-22 |
| PRE71 |  | Field Instrument | 45d | 2012-06-23 | 2012-08-06 | -0d | start on 2012-06-22 |
| PRE10 |  | Instrument Mechanical Bulk | 35d | 2012-07-18 | 2012-08-21 | -0d | start on 2012-07-17 |
| PRE12 |  | multi phase flow meter | 57d | 2012-07-18 | 2012-09-12 | -0d | start on 2012-07-17 |
| PRE20 |  | Instrument Mechanical Bulk | 35d | 2012-07-18 | 2012-08-21 | -0d | start on 2012-07-17 |
| PRE30 |  | Instrument Mechanical Bulk | 35d | 2012-07-18 | 2012-08-21 | -0d | start on 2012-07-17 |
| PRE32 |  | multi phase flow meter | 57d | 2012-07-18 | 2012-09-12 | -0d | start on 2012-07-17 |
| PRE40 |  | Instrument Mechanical Bulk | 35d | 2012-07-18 | 2012-08-21 | -0d | start on 2012-07-17 |
| PRE52 |  | multi phase flow meter | 57d | 2012-07-18 | 2012-09-12 | -0d | start on 2012-07-17 |
| PRE72 |  | multi phase flow meter | 57d | 2012-07-18 | 2012-09-12 | -0d | start on 2012-07-17 |

| ID | WBS | Task | Duration | Start | Finish | Predecessors | Total float | Constraint |
| --- | --- | --- | --- | --- | --- | --- | --- | --- |
| PRE09 |  | Instrument Electical Bulk | 30d | 2012-07-25 | 2012-08-23 |  | -0d | start on 2012-07-24 |
| PRE19 |  | Instrument Electical Bulk | 30d | 2012-07-25 | 2012-08-23 |  | -0d | start on 2012-07-24 |
| PRE29 |  | Instrument Electical Bulk | 30d | 2012-07-25 | 2012-08-23 |  | -0d | start on 2012-07-24 |
| PRE39 |  | Instrument Electical Bulk | 30d | 2012-07-25 | 2012-08-23 |  | -0d | start on 2012-07-24 |
| PRE13 |  | Safe Guard system | 30d | 2012-08-18 | 2012-09-16 |  | -0d | start on 2012-08-17 |
| PRE33 |  | Safe Guard system | 30d | 2012-08-18 | 2012-09-16 |  | -0d | start on 2012-08-17 |
| PRE53 |  | Safe Guard system | 30d | 2012-08-18 | 2012-09-16 |  | -0d | start on 2012-08-17 |
| PRE73 |  | Safe Guard system | 30d | 2012-08-18 | 2012-09-16 |  | -0d | start on 2012-08-17 |
|  | 6 | **Pre-Fabrication** |  | 2012-06-13 | 2012-11-08 |  |  |  |
| PF01 |  | Pre-Fabrication of Steel Structure ( Jacket & Piles) | 120d | 2012-06-13 | 2012-11-08 | ENS03 SS+14d, ENS04 FF+60d, PRS04 | 26d |  |
| PF11 |  | Pre-Fabrication of Steel Structure ( Jacket & Piles) | 120d | 2012-06-13 | 2012-11-08 | ENS13 SS+14d, ENS14 FF+60d, PRS14 | 26d |  |
| PF21 |  | Pre-Fabrication of Steel Structure ( Jacket & Piles) | 120d | 2012-06-13 | 2012-11-08 | ENS23 SS+14d, ENS24 FF+60d, PRS24 | 26d |  |
| PF31 |  | Pre-Fabrication of Steel Structure ( Jacket & Piles) | 120d | 2012-06-13 | 2012-11-08 | ENS33 SS+14d, ENS34 FF+60d, PRS34 | 26d |  |
|  | 4 | **Fabrication** |  | 2012-06-13 | 2013-03-30 |  |  |  |
|  | 1 | **Jacket and Piles Fabrication** |  | 2012-06-21 | 2013-01-22 |  |  |  |
| JK01 |  | Jacket , Boat Landing Fabrication & Painting | 175d | 2012-06-21 | 2013-01-22 | PF01 SS+7d | 26d |  |
| JK11 |  | Jacket , Boat Landing Fabrication & Painting | 175d | 2012-06-21 | 2013-01-22 | PF11 SS+7d | 26d |  |
| JK21 |  | Jacket , Boat Landing Fabrication & Painting | 175d | 2012-06-21 | 2013-01-22 | PF21 SS+7d | 26d |  |
| JK31 |  | Jacket , Boat Landing Fabrication & Painting | 175d | 2012-06-21 | 2013-01-22 | PF31 SS+7d | 26d |  |
| JK02 |  | Piles Fabrication & Marking | 125d | 2012-08-06 | 2013-01-08 | PF01 SS+45d | 74d |  |
| JK12 |  | Piles Fabrication & Marking | 125d | 2012-08-06 | 2013-01-08 | PF11 SS+45d | 74d |  |
| JK22 |  | Piles Fabrication & Marking | 125d | 2012-08-06 | 2013-01-08 | PF21 SS+45d | 74d |  |
| JK32 |  | Piles Fabrication & Marking | 125d | 2012-08-06 | 2013-01-08 | PF31 SS+45d | 74d |  |
|  | 3 | **P/L Spools Fabrication** |  | 2012-06-30 | 2012-10-17 |  |  |  |
| PL01 |  | P/L Spools Fabrication | 90d | 2012-06-30 | 2012-10-17 | PRP01 SS+30d, PRP02 FF+45d | 104d |  |
| PL11 |  | P/L Spools Fabrication | 90d | 2012-06-30 | 2012-10-17 | PRP11 SS+30d, PRP22 FF+45d | 104d |  |
| PL21 |  | P/L Spools Fabrication | 90d | 2012-06-30 | 2012-10-17 | PRP21 SS+30d, PRP42 FF+45d | 104d |  |
| PL31 |  | P/L Spools Fabrication | 90d | 2012-06-30 | 2012-10-17 | PRP31 SS+30d, PRP62 FF+45d | 104d |  |
|  | 2 | **Deck Fabrication** |  | 2012-06-13 | 2013-03-30 |  |  |  |
|  | 1 | **Deck Structure Fabrication** |  | 2012-06-13 | 2013-03-30 |  |  |  |
| DS001 |  | Fabrication and Painting of Below Production Deck/Legs | 105d | 2012-06-13 | 2012-10-18 | PRS04 | 0d |  |
| DS002 |  | Fabrication and Painting of Production Deck | 120d | 2012-06-13 | 2012-11-08 | DS001 SS | 0d |  |
| DS011 |  | Fabrication and Painting of Below Production Deck/Legs | 105d | 2012-06-13 | 2012-10-18 | PRS14 | 0d |  |
| DS012 |  | Fabrication and Painting of Production Deck | 120d | 2012-06-13 | 2012-11-08 | DS011 SS | 0d |  |
| DS021 |  | Fabrication and Painting of Below Production Deck/Legs | 105d | 2012-06-13 | 2012-10-18 | PRS24 | 0d |  |
| DS022 |  | Fabrication and Painting of Production Deck | 120d | 2012-06-13 | 2012-11-08 | DS021 SS | 0d |  |
| DS031 |  | Fabrication and Painting of Below Production Deck/Legs | 105d | 2012-06-13 | 2012-10-18 | PRS34 | 0d |  |
| DS032 |  | Fabrication and Painting of Production Deck | 120d | 2012-06-13 | 2012-11-08 | DS031 SS | 0d |  |
| DS041 |  | Fabrication and Painting of Below Production Deck/Legs | 105d | 2012-06-13 | 2012-10-18 |  | 0d |  |
| DS042 |  | Fabrication and Painting of Production Deck | 120d | 2012-06-13 | 2012-11-08 | DS041 SS | 0d |  |
| DS003 |  | Fabrication and Paint of Heli-Deck ( & Lifting if Required) | 120d | 2012-08-27 | 2013-01-20 | DS002 SS+60d | 50d |  |
| DS013 |  | Fabrication and Paint of Heli-Deck ( & Lifting if Required) | 120d | 2012-08-27 | 2013-01-20 | DS012 SS+60d | 50d |  |
| DS023 |  | Fabrication and Paint of Heli-Deck ( & Lifting if Required) | 120d | 2012-08-27 | 2013-01-20 | DS022 SS+60d | 50d |  |
| DS033 |  | Fabrication and Paint of Heli-Deck ( & Lifting if Required) | 120d | 2012-08-27 | 2013-01-20 | DS032 SS+60d | 50d |  |
| DS043 |  | Fabrication and Paint of Heli-Deck ( & Lifting if Required) | 120d | 2012-08-27 | 2013-01-20 | DS042 SS+60d | 50d |  |
| DS006 |  | Fabrication & Installation of Deck Str. Miscellence / Padeyes | 120d | 2012-10-04 | 2013-03-02 | DS007 FF+6d, DS005 FF+30d | 10d |  |
| DS016 |  | Fabrication & Installation of Deck Str. Miscellence / Padeyes | 120d | 2012-10-04 | 2013-03-02 | DS017 FF+6d, DS015 FF+30d | 10d |  |
| DS026 |  | Fabrication & Installation of Deck Str. Miscellence / Padeyes | 120d | 2012-10-04 | 2013-03-02 | DS027 FF+6d, DS025 FF+30d | 10d |  |
| DS036 |  | Fabrication & Installation of Deck Str. Miscellence / Padeyes | 120d | 2012-10-04 | 2013-03-02 | DS037 FF+6d, DS035 FF+30d | 10d |  |
| DS046 |  | Fabrication & Installation of Deck Str. Miscellence / Padeyes | 120d | 2012-10-04 | 2013-03-02 | DS047 FF+6d, DS045 FF+30d | 10d |  |
| DS004 |  | Lifting Below Production Deck on High Cups | 5d | 2012-10-20 | 2012-10-24 | DS001 | 3d |  |
| DS014 |  | Lifting Below Production Deck on High Cups | 5d | 2012-10-20 | 2012-10-24 | DS011 | 3d |  |
| DS024 |  | Lifting Below Production Deck on High Cups | 5d | 2012-10-20 | 2012-10-24 | DS021 | 3d |  |
| DS034 |  | Lifting Below Production Deck on High Cups | 5d | 2012-10-20 | 2012-10-24 | DS031 | 3d |  |
| DS044 |  | Lifting Below Production Deck on High Cups | 5d | 2012-10-20 | 2012-10-24 | DS041 | 3d |  |
| DS005 |  | Lifting Production Deck on Below Production Level | 15d | 2012-11-10 | 2012-11-27 | DS002, TSF003 | 0d |  |
| DS015 |  | Lifting Production Deck on Below Production Level | 15d | 2012-11-10 | 2012-11-27 | DS012, TSF013 | 0d |  |
| DS025 |  | Lifting Production Deck on Below Production Level | 15d | 2012-11-10 | 2012-11-27 | DS022, TSF023 | 0d |  |
| DS035 |  | Lifting Production Deck on Below Production Level | 15d | 2012-11-10 | 2012-11-27 | DS032, TSF033 | 0d |  |
| DS045 |  | Lifting Production Deck on Below Production Level | 15d | 2012-11-10 | 2012-11-27 | DS042 | 0d |  |
| DS007 |  | Physical Weighting | 0d | 2013-02-23 | 2013-02-23 | TSF002 | 10d |  |
| DS017 |  | Physical Weighting | 0d | 2013-02-23 | 2013-02-23 | TSF012 | 10d |  |
| DS027 |  | Physical Weighting | 0d | 2013-02-23 | 2013-02-23 | TSF022 | 10d |  |
| DS037 |  | Physical Weighting | 0d | 2013-02-23 | 2013-02-23 | TSF032 | 10d |  |
| DS047 |  | Physical Weighting | 0d | 2013-02-23 | 2013-02-23 |  | 10d |  |
| DS008 |  | Clearanse of structure (Fab. & Painting ) Punch List | 21d | 2013-03-06 | 2013-03-30 | TS08 FF, DS006 | 7d |  |
| DS018 |  | Clearanse of structure (Fab. & Painting ) Punch List | 21d | 2013-03-06 | 2013-03-30 | TS18 FF, DS016 | 7d |  |
| DS028 |  | Clearanse of structure (Fab. & Painting ) Punch List | 21d | 2013-03-06 | 2013-03-30 | TS28 FF, DS026 | 7d |  |
| DS038 |  | Clearanse of structure (Fab. & Painting ) Punch List | 21d | 2013-03-06 | 2013-03-30 | TS38 FF, DS036 | 7d |  |
|  | 2 | **TSF Fabrication and Erection** |  | 2012-07-21 | 2013-03-30 |  |  |  |

| ID | WBS | Task | Duration | Start | Finish | Predecessors | Total float | Constraint |
| --- | --- | --- | --- | --- | --- | --- | --- | --- |
|  | 1 | **Piping fabrication & erection** |  | 2012-07-21 | 2013-02-23 |  |  |  |
| TFS001 |  | Piping and Piping Supports Fabrication and Painting | 100d | 2012-07-21 | 2012-11-24 | ENT03, PRT01 SS+7d, PRT02 FF+30d, PRT05 SS+6d, PRT03 FF+15d, PRT04 FF+15d | 40d |  |
| TFS011 |  | Piping and Piping Supports Fabrication and Painting | 100d | 2012-07-21 | 2012-11-24 | ENT13, PRT21 SS+7d, PRT22 FF+30d, PRT15 SS+6d, PRT13 FF+15d, PRT14 FF+15d | 40d |  |
| TFS021 |  | Piping and Piping Supports Fabrication and Painting | 100d | 2012-07-21 | 2012-11-24 | ENT23, PRT41 SS+7d, PRT42 FF+30d, PRT25 SS+6d, PRT23 FF+15d, PRT24 FF+15d | 40d |  |
| TFS031 |  | Piping and Piping Supports Fabrication and Painting | 100d | 2012-07-21 | 2012-11-24 | ENT33, PRT61 SS+7d, PRT62 FF+30d, PRT35 SS+6d, PRT33 FF+15d, PRT34 FF+15d | 40d |  |
| TSF002 |  | Piping and Piping Supports Erection | 75d | 2012-11-25 | 2013-02-23 | DS004, TFS001 SS+60d, DS005 SS+12d, PRT06 FF+30d, PRT07 FF+30d, PRT08 FF+30d, TSF004 FF+30d | 0d |  |
| TSF012 |  | Piping and Piping Supports Erection | 75d | 2012-11-25 | 2013-02-23 | DS014, TFS011 SS+60d, DS015 SS+12d, PRT16 FF+30d, PRT17 FF+30d, PRT18 FF+30d, TSF014 FF+30d | 0d |  |
| TSF022 |  | Piping and Piping Supports Erection | 75d | 2012-11-25 | 2013-02-23 | DS024, TFS021 SS+60d, DS025 SS+12d, PRT26 FF+30d, PRT27 FF+30d, PRT28 FF+30d, TSF024 FF+30d | 0d |  |
| TSF032 |  | Piping and Piping Supports Erection | 75d | 2012-11-25 | 2013-02-23 | DS034, TFS031 SS+60d, DS035 SS+12d, PRT36 FF+30d, PRT37 FF+30d, PRT38 FF+30d, TSF034 FF+30d | 0d |  |
|  | 2 | **Equipment erection** |  | 2012-10-29 | 2012-12-23 |  |  |  |
| TSF003 |  | Equipment Erection on Below Production Level | 7d | 2012-10-29 | 2012-11-05 | ENS08, DS004, PRT12 | 3d |  |
| TSF013 |  | Equipment Erection on Below Production Level | 7d | 2012-10-29 | 2012-11-05 | ENS18, DS014, PRT32 | 3d |  |
| TSF023 |  | Equipment Erection on Below Production Level | 7d | 2012-10-29 | 2012-11-05 | ENS28, DS024, PRT52 | 3d |  |
| TSF033 |  | Equipment Erection on Below Production Level | 7d | 2012-10-29 | 2012-11-05 | ENS38, DS034, PRT72 | 3d |  |
| TSF043 |  | Equipment Erection on Below Production Level | 7d | 2012-10-29 | 2012-11-05 |  | 3d |  |
| TSF004 |  | Equipment Erection on Production Level | 15d | 2012-11-28 | 2012-12-15 | DS005, ENS08, PRT09, PRT10, PRT11 | 27d |  |
| TSF014 |  | Equipment Erection on Production Level | 15d | 2012-11-28 | 2012-12-15 | DS015, ENS18, PRT19, PRT20, PRT31 | 27d |  |
| TSF024 |  | Equipment Erection on Production Level | 15d | 2012-11-28 | 2012-12-15 | DS025, ENS28, PRT29, PRT30, PRT51 | 27d |  |
| TSF034 |  | Equipment Erection on Production Level | 15d | 2012-11-28 | 2012-12-15 | DS035, ENS38, PRT39, PRT40, PRT71 | 27d |  |
| TSF044 |  | Equipment Erection on Production Level | 15d | 2012-11-28 | 2012-12-15 |  | 27d |  |
| TSF005 |  | Equipment Erection on Helideck | 7d | 2012-12-16 | 2012-12-23 | ENS08, DS003 SS+90d, PRE03 | 50d |  |
| TSF015 |  | Equipment Erection on Helideck | 7d | 2012-12-16 | 2012-12-23 | ENS18, DS013 SS+90d, PRE23 | 50d |  |
| TSF025 |  | Equipment Erection on Helideck | 7d | 2012-12-16 | 2012-12-23 | ENS28, DS023 SS+90d, PRE43 | 50d |  |
| TSF035 |  | Equipment Erection on Helideck | 7d | 2012-12-16 | 2012-12-23 | ENS38, DS033 SS+90d, PRE63 | 50d |  |
| TSF045 |  | Equipment Erection on Helideck | 7d | 2012-12-16 | 2012-12-23 |  | 50d |  |
|  | 3 | **E&I Activies** |  | 2012-11-10 | 2013-02-26 |  |  |  |
| TS07 |  | E&I Activity | 90d | 2012-11-10 | 2013-02-26 | ENE01 SS+7d, TSF002 FF+3d, DS005 FF+45d, PRE01, PRE02, PRE03, PRE04, PRE05, PRE06, PRE07, PRE08, PRE09, PRE10, PRE11, PRE12 FF+30d, PRE13 FF+30d | 2d |  |
| TS17 |  | E&I Activity | 90d | 2012-11-10 | 2013-02-26 | ENE11 SS+7d, TSF012 FF+3d, DS015 FF+45d, PRE21, PRE22, PRE23, PRE14, PRE15, PRE16, PRE17, PRE18, PRE19, PRE20, PRE31, PRE32 FF+30d, PRE33 FF+30d | 2d |  |
| TS27 |  | E&I Activity | 90d | 2012-11-10 | 2013-02-26 | ENE21 SS+7d, TSF022 FF+3d, DS025 FF+45d, PRE41, PRE42, PRE43, PRE24, PRE25, PRE26, PRE27, PRE28, PRE29, PRE30, PRE51, PRE52 FF+30d, PRE53 FF+30d | 2d |  |
| TS37 |  | E&I Activity | 90d | 2012-11-10 | 2013-02-26 | ENE31 SS+7d, TSF032 FF+3d, DS035 FF+45d, PRE61, PRE62, PRE63, PRE34, PRE35, PRE36, PRE37, PRE38, PRE39, PRE40, PRE71, PRE72 FF+30d, PRE73 FF+30d | 2d |  |
|  | 4 | **Pre-commissioning** |  | 2013-02-18 | 2013-03-30 |  |  |  |
| TS08 |  | Pre-commissioning " Piping Hydrotest , Reinstatment , Megering , Continuity Test and Touch Up " | 35d | 2013-02-18 | 2013-03-30 | TSF005 FF+30d, TSF002 FF+30d, TS07 FF+25d | 0d |  |
| TS18 |  | Pre-commissioning " Piping Hydrotest , Reinstatment , Megering , Continuity Test and Touch Up " | 35d | 2013-02-18 | 2013-03-30 | TSF015 FF+30d, TSF012 FF+30d, TS17 FF+25d | 0d |  |
| TS28 |  | Pre-commissioning " Piping Hydrotest , Reinstatment , Megering , Continuity Test and Touch Up " | 35d | 2013-02-18 | 2013-03-30 | TSF025 FF+30d, TSF022 FF+30d, TS27 FF+25d | 0d |  |
| TS38 |  | Pre-commissioning " Piping Hydrotest , Reinstatment , Megering , Continuity Test and Touch Up " | 35d | 2013-02-18 | 2013-03-30 | TSF035 FF+30d, TSF032 FF+30d, TS37 FF+25d | 0d |  |
|  | 5 | **L/O & Sea Fastening** |  | 2012-09-15 | 2013-04-07 |  |  |  |
|  | 3 | **01st Trip (P/L Spools 18" & 8")** |  | 2012-09-15 | 2012-10-22 |  |  |  |
| LOPS41 |  | Arrival of 01st Shipment Material Barge ( P/L Spools) | 0d | 2012-09-15 | 2012-09-15 |  | 0d | start on 2012-09-15 |
| LOPS51 |  | Arrival of 01st Shipment Material Barge ( P/L Spools) | 0d | 2012-09-15 | 2012-09-15 |  | 0d | start on 2012-09-15 |
| LOPS61 |  | Arrival of 01st Shipment Material Barge ( P/L Spools) | 0d | 2012-09-15 | 2012-09-15 |  | 0d | start on 2012-09-15 |
| LOPS71 |  | Arrival of 01st Shipment Material Barge ( P/L Spools) | 0d | 2012-09-15 | 2012-09-15 |  | 0d | start on 2012-09-15 |
| LOPS42 |  | 1st Shipment Material Barge Preparation | 12d | 2012-10-03 | 2012-10-17 | LOPS41, PL01 FF | 136d |  |
| LOPS52 |  | 1st Shipment Material Barge Preparation | 12d | 2012-10-03 | 2012-10-17 | LOPS51, PL11 FF | 136d |  |
| LOPS62 |  | 1st Shipment Material Barge Preparation | 12d | 2012-10-03 | 2012-10-17 | LOPS61, PL21 FF | 136d |  |
| LOPS72 |  | 1st Shipment Material Barge Preparation | 12d | 2012-10-03 | 2012-10-17 | LOPS71, PL31 FF | 136d |  |
| LOPS43 |  | L/O & Sea Fastening (P/L Spools 18" & 8") | 4d | 2012-10-18 | 2012-10-22 | LOPS42, PL01 | 136d |  |
| LOPS53 |  | L/O & Sea Fastening (P/L Spools 18" & 8") | 4d | 2012-10-18 | 2012-10-22 | LOPS52, PL11 | 136d |  |
| LOPS63 |  | L/O & Sea Fastening (P/L Spools 18" & 8") | 4d | 2012-10-18 | 2012-10-22 | LOPS62, PL21 | 136d |  |
| LOPS73 |  | L/O & Sea Fastening (P/L Spools 18" & 8") | 4d | 2012-10-18 | 2012-10-22 | LOPS72, PL31 | 136d |  |
|  | 1 | **02nd Trip (Jacket & Piles)** |  | 2012-12-01 | 2013-01-31 |  |  |  |
| LOJK41 |  | Arrival of 02nd Shipment Material Barge ( Jacket and Piles ) | 0d | 2012-12-01 | 2012-12-01 |  | 0d | start on 2012-12-01 |
| LOJK51 |  | Arrival of 02nd Shipment Material Barge ( Jacket and Piles ) | 0d | 2012-12-01 | 2012-12-01 |  | 0d | start on 2012-12-01 |
| LOJK61 |  | Arrival of 02nd Shipment Material Barge ( Jacket and Piles ) | 0d | 2012-12-01 | 2012-12-01 |  | 0d | start on 2012-12-01 |
| LOJK71 |  | Arrival of 02nd Shipment Material Barge ( Jacket and Piles ) | 0d | 2012-12-01 | 2012-12-01 |  | 0d | start on 2012-12-01 |
| LOJK42 |  | 02nd Shipment Material Barge Preparation | 12d | 2013-01-09 | 2013-01-22 | JK01 FF, PL01 FF, LOJK41, LOJK41 SS | 26d |  |
| LOJK52 |  | 02nd Shipment Material Barge Preparation | 12d | 2013-01-09 | 2013-01-22 | JK11 FF, PL11 FF, LOJK51, LOJK51 SS | 26d |  |
| LOJK62 |  | 02nd Shipment Material Barge Preparation | 12d | 2013-01-09 | 2013-01-22 | JK21 FF, PL21 FF, LOJK61, LOJK61 SS | 26d |  |
| LOJK72 |  | 02nd Shipment Material Barge Preparation | 12d | 2013-01-09 | 2013-01-22 | JK31 FF, PL31 FF, LOJK71, LOJK71 SS | 26d |  |
| LOJK43 |  | L/O & Sea fastening ( Jacket & Piles ) | 7d | 2013-01-23 | 2013-01-31 | LOJK42 | 26d |  |
| LOJK53 |  | L/O & Sea fastening ( Jacket & Piles ) | 7d | 2013-01-23 | 2013-01-31 | LOJK52 | 26d |  |
| LOJK63 |  | L/O & Sea fastening ( Jacket & Piles ) | 7d | 2013-01-23 | 2013-01-31 | LOJK62 | 26d |  |
| LOJK73 |  | L/O & Sea fastening ( Jacket & Piles ) | 7d | 2013-01-23 | 2013-01-31 | LOJK72 | 26d |  |
|  | 2 | **03rd Trip ( Deck)** |  | 2013-03-02 | 2013-04-07 |  |  |  |
| LODK41 |  | Arrival of 03rd Shipment Material Barge ( Deck C/W TSF ) | 0d | 2013-03-02 | 2013-03-02 |  | -0d | start on 2013-03-01 |
| LODK51 |  | Arrival of 03rd Shipment Material Barge ( Deck C/W TSF ) | 0d | 2013-03-02 | 2013-03-02 |  | -0d | start on 2013-03-01 |
| LODK61 |  | Arrival of 03rd Shipment Material Barge ( Deck C/W TSF ) | 0d | 2013-03-02 | 2013-03-02 |  | -0d | start on 2013-03-01 |
| LODK71 |  | Arrival of 03rd Shipment Material Barge ( Deck C/W TSF ) | 0d | 2013-03-02 | 2013-03-02 |  | -0d | start on 2013-03-01 |
| LODK42 |  | 3rd Shipment Material Barge Preparation | 12d | 2013-03-17 | 2013-03-30 | TS08 FF, LODK41 | 0d |  |
| LODK52 |  | 3rd Shipment Material Barge Preparation | 12d | 2013-03-17 | 2013-03-30 | TS18 FF, LODK51 | 0d |  |
| LODK62 |  | 3rd Shipment Material Barge Preparation | 12d | 2013-03-17 | 2013-03-30 | TS28 FF, LODK61 | 0d |  |

| ID | WBS | Task | Duration | Start | Finish | Predecessors | Total float | Constraint |
| --- | --- | --- | --- | --- | --- | --- | --- | --- |
| LODK72 |  | 3rd Shipment Material Barge Preparation | 12d | 2013-03-17 | 2013-03-30 | TS38 FF, LODK71 | 0d |  |
| LODK43 |  | L/O & Sea fastening ( Deck) | 7d | 2013-03-31 | 2013-04-07 | LODK42 | 0d |  |
| LODK53 |  | L/O & Sea fastening ( Deck) | 7d | 2013-03-31 | 2013-04-07 | LODK52 | 0d |  |
| LODK63 |  | L/O & Sea fastening ( Deck) | 7d | 2013-03-31 | 2013-04-07 | LODK62 | 0d |  |
| LODK73 |  | L/O & Sea fastening ( Deck) | 7d | 2013-03-31 | 2013-04-07 | LODK72 | 0d |  |
|  | Master Rev.F-N-4 | **Hillal-B PLATFORM DEVELOPMENT-Normal** |  | 2011-11-30 | 2013-04-07 |  |  |  |
|  | 1 | **General Milestone** |  | 2012-01-21 | 2013-03-31 |  |  |  |
| GM41 |  | Reciving Fax of Award | 0d | 2012-01-21 | 2012-01-21 |  | -0d | finish on 2012-01-20 |
| GM51 |  | Reciving Fax of Award | 0d | 2012-01-21 | 2012-01-21 |  | -0d | finish on 2012-01-20 |
| GM61 |  | Reciving Fax of Award | 0d | 2012-01-21 | 2012-01-21 |  | -0d | finish on 2012-01-20 |
| GM71 |  | Reciving Fax of Award | 0d | 2012-01-21 | 2012-01-21 |  | -0d | finish on 2012-01-20 |
| GM42 |  | Project Fab. Start | 0d | 2012-06-13 | 2012-06-13 | PRS44 | 244d |  |
| GM52 |  | Project Fab. Start | 0d | 2012-06-13 | 2012-06-13 | PRS54 | 244d |  |
| GM62 |  | Project Fab. Start | 0d | 2012-06-13 | 2012-06-13 | PRS64 | 244d |  |
| GM72 |  | Project Fab. Start | 0d | 2012-06-13 | 2012-06-13 | PRS74 | 244d |  |
| GM43 |  | Ready for Load out (01st Shipment / Pipeline Spools 18" & 8") | 0d | 2012-10-18 | 2012-10-18 | LOPS83 SS | 140d |  |
| GM53 |  | Ready for Load out (01st Shipment / Pipeline Spools 18" & 8") | 0d | 2012-10-18 | 2012-10-18 | LOPS93 SS | 140d |  |
| GM63 |  | Ready for Load out (01st Shipment / Pipeline Spools 18" & 8") | 0d | 2012-10-18 | 2012-10-18 | LOPS103 SS | 140d |  |
| GM73 |  | Ready for Load out (01st Shipment / Pipeline Spools 18" & 8") | 0d | 2012-10-18 | 2012-10-18 | LOPS113 SS | 140d |  |
| GM44 |  | Ready for Load out ( 02nd Shipment/ Jacket & Piles ) | 0d | 2013-01-23 | 2013-01-23 | LOJK83 SS | 26d |  |
| GM54 |  | Ready for Load out ( 02nd Shipment/ Jacket & Piles ) | 0d | 2013-01-23 | 2013-01-23 | LOJK93 SS | 26d |  |
| GM64 |  | Ready for Load out ( 02nd Shipment/ Jacket & Piles ) | 0d | 2013-01-23 | 2013-01-23 | LOJK103 SS | 26d |  |
| GM74 |  | Ready for Load out ( 02nd Shipment/ Jacket & Piles ) | 0d | 2013-01-23 | 2013-01-23 | LOJK113 SS | 26d |  |
| GM45 |  | Ready for Load out ( 03rd Shipment/ Deck C/W TSF ) | 0d | 2013-03-31 | 2013-03-31 | LODK83 SS | 7d |  |
| GM55 |  | Ready for Load out ( 03rd Shipment/ Deck C/W TSF ) | 0d | 2013-03-31 | 2013-03-31 | LODK93 SS | 7d |  |
| GM65 |  | Ready for Load out ( 03rd Shipment/ Deck C/W TSF ) | 0d | 2013-03-31 | 2013-03-31 | LODK103 SS | 7d |  |
| GM75 |  | Ready for Load out ( 03rd Shipment/ Deck C/W TSF ) | 0d | 2013-03-31 | 2013-03-31 | LODK113 SS | 7d |  |
|  | 2 | **Engineering** |  | 2011-11-30 | 2012-04-30 |  |  |  |
|  | 1 | **Structure** |  | 2011-11-30 | 2012-04-30 |  |  |  |
| ENS43 |  | Receiving Jacket Primary & Secondary Steel IFC DWG`s | 138d | 2011-11-30 | 2012-04-16 |  | 0d | start on 2011-11-30 |
| ENS53 |  | Receiving Jacket Primary & Secondary Steel IFC DWG`s | 138d | 2011-11-30 | 2012-04-16 |  | 0d | start on 2011-11-30 |
| ENS63 |  | Receiving Jacket Primary & Secondary Steel IFC DWG`s | 138d | 2011-11-30 | 2012-04-16 |  | 0d | start on 2011-11-30 |
| ENS73 |  | Receiving Jacket Primary & Secondary Steel IFC DWG`s | 138d | 2011-11-30 | 2012-04-16 |  | 0d | start on 2011-11-30 |
| ENS44 |  | Receiving Piles IFC DWG`s | 0d | 2012-01-17 | 2012-01-17 |  | 0d | finish on 2012-01-17 |
| ENS54 |  | Receiving Piles IFC DWG`s | 0d | 2012-01-17 | 2012-01-17 |  | 0d | finish on 2012-01-17 |
| ENS64 |  | Receiving Piles IFC DWG`s | 0d | 2012-01-17 | 2012-01-17 |  | 0d | finish on 2012-01-17 |
| ENS74 |  | Receiving Piles IFC DWG`s | 0d | 2012-01-17 | 2012-01-17 |  | 0d | finish on 2012-01-17 |
| ENS41 |  | Receiving Final Jacket , Boat Land & Piles MTO | 0d | 2012-01-29 | 2012-01-29 | GM41 FF+7d | 17d |  |
| ENS42 |  | Receiving Final Deck Str. MTO | 0d | 2012-01-29 | 2012-01-29 | GM41 FF+7d | 17d |  |
| ENS51 |  | Receiving Final Jacket , Boat Land & Piles MTO | 0d | 2012-01-29 | 2012-01-29 | GM51 FF+7d | 17d |  |
| ENS52 |  | Receiving Final Deck Str. MTO | 0d | 2012-01-29 | 2012-01-29 | GM51 FF+7d | 17d |  |
| ENS61 |  | Receiving Final Jacket , Boat Land & Piles MTO | 0d | 2012-01-29 | 2012-01-29 | GM61 FF+7d | 17d |  |
| ENS62 |  | Receiving Final Deck Str. MTO | 0d | 2012-01-29 | 2012-01-29 | GM61 FF+7d | 17d |  |
| ENS71 |  | Receiving Final Jacket , Boat Land & Piles MTO | 0d | 2012-01-29 | 2012-01-29 | GM71 FF+7d | 17d |  |
| ENS72 |  | Receiving Final Deck Str. MTO | 0d | 2012-01-29 | 2012-01-29 | GM71 FF+7d | 17d |  |
| ENS45 |  | Receiving Deck Str. Primary & Secondary IFC DWG`s | 41d | 2012-02-07 | 2012-03-19 |  | 0d | start on 2012-02-07 |
| ENS55 |  | Receiving Deck Str. Primary & Secondary IFC DWG`s | 41d | 2012-02-07 | 2012-03-19 |  | 0d | start on 2012-02-07 |
| ENS65 |  | Receiving Deck Str. Primary & Secondary IFC DWG`s | 41d | 2012-02-07 | 2012-03-19 |  | 0d | start on 2012-02-07 |
| ENS75 |  | Receiving Deck Str. Primary & Secondary IFC DWG`s | 41d | 2012-02-07 | 2012-03-19 |  | 0d | start on 2012-02-07 |
| ENS46 |  | Receiving Piping Supports IFC DWG's | 20d | 2012-02-28 | 2012-03-19 |  | 0d | start on 2012-02-28 |
| ENS56 |  | Receiving Piping Supports IFC DWG's | 20d | 2012-02-28 | 2012-03-19 |  | 0d | start on 2012-02-28 |
| ENS66 |  | Receiving Piping Supports IFC DWG's | 20d | 2012-02-28 | 2012-03-19 |  | 0d | start on 2012-02-28 |
| ENS76 |  | Receiving Piping Supports IFC DWG's | 20d | 2012-02-28 | 2012-03-19 |  | 0d | start on 2012-02-28 |
| ENS47 |  | Receiving Cable tarys Support IFC DWG's | 13d | 2012-03-13 | 2012-03-26 |  | 0d | start on 2012-03-13 |
| ENS57 |  | Receiving Cable tarys Support IFC DWG's | 13d | 2012-03-13 | 2012-03-26 |  | 0d | start on 2012-03-13 |
| ENS67 |  | Receiving Cable tarys Support IFC DWG's | 13d | 2012-03-13 | 2012-03-26 |  | 0d | start on 2012-03-13 |
| ENS77 |  | Receiving Cable tarys Support IFC DWG's | 13d | 2012-03-13 | 2012-03-26 |  | 0d | start on 2012-03-13 |
| ENS48 |  | Receiving IFC Equipment fixation DWG`s | 13d | 2012-04-04 | 2012-04-17 |  | 0d | start on 2012-04-04 |
| ENS58 |  | Receiving IFC Equipment fixation DWG`s | 13d | 2012-04-04 | 2012-04-17 |  | 0d | start on 2012-04-04 |
| ENS68 |  | Receiving IFC Equipment fixation DWG`s | 13d | 2012-04-04 | 2012-04-17 |  | 0d | start on 2012-04-04 |
| ENS78 |  | Receiving IFC Equipment fixation DWG`s | 13d | 2012-04-04 | 2012-04-17 |  | 0d | start on 2012-04-04 |
| ENS49 |  | Receiving P/L 8" & 18" IFC DWG's | 20d | 2012-04-10 | 2012-04-30 |  | 0d | start on 2012-04-10 |
| ENS59 |  | Receiving P/L 8" & 18" IFC DWG's | 20d | 2012-04-10 | 2012-04-30 |  | 0d | start on 2012-04-10 |
| ENS69 |  | Receiving P/L 8" & 18" IFC DWG's | 20d | 2012-04-10 | 2012-04-30 |  | 0d | start on 2012-04-10 |
| ENS79 |  | Receiving P/L 8" & 18" IFC DWG's | 20d | 2012-04-10 | 2012-04-30 |  | 0d | start on 2012-04-10 |
|  | 2 | **TSF, E&I** |  | 2012-01-15 | 2012-03-12 |  |  |  |
| ENT41 |  | Issue Approved P&ID's / Equipment List IFC DWG's | 0d | 2012-01-15 | 2012-01-15 |  | 0d | finish on 2012-01-15 |
| ENT51 |  | Issue Approved P&ID's / Equipment List IFC DWG's | 0d | 2012-01-15 | 2012-01-15 |  | 0d | finish on 2012-01-15 |
| ENT61 |  | Issue Approved P&ID's / Equipment List IFC DWG's | 0d | 2012-01-15 | 2012-01-15 |  | 0d | finish on 2012-01-15 |
| ENT71 |  | Issue Approved P&ID's / Equipment List IFC DWG's | 0d | 2012-01-15 | 2012-01-15 |  | 0d | finish on 2012-01-15 |

| ID | WBS | Task | Duration | Start | Finish | Predecessors | Total float | Constraint |
| --- | --- | --- | --- | --- | --- | --- | --- | --- |
| ENT42 |  | Issue plat plans IFC DWG's | 0d | 2012-02-06 | 2012-02-06 |  | 0d | finish on 2012-02-06 |
| ENT52 |  | Issue plat plans IFC DWG's | 0d | 2012-02-06 | 2012-02-06 |  | 0d | finish on 2012-02-06 |
| ENT62 |  | Issue plat plans IFC DWG's | 0d | 2012-02-06 | 2012-02-06 |  | 0d | finish on 2012-02-06 |
| ENT72 |  | Issue plat plans IFC DWG's | 0d | 2012-02-06 | 2012-02-06 |  | 0d | finish on 2012-02-06 |
| ENT43 |  | Receiving Piping ISO`s IFC DWG's | 14d | 2012-02-27 | 2012-03-12 |  | 0d | start on 2012-02-27 |
| ENT53 |  | Receiving Piping ISO`s IFC DWG's | 14d | 2012-02-27 | 2012-03-12 |  | 0d | start on 2012-02-27 |
| ENT63 |  | Receiving Piping ISO`s IFC DWG's | 14d | 2012-02-27 | 2012-03-12 |  | 0d | start on 2012-02-27 |
| ENT73 |  | Receiving Piping ISO`s IFC DWG's | 14d | 2012-02-27 | 2012-03-12 |  | 0d | start on 2012-02-27 |
| ENT44 |  | Issue Hydrotest maps & loops IFC DWG's | 0d | 2012-02-28 | 2012-02-28 |  | 0d | finish on 2012-02-28 |
| ENT54 |  | Issue Hydrotest maps & loops IFC DWG's | 0d | 2012-02-28 | 2012-02-28 |  | 0d | finish on 2012-02-28 |
| ENT64 |  | Issue Hydrotest maps & loops IFC DWG's | 0d | 2012-02-28 | 2012-02-28 |  | 0d | finish on 2012-02-28 |
| ENT74 |  | Issue Hydrotest maps & loops IFC DWG's | 0d | 2012-02-28 | 2012-02-28 |  | 0d | finish on 2012-02-28 |
|  | 3 | **Electrical & Instrumentation (E&I)** |  | 2012-01-23 | 2012-04-29 |  |  |  |
| ENE41 |  | Receiving E&I IFC DWG`s | 97d | 2012-01-23 | 2012-04-29 |  | 0d | start on 2012-01-23 |
| ENE51 |  | Receiving E&I IFC DWG`s | 97d | 2012-01-23 | 2012-04-29 |  | 0d | start on 2012-01-23 |
| ENE61 |  | Receiving E&I IFC DWG`s | 97d | 2012-01-23 | 2012-04-29 |  | 0d | start on 2012-01-23 |
| ENE71 |  | Receiving E&I IFC DWG`s | 97d | 2012-01-23 | 2012-04-29 |  | 0d | start on 2012-01-23 |
|  | 3 | **Procurment** |  | 2012-02-07 | 2012-09-24 |  |  |  |
|  | 1 | **Structure Material** |  | 2012-02-07 | 2012-09-24 |  |  |  |
| PRS41 |  | Issue Structural Material P.O's ( Gupco Responsability) | 0d | 2012-02-07 | 2012-02-07 |  | 0d | start on 2012-02-07 |
| PRS51 |  | Issue Structural Material P.O's ( Gupco Responsability) | 0d | 2012-02-07 | 2012-02-07 |  | 0d | start on 2012-02-07 |
| PRS61 |  | Issue Structural Material P.O's ( Gupco Responsability) | 0d | 2012-02-07 | 2012-02-07 |  | 0d | start on 2012-02-07 |
| PRS71 |  | Issue Structural Material P.O's ( Gupco Responsability) | 0d | 2012-02-07 | 2012-02-07 |  | 0d | start on 2012-02-07 |
| PRS42 |  | Issue LC ( Gupco Responsability) | 0d | 2012-02-15 | 2012-02-15 | PRS41 | 0d | start on 2012-02-15 |
| PRS43 |  | Delivery of Structure Material (F.O.B - 13 Wks.) - (Gupco Responsability) | 91d | 2012-02-15 | 2012-05-15 | ENS41, ENS42, PRS41, PRS42 | 0d |  |
| PRS52 |  | Issue LC ( Gupco Responsability) | 0d | 2012-02-15 | 2012-02-15 | PRS51 | 0d | start on 2012-02-15 |
| PRS53 |  | Delivery of Structure Material (F.O.B - 13 Wks.) - (Gupco Responsability) | 91d | 2012-02-15 | 2012-05-15 | ENS51, ENS52, PRS51, PRS52 | 0d |  |
| PRS62 |  | Issue LC ( Gupco Responsability) | 0d | 2012-02-15 | 2012-02-15 | PRS61 | 0d | start on 2012-02-15 |
| PRS63 |  | Delivery of Structure Material (F.O.B - 13 Wks.) - (Gupco Responsability) | 91d | 2012-02-15 | 2012-05-15 | ENS61, ENS62, PRS61, PRS62 | 0d |  |
| PRS72 |  | Issue LC ( Gupco Responsability) | 0d | 2012-02-15 | 2012-02-15 | PRS71 | 0d | start on 2012-02-15 |
| PRS73 |  | Delivery of Structure Material (F.O.B - 13 Wks.) - (Gupco Responsability) | 91d | 2012-02-15 | 2012-05-15 | ENS71, ENS72, PRS71, PRS72 | 0d |  |
| PRS45 |  | Material check with IFC DWG's to Prepare balance material | 7d | 2012-04-16 | 2012-04-23 | ENS43, ENS44, ENS45 | 195.87d |  |
| PRS55 |  | Material check with IFC DWG's to Prepare balance material | 7d | 2012-04-16 | 2012-04-23 | ENS53, ENS54, ENS55 | 195.87d |  |
| PRS65 |  | Material check with IFC DWG's to Prepare balance material | 7d | 2012-04-16 | 2012-04-23 | ENS63, ENS64, ENS65 | 195.87d |  |
| PRS75 |  | Material check with IFC DWG's to Prepare balance material | 7d | 2012-04-16 | 2012-04-23 | ENS73, ENS74, ENS75 | 195.87d |  |
| PRS46 |  | Delivery of balance material | 154d | 2012-04-23 | 2012-09-24 | PRS45 | 195.87d |  |
| PRS56 |  | Delivery of balance material | 154d | 2012-04-23 | 2012-09-24 | PRS55 | 195.87d |  |
| PRS66 |  | Delivery of balance material | 154d | 2012-04-23 | 2012-09-24 | PRS65 | 195.87d |  |
| PRS76 |  | Delivery of balance material | 154d | 2012-04-23 | 2012-09-24 | PRS75 | 195.87d |  |
| PRS44 |  | Delivery of Structure Material at Site (4 Wks.) | 28d | 2012-05-16 | 2012-06-12 | PRS43 | 0d |  |
| PRS54 |  | Delivery of Structure Material at Site (4 Wks.) | 28d | 2012-05-16 | 2012-06-12 | PRS53 | 0d |  |
| PRS64 |  | Delivery of Structure Material at Site (4 Wks.) | 28d | 2012-05-16 | 2012-06-12 | PRS63 | 0d |  |
| PRS74 |  | Delivery of Structure Material at Site (4 Wks.) | 28d | 2012-05-16 | 2012-06-12 | PRS73 | 0d |  |
|  | 2 | **P/L Spools Material** |  | 2012-05-31 | 2012-07-20 |  |  |  |
| PRP102 |  | Pipeline 8" & Fittings | 51d | 2012-05-31 | 2012-07-20 |  | -0d | start on 2012-05-30 |
| PRP112 |  | Pipeline 8" & Fittings | 51d | 2012-05-31 | 2012-07-20 |  | -0d | start on 2012-05-30 |
| PRP122 |  | Pipeline 8" & Fittings | 51d | 2012-05-31 | 2012-07-20 |  | -0d | start on 2012-05-30 |
| PRP132 |  | Pipeline 8" & Fittings | 51d | 2012-05-31 | 2012-07-20 |  | -0d | start on 2012-05-30 |
| PRP142 |  | Pipeline 8" & Fittings | 51d | 2012-05-31 | 2012-07-20 |  | -0d | start on 2012-05-30 |
| PRP152 |  | Pipeline 8" & Fittings | 51d | 2012-05-31 | 2012-07-20 |  | -0d | start on 2012-05-30 |
| PRP41 |  | Pipeline 18" & Fittings | 51d | 2012-05-31 | 2012-07-20 |  | 0d | start on 2012-05-31 |
| PRP51 |  | Pipeline 18" & Fittings | 51d | 2012-05-31 | 2012-07-20 |  | 0d | start on 2012-05-31 |
| PRP61 |  | Pipeline 18" & Fittings | 51d | 2012-05-31 | 2012-07-20 |  | 0d | start on 2012-05-31 |
| PRP71 |  | Pipeline 18" & Fittings | 51d | 2012-05-31 | 2012-07-20 |  | 0d | start on 2012-05-31 |
| PRP82 |  | Pipeline 8" & Fittings | 51d | 2012-05-31 | 2012-07-20 |  | -0d | start on 2012-05-30 |
| PRP92 |  | Pipeline 8" & Fittings | 51d | 2012-05-31 | 2012-07-20 |  | -0d | start on 2012-05-30 |
|  | 3 | **Piping Material** |  | 2012-05-08 | 2012-09-04 |  |  |  |
| PRT101 |  | Piping Bulk material 1st batch | 30d | 2012-05-08 | 2012-06-06 |  | -0d | start on 2012-05-07 |
| PRT121 |  | Piping Bulk material 1st batch | 30d | 2012-05-08 | 2012-06-06 |  | -0d | start on 2012-05-07 |
| PRT141 |  | Piping Bulk material 1st batch | 30d | 2012-05-08 | 2012-06-06 |  | -0d | start on 2012-05-07 |
| PRT81 |  | Piping Bulk material 1st batch | 30d | 2012-05-08 | 2012-06-06 |  | -0d | start on 2012-05-07 |
| PRT46 |  | Pressure Safety Valve | 44d | 2012-06-05 | 2012-07-18 |  | -0d | start on 2012-06-04 |
| PRT56 |  | Pressure Safety Valve | 44d | 2012-06-05 | 2012-07-18 |  | -0d | start on 2012-06-04 |
| PRT66 |  | Pressure Safety Valve | 44d | 2012-06-05 | 2012-07-18 |  | -0d | start on 2012-06-04 |
| PRT76 |  | Pressure Safety Valve | 44d | 2012-06-05 | 2012-07-18 |  | -0d | start on 2012-06-04 |
| PRT102 |  | Piping Bulk material 2nd batch | 30d | 2012-06-11 | 2012-07-10 |  | -0d | start on 2012-06-10 |
| PRT122 |  | Piping Bulk material 2nd batch | 30d | 2012-06-11 | 2012-07-10 |  | -0d | start on 2012-06-10 |
| PRT142 |  | Piping Bulk material 2nd batch | 30d | 2012-06-11 | 2012-07-10 |  | -0d | start on 2012-06-10 |
| PRT82 |  | Piping Bulk material 2nd batch | 30d | 2012-06-11 | 2012-07-10 |  | -0d | start on 2012-06-10 |
| PRT43 |  | Piping Valves Bulk material 1st batch | 14d | 2012-06-24 | 2012-07-07 |  | -0d | start on 2012-06-23 |

| ID | WBS | Task | Duration | Start | Finish | Total float | Constraint |
| --- | --- | --- | --- | --- | --- | --- | --- |
| PRT53 |  | Piping Valves Bulk material 1st batch | 14d | 2012-06-24 | 2012-07-07 | -0d | start on 2012-06-23 |
| PRT63 |  | Piping Valves Bulk material 1st batch | 14d | 2012-06-24 | 2012-07-07 | -0d | start on 2012-06-23 |
| PRT73 |  | Piping Valves Bulk material 1st batch | 14d | 2012-06-24 | 2012-07-07 | -0d | start on 2012-06-23 |
| PRT45 |  | Flanges | 45d | 2012-07-14 | 2012-08-27 | -0d | start on 2012-07-13 |
| PRT55 |  | Flanges | 45d | 2012-07-14 | 2012-08-27 | -0d | start on 2012-07-13 |
| PRT65 |  | Flanges | 45d | 2012-07-14 | 2012-08-27 | -0d | start on 2012-07-13 |
| PRT75 |  | Flanges | 45d | 2012-07-14 | 2012-08-27 | -0d | start on 2012-07-13 |
| PRT44 |  | Piping valves Bulk material 2nd batch | 14d | 2012-07-23 | 2012-08-05 | -0d | start on 2012-07-22 |
| PRT54 |  | Piping valves Bulk material 2nd batch | 14d | 2012-07-23 | 2012-08-05 | -0d | start on 2012-07-22 |
| PRT64 |  | Piping valves Bulk material 2nd batch | 14d | 2012-07-23 | 2012-08-05 | -0d | start on 2012-07-22 |
| PRT74 |  | Piping valves Bulk material 2nd batch | 14d | 2012-07-23 | 2012-08-05 | -0d | start on 2012-07-22 |
| PRT47 |  | Pressure regulator Valve | 30d | 2012-07-25 | 2012-08-23 | -0d | start on 2012-07-24 |
| PRT57 |  | Pressure regulator Valve | 30d | 2012-07-25 | 2012-08-23 | -0d | start on 2012-07-24 |
| PRT67 |  | Pressure regulator Valve | 30d | 2012-07-25 | 2012-08-23 | -0d | start on 2012-07-24 |
| PRT77 |  | Pressure regulator Valve | 30d | 2012-07-25 | 2012-08-23 | -0d | start on 2012-07-24 |
| PRT48 |  | Shutdown Valve | 31d | 2012-08-05 | 2012-09-04 | -0d | start on 2012-08-04 |
| PRT58 |  | Shutdown Valve | 31d | 2012-08-05 | 2012-09-04 | -0d | start on 2012-08-04 |
| PRT68 |  | Shutdown Valve | 31d | 2012-08-05 | 2012-09-04 | -0d | start on 2012-08-04 |
| PRT78 |  | Shutdown Valve | 31d | 2012-08-05 | 2012-09-04 | -0d | start on 2012-08-04 |
|  | 4 | **Equipment** |  | 2012-05-09 | 2012-08-11 |  |  |
| PRT49 |  | Chemical Injection PKG. | 45d | 2012-05-09 | 2012-06-22 | -0d | start on 2012-05-08 |
| PRT59 |  | Chemical Injection PKG. | 45d | 2012-05-09 | 2012-06-22 | -0d | start on 2012-05-08 |
| PRT69 |  | Chemical Injection PKG. | 45d | 2012-05-09 | 2012-06-22 | -0d | start on 2012-05-08 |
| PRT79 |  | Chemical Injection PKG. | 45d | 2012-05-09 | 2012-06-22 | -0d | start on 2012-05-08 |
| PRT50 |  | Launcher recivier | 45d | 2012-06-16 | 2012-07-30 | -0d | start on 2012-06-15 |
| PRT60 |  | Launcher recivier | 45d | 2012-06-16 | 2012-07-30 | -0d | start on 2012-06-15 |
| PRT70 |  | Launcher recivier | 45d | 2012-06-16 | 2012-07-30 | -0d | start on 2012-06-15 |
| PRT80 |  | Launcher recivier | 45d | 2012-06-16 | 2012-07-30 | -0d | start on 2012-06-15 |
| PRT111 |  | Vent KOD | 45d | 2012-06-28 | 2012-08-11 | -0d | start on 2012-06-27 |
| PRT112 |  | Open Drain Tank | 45d | 2012-06-28 | 2012-08-11 | -0d | start on 2012-06-27 |
| PRT131 |  | Vent KOD | 45d | 2012-06-28 | 2012-08-11 | -0d | start on 2012-06-27 |
| PRT132 |  | Open Drain Tank | 45d | 2012-06-28 | 2012-08-11 | -0d | start on 2012-06-27 |
| PRT151 |  | Vent KOD | 45d | 2012-06-28 | 2012-08-11 | -0d | start on 2012-06-27 |
| PRT152 |  | Open Drain Tank | 45d | 2012-06-28 | 2012-08-11 | -0d | start on 2012-06-27 |
| PRT91 |  | Vent KOD | 45d | 2012-06-28 | 2012-08-11 | -0d | start on 2012-06-27 |
| PRT92 |  | Open Drain Tank | 45d | 2012-06-28 | 2012-08-11 | -0d | start on 2012-06-27 |
|  | 5 | **E&I Material** |  | 2012-04-06 | 2012-09-16 |  |  |
|  | 1 | **Electrical Material** |  | 2012-05-24 | 2012-09-06 |  |  |
| PRE102 |  | Cathodic Protection | 45d | 2012-05-24 | 2012-07-07 | -0d | start on 2012-05-23 |
| PRE122 |  | Cathodic Protection | 45d | 2012-05-24 | 2012-07-07 | -0d | start on 2012-05-23 |
| PRE142 |  | Cathodic Protection | 45d | 2012-05-24 | 2012-07-07 | -0d | start on 2012-05-23 |
| PRE82 |  | Cathodic Protection | 45d | 2012-05-24 | 2012-07-07 | -0d | start on 2012-05-23 |
| PRE103 |  | Solar Power | 45d | 2012-06-04 | 2012-07-18 | -0d | start on 2012-06-03 |
| PRE123 |  | Solar Power | 45d | 2012-06-04 | 2012-07-18 | -0d | start on 2012-06-03 |
| PRE143 |  | Solar Power | 45d | 2012-06-04 | 2012-07-18 | -0d | start on 2012-06-03 |
| PRE83 |  | Solar Power | 45d | 2012-06-04 | 2012-07-18 | -0d | start on 2012-06-03 |
| PRE101 |  | Electrical Bulks | 45d | 2012-07-24 | 2012-09-06 | -0d | start on 2012-07-23 |
| PRE121 |  | Electrical Bulks | 45d | 2012-07-24 | 2012-09-06 | -0d | start on 2012-07-23 |
| PRE141 |  | Electrical Bulks | 45d | 2012-07-24 | 2012-09-06 | -0d | start on 2012-07-23 |
| PRE81 |  | Electrical Bulks | 45d | 2012-07-24 | 2012-09-06 | -0d | start on 2012-07-23 |
|  | 2 | **F&G Material** |  | 2012-06-28 | 2012-08-20 |  |  |
| PRE45 |  | Fire fighting system | 45d | 2012-06-28 | 2012-08-11 | -0d | start on 2012-06-27 |
| PRE55 |  | Fire fighting system | 45d | 2012-06-28 | 2012-08-11 | -0d | start on 2012-06-27 |
| PRE65 |  | Fire fighting system | 45d | 2012-06-28 | 2012-08-11 | -0d | start on 2012-06-27 |
| PRE75 |  | Fire fighting system | 45d | 2012-06-28 | 2012-08-11 | -0d | start on 2012-06-27 |
| PRE46 |  | Life Saving Equipment | 45d | 2012-07-05 | 2012-08-18 | -0d | start on 2012-07-04 |
| PRE56 |  | Life Saving Equipment | 45d | 2012-07-05 | 2012-08-18 | -0d | start on 2012-07-04 |
| PRE66 |  | Life Saving Equipment | 45d | 2012-07-05 | 2012-08-18 | -0d | start on 2012-07-04 |
| PRE76 |  | Life Saving Equipment | 45d | 2012-07-05 | 2012-08-18 | -0d | start on 2012-07-04 |
| PRE44 |  | F&G Detector | 45d | 2012-07-07 | 2012-08-20 | -0d | start on 2012-07-06 |
| PRE54 |  | F&G Detector | 45d | 2012-07-07 | 2012-08-20 | -0d | start on 2012-07-06 |
| PRE64 |  | F&G Detector | 45d | 2012-07-07 | 2012-08-20 | -0d | start on 2012-07-06 |
| PRE74 |  | F&G Detector | 45d | 2012-07-07 | 2012-08-20 | -0d | start on 2012-07-06 |
|  | 3 | **Telecom Material** |  | 2012-04-06 | 2012-07-19 |  |  |
| PRE48 |  | Navegation Aids | 45d | 2012-04-06 | 2012-05-20 | -0d | start on 2012-04-05 |
| PRE58 |  | Navegation Aids | 45d | 2012-04-06 | 2012-05-20 | -0d | start on 2012-04-05 |
| PRE68 |  | Navegation Aids | 45d | 2012-04-06 | 2012-05-20 | -0d | start on 2012-04-05 |
| PRE78 |  | Navegation Aids | 45d | 2012-04-06 | 2012-05-20 | -0d | start on 2012-04-05 |
| PRE47 |  | Radar system | 30d | 2012-06-20 | 2012-07-19 | -0d | start on 2012-06-19 |
| PRE57 |  | Radar system | 30d | 2012-06-20 | 2012-07-19 | -0d | start on 2012-06-19 |

| ID | WBS | Task | Duration | Start | Finish | Predecessors | Total float | Constraint |
| --- | --- | --- | --- | --- | --- | --- | --- | --- |
| PRE67 |  | Radar system | 30d | 2012-06-20 | 2012-07-19 |  | -0d | start on 2012-06-19 |
| PRE77 |  | Radar system | 30d | 2012-06-20 | 2012-07-19 |  | -0d | start on 2012-06-19 |
|  | 4 | **Instrument Material** |  | 2012-06-23 | 2012-09-16 |  |  |  |
| PRE111 |  | Field Instrument | 45d | 2012-06-23 | 2012-08-06 |  | -0d | start on 2012-06-22 |
| PRE131 |  | Field Instrument | 45d | 2012-06-23 | 2012-08-06 |  | -0d | start on 2012-06-22 |
| PRE151 |  | Field Instrument | 45d | 2012-06-23 | 2012-08-06 |  | -0d | start on 2012-06-22 |
| PRE91 |  | Field Instrument | 45d | 2012-06-23 | 2012-08-06 |  | -0d | start on 2012-06-22 |
| PRE112 |  | multi phase flow meter | 57d | 2012-07-18 | 2012-09-12 |  | -0d | start on 2012-07-17 |
| PRE132 |  | multi phase flow meter | 57d | 2012-07-18 | 2012-09-12 |  | -0d | start on 2012-07-17 |
| PRE152 |  | multi phase flow meter | 57d | 2012-07-18 | 2012-09-12 |  | -0d | start on 2012-07-17 |
| PRE50 |  | Instrument Mechanical Bulk | 35d | 2012-07-18 | 2012-08-21 |  | -0d | start on 2012-07-17 |
| PRE60 |  | Instrument Mechanical Bulk | 35d | 2012-07-18 | 2012-08-21 |  | -0d | start on 2012-07-17 |
| PRE70 |  | Instrument Mechanical Bulk | 35d | 2012-07-18 | 2012-08-21 |  | -0d | start on 2012-07-17 |
| PRE80 |  | Instrument Mechanical Bulk | 35d | 2012-07-18 | 2012-08-21 |  | -0d | start on 2012-07-17 |
| PRE92 |  | multi phase flow meter | 57d | 2012-07-18 | 2012-09-12 |  | -0d | start on 2012-07-17 |
| PRE49 |  | Instrument Electical Bulk | 30d | 2012-07-25 | 2012-08-23 |  | -0d | start on 2012-07-24 |
| PRE59 |  | Instrument Electical Bulk | 30d | 2012-07-25 | 2012-08-23 |  | -0d | start on 2012-07-24 |
| PRE69 |  | Instrument Electical Bulk | 30d | 2012-07-25 | 2012-08-23 |  | -0d | start on 2012-07-24 |
| PRE79 |  | Instrument Electical Bulk | 30d | 2012-07-25 | 2012-08-23 |  | -0d | start on 2012-07-24 |
| PRE113 |  | Safe Guard system | 30d | 2012-08-18 | 2012-09-16 |  | -0d | start on 2012-08-17 |
| PRE133 |  | Safe Guard system | 30d | 2012-08-18 | 2012-09-16 |  | -0d | start on 2012-08-17 |
| PRE153 |  | Safe Guard system | 30d | 2012-08-18 | 2012-09-16 |  | -0d | start on 2012-08-17 |
| PRE93 |  | Safe Guard system | 30d | 2012-08-18 | 2012-09-16 |  | -0d | start on 2012-08-17 |
|  | 6 | **Pre-Fabrication** |  | 2012-06-13 | 2012-11-08 |  |  |  |
| PF41 |  | Pre-Fabrication of Steel Structure ( Jacket & Piles) | 120d | 2012-06-13 | 2012-11-08 | ENS43 SS+14d, ENS44 FF+60d, PRS44 | 26d |  |
| PF51 |  | Pre-Fabrication of Steel Structure ( Jacket & Piles) | 120d | 2012-06-13 | 2012-11-08 | ENS53 SS+14d, ENS54 FF+60d, PRS54 | 26d |  |
| PF61 |  | Pre-Fabrication of Steel Structure ( Jacket & Piles) | 120d | 2012-06-13 | 2012-11-08 | ENS63 SS+14d, ENS64 FF+60d, PRS64 | 26d |  |
| PF71 |  | Pre-Fabrication of Steel Structure ( Jacket & Piles) | 120d | 2012-06-13 | 2012-11-08 | ENS73 SS+14d, ENS74 FF+60d, PRS74 | 26d |  |
|  | 4 | **Fabrication** |  | 2012-06-13 | 2013-03-30 |  |  |  |
|  | 1 | **Jacket and Piles Fabrication** |  | 2012-06-21 | 2013-01-22 |  |  |  |
| JK41 |  | Jacket , Boat Landing Fabrication & Painting | 175d | 2012-06-21 | 2013-01-22 | PF41 SS+7d | 26d |  |
| JK51 |  | Jacket , Boat Landing Fabrication & Painting | 175d | 2012-06-21 | 2013-01-22 | PF51 SS+7d | 26d |  |
| JK61 |  | Jacket , Boat Landing Fabrication & Painting | 175d | 2012-06-21 | 2013-01-22 | PF61 SS+7d | 26d |  |
| JK71 |  | Jacket , Boat Landing Fabrication & Painting | 175d | 2012-06-21 | 2013-01-22 | PF71 SS+7d | 26d |  |
| JK42 |  | Piles Fabrication & Marking | 125d | 2012-08-06 | 2013-01-08 | PF41 SS+45d | 74d |  |
| JK52 |  | Piles Fabrication & Marking | 125d | 2012-08-06 | 2013-01-08 | PF51 SS+45d | 74d |  |
| JK62 |  | Piles Fabrication & Marking | 125d | 2012-08-06 | 2013-01-08 | PF61 SS+45d | 74d |  |
| JK72 |  | Piles Fabrication & Marking | 125d | 2012-08-06 | 2013-01-08 | PF71 SS+45d | 74d |  |
|  | 3 | **P/L Spools Fabrication** |  | 2012-06-30 | 2012-10-17 |  |  |  |
| PL41 |  | P/L Spools Fabrication | 90d | 2012-06-30 | 2012-10-17 | PRP41 SS+30d, PRP82 FF+45d | 104d |  |
| PL51 |  | P/L Spools Fabrication | 90d | 2012-06-30 | 2012-10-17 | PRP51 SS+30d, PRP102 FF+45d | 104d |  |
| PL61 |  | P/L Spools Fabrication | 90d | 2012-06-30 | 2012-10-17 | PRP61 SS+30d, PRP122 FF+45d | 104d |  |
| PL71 |  | P/L Spools Fabrication | 90d | 2012-06-30 | 2012-10-17 | PRP71 SS+30d, PRP142 FF+45d | 104d |  |
|  | 2 | **Deck Fabrication** |  | 2012-06-13 | 2013-03-30 |  |  |  |
|  | 1 | **Deck Structure Fabrication** |  | 2012-06-13 | 2013-03-30 |  |  |  |
| DS051 |  | Fabrication and Painting of Below Production Deck/Legs | 105d | 2012-06-13 | 2012-10-18 | PRS44 | 0d |  |
| DS052 |  | Fabrication and Painting of Production Deck | 120d | 2012-06-13 | 2012-11-08 | DS051 SS | 0d |  |
| DS061 |  | Fabrication and Painting of Below Production Deck/Legs | 105d | 2012-06-13 | 2012-10-18 | PRS54 | 0d |  |
| DS062 |  | Fabrication and Painting of Production Deck | 120d | 2012-06-13 | 2012-11-08 | DS061 SS | 0d |  |
| DS071 |  | Fabrication and Painting of Below Production Deck/Legs | 105d | 2012-06-13 | 2012-10-18 | PRS64 | 0d |  |
| DS072 |  | Fabrication and Painting of Production Deck | 120d | 2012-06-13 | 2012-11-08 | DS071 SS | 0d |  |
| DS081 |  | Fabrication and Painting of Below Production Deck/Legs | 105d | 2012-06-13 | 2012-10-18 | PRS74 | 0d |  |
| DS082 |  | Fabrication and Painting of Production Deck | 120d | 2012-06-13 | 2012-11-08 | DS081 SS | 0d |  |
| DS091 |  | Fabrication and Painting of Below Production Deck/Legs | 105d | 2012-06-13 | 2012-10-18 |  | 0d |  |
| DS092 |  | Fabrication and Painting of Production Deck | 120d | 2012-06-13 | 2012-11-08 | DS091 SS | 0d |  |
| DS053 |  | Fabrication and Paint of Heli-Deck ( & Lifting if Required) | 120d | 2012-08-27 | 2013-01-20 | DS052 SS+60d | 50d |  |
| DS063 |  | Fabrication and Paint of Heli-Deck ( & Lifting if Required) | 120d | 2012-08-27 | 2013-01-20 | DS062 SS+60d | 50d |  |
| DS073 |  | Fabrication and Paint of Heli-Deck ( & Lifting if Required) | 120d | 2012-08-27 | 2013-01-20 | DS072 SS+60d | 50d |  |
| DS083 |  | Fabrication and Paint of Heli-Deck ( & Lifting if Required) | 120d | 2012-08-27 | 2013-01-20 | DS082 SS+60d | 50d |  |
| DS093 |  | Fabrication and Paint of Heli-Deck ( & Lifting if Required) | 120d | 2012-08-27 | 2013-01-20 | DS092 SS+60d | 50d |  |
| DS056 |  | Fabrication & Installation of Deck Str. Miscellence / Padeyes | 120d | 2012-10-04 | 2013-03-02 | DS057 FF+6d, DS055 FF+30d | 10d |  |
| DS066 |  | Fabrication & Installation of Deck Str. Miscellence / Padeyes | 120d | 2012-10-04 | 2013-03-02 | DS067 FF+6d, DS065 FF+30d | 10d |  |
| DS076 |  | Fabrication & Installation of Deck Str. Miscellence / Padeyes | 120d | 2012-10-04 | 2013-03-02 | DS077 FF+6d, DS075 FF+30d | 10d |  |
| DS086 |  | Fabrication & Installation of Deck Str. Miscellence / Padeyes | 120d | 2012-10-04 | 2013-03-02 | DS087 FF+6d, DS085 FF+30d | 10d |  |
| DS096 |  | Fabrication & Installation of Deck Str. Miscellence / Padeyes | 120d | 2012-10-04 | 2013-03-02 | DS097 FF+6d, DS095 FF+30d | 10d |  |
| DS054 |  | Lifting Below Production Deck on High Cups | 5d | 2012-10-20 | 2012-10-24 | DS051 | 3d |  |
| DS064 |  | Lifting Below Production Deck on High Cups | 5d | 2012-10-20 | 2012-10-24 | DS061 | 3d |  |
| DS074 |  | Lifting Below Production Deck on High Cups | 5d | 2012-10-20 | 2012-10-24 | DS071 | 3d |  |
| DS084 |  | Lifting Below Production Deck on High Cups | 5d | 2012-10-20 | 2012-10-24 | DS081 | 3d |  |
| DS094 |  | Lifting Below Production Deck on High Cups | 5d | 2012-10-20 | 2012-10-24 | DS091 | 3d |  |

| ID | WBS | Task | Duration | Start | Finish | Predecessors | Total float | Constraint |
| --- | --- | --- | --- | --- | --- | --- | --- | --- |
| DS055 |  | Lifting Production Deck on Below Production Level | 15d | 2012-11-10 | 2012-11-27 | DS052, TSF053 | 0d |  |
| DS065 |  | Lifting Production Deck on Below Production Level | 15d | 2012-11-10 | 2012-11-27 | DS062, TSF063 | 0d |  |
| DS075 |  | Lifting Production Deck on Below Production Level | 15d | 2012-11-10 | 2012-11-27 | DS072, TSF073 | 0d |  |
| DS085 |  | Lifting Production Deck on Below Production Level | 15d | 2012-11-10 | 2012-11-27 | DS082, TSF083 | 0d |  |
| DS095 |  | Lifting Production Deck on Below Production Level | 15d | 2012-11-10 | 2012-11-27 | DS092 | 0d |  |
| DS057 |  | Physical Weighting | 0d | 2013-02-23 | 2013-02-23 | TSF042 | 10d |  |
| DS067 |  | Physical Weighting | 0d | 2013-02-23 | 2013-02-23 | TSF052 | 10d |  |
| DS077 |  | Physical Weighting | 0d | 2013-02-23 | 2013-02-23 | TSF062 | 10d |  |
| DS087 |  | Physical Weighting | 0d | 2013-02-23 | 2013-02-23 | TSF072 | 10d |  |
| DS097 |  | Physical Weighting | 0d | 2013-02-23 | 2013-02-23 |  | 10d |  |
| DS048 |  | Clearanse of structure (Fab. & Painting ) Punch List | 21d | 2013-03-06 | 2013-03-30 | TS48 FF, DS056 | 7d |  |
| DS058 |  | Clearanse of structure (Fab. & Painting ) Punch List | 21d | 2013-03-06 | 2013-03-30 | TS58 FF, DS066 | 7d |  |
| DS068 |  | Clearanse of structure (Fab. & Painting ) Punch List | 21d | 2013-03-06 | 2013-03-30 | TS68 FF, DS076 | 7d |  |
| DS078 |  | Clearanse of structure (Fab. & Painting ) Punch List | 21d | 2013-03-06 | 2013-03-30 | TS78 FF, DS086 | 7d |  |
|  | 2 | **TSF Fabrication and Erection** |  | 2012-07-21 | 2013-03-30 |  |  |  |
|  | 1 | **Piping fabrication & erection** |  | 2012-07-21 | 2013-02-23 |  |  |  |
| TFS041 |  | Piping and Piping Supports Fabrication and Painting | 100d | 2012-07-21 | 2012-11-24 | ENT43, PRT81 SS+7d, PRT82 FF+30d, PRT45 SS+6d, PRT43 FF+15d, PRT44 FF+15d | 40d |  |
| TFS051 |  | Piping and Piping Supports Fabrication and Painting | 100d | 2012-07-21 | 2012-11-24 | ENT53, PRT101 SS+7d, PRT102 FF+30d, PRT55 SS+6d, PRT53 FF+15d, PRT54 FF+15d | 40d |  |
| TFS061 |  | Piping and Piping Supports Fabrication and Painting | 100d | 2012-07-21 | 2012-11-24 | ENT63, PRT121 SS+7d, PRT122 FF+30d, PRT65 SS+6d, PRT63 FF+15d, PRT64 FF+15d | 40d |  |
| TFS071 |  | Piping and Piping Supports Fabrication and Painting | 100d | 2012-07-21 | 2012-11-24 | ENT73, PRT141 SS+7d, PRT142 FF+30d, PRT75 SS+6d, PRT73 FF+15d, PRT74 FF+15d | 40d |  |
| TSF042 |  | Piping and Piping Supports Erection | 75d | 2012-11-25 | 2013-02-23 | DS054, TFS041 SS+60d, DS055 SS+12d, PRT46 FF+30d, PRT47 FF+30d, PRT48 FF+30d, TSF054 FF+30d | 0d |  |
| TSF052 |  | Piping and Piping Supports Erection | 75d | 2012-11-25 | 2013-02-23 | DS064, TFS051 SS+60d, DS065 SS+12d, PRT56 FF+30d, PRT57 FF+30d, PRT58 FF+30d, TSF064 FF+30d | 0d |  |
| TSF062 |  | Piping and Piping Supports Erection | 75d | 2012-11-25 | 2013-02-23 | DS074, TFS061 SS+60d, DS075 SS+12d, PRT66 FF+30d, PRT67 FF+30d, PRT68 FF+30d, TSF074 FF+30d | 0d |  |
| TSF072 |  | Piping and Piping Supports Erection | 75d | 2012-11-25 | 2013-02-23 | DS084, TFS071 SS+60d, DS085 SS+12d, PRT76 FF+30d, PRT77 FF+30d, PRT78 FF+30d, TSF084 FF+30d | 0d |  |
|  | 2 | **Equipment erection** |  | 2012-10-29 | 2012-12-23 |  |  |  |
| TSF053 |  | Equipment Erection on Below Production Level | 7d | 2012-10-29 | 2012-11-05 | ENS48, DS054, PRT92 | 3d |  |
| TSF063 |  | Equipment Erection on Below Production Level | 7d | 2012-10-29 | 2012-11-05 | ENS58, DS064, PRT112 | 3d |  |
| TSF073 |  | Equipment Erection on Below Production Level | 7d | 2012-10-29 | 2012-11-05 | ENS68, DS074, PRT132 | 3d |  |
| TSF083 |  | Equipment Erection on Below Production Level | 7d | 2012-10-29 | 2012-11-05 | ENS78, DS084, PRT152 | 3d |  |
| TSF093 |  | Equipment Erection on Below Production Level | 7d | 2012-10-29 | 2012-11-05 |  | 3d |  |
| TSF054 |  | Equipment Erection on Production Level | 15d | 2012-11-28 | 2012-12-15 | DS055, ENS48, PRT49, PRT50, PRT91 | 27d |  |
| TSF064 |  | Equipment Erection on Production Level | 15d | 2012-11-28 | 2012-12-15 | DS065, ENS58, PRT59, PRT60, PRT111 | 27d |  |
| TSF074 |  | Equipment Erection on Production Level | 15d | 2012-11-28 | 2012-12-15 | DS075, ENS68, PRT69, PRT70, PRT131 | 27d |  |
| TSF084 |  | Equipment Erection on Production Level | 15d | 2012-11-28 | 2012-12-15 | DS085, ENS78, PRT79, PRT80, PRT151 | 27d |  |
| TSF094 |  | Equipment Erection on Production Level | 15d | 2012-11-28 | 2012-12-15 |  | 27d |  |
| TSF055 |  | Equipment Erection on Helideck | 7d | 2012-12-16 | 2012-12-23 | ENS48, DS053 SS+90d, PRE83 | 50d |  |
| TSF065 |  | Equipment Erection on Helideck | 7d | 2012-12-16 | 2012-12-23 | ENS58, DS063 SS+90d, PRE103 | 50d |  |
| TSF075 |  | Equipment Erection on Helideck | 7d | 2012-12-16 | 2012-12-23 | ENS68, DS073 SS+90d, PRE123 | 50d |  |
| TSF085 |  | Equipment Erection on Helideck | 7d | 2012-12-16 | 2012-12-23 | ENS78, DS083 SS+90d, PRE143 | 50d |  |
| TSF095 |  | Equipment Erection on Helideck | 7d | 2012-12-16 | 2012-12-23 |  | 50d |  |
|  | 3 | **E&I Activies** |  | 2012-11-10 | 2013-02-26 |  |  |  |
| TS47 |  | E&I Activity | 90d | 2012-11-10 | 2013-02-26 | ENE41 SS+7d, TSF042 FF+3d, DS055 FF+45d, PRE81, PRE82, PRE83, PRE44, PRE45, PRE46, PRE47, PRE48, PRE49, PRE50, PRE91, PRE92 FF+30d, PRE93 FF+30d | 2d |  |
| TS57 |  | E&I Activity | 90d | 2012-11-10 | 2013-02-26 | ENE51 SS+7d, TSF052 FF+3d, DS065 FF+45d, PRE101, PRE102, PRE103, PRE54, PRE55, PRE56, PRE57, PRE58, PRE59, PRE60, PRE111, PRE112 FF+30d, PRE113 FF+30d | 2d |  |
| TS67 |  | E&I Activity | 90d | 2012-11-10 | 2013-02-26 | ENE61 SS+7d, TSF062 FF+3d, DS075 FF+45d, PRE121, PRE122, PRE123, PRE64, PRE65, PRE66, PRE67, PRE68, PRE69, PRE70, PRE131, PRE132 FF+30d, PRE133 FF+30d | 2d |  |
| TS77 |  | E&I Activity | 90d | 2012-11-10 | 2013-02-26 | ENE71 SS+7d, TSF072 FF+3d, DS085 FF+45d, PRE141, PRE142, PRE143, PRE74, PRE75, PRE76, PRE77, PRE78, PRE79, PRE80, PRE151, PRE152 FF+30d, PRE153 FF+30d | 2d |  |
|  | 4 | **Pre-commissioning** |  | 2013-02-18 | 2013-03-30 |  |  |  |
| TS48 |  | Pre-commissioning " Piping Hydrotest , Reinstatment , Megering , Continuity Test and Touch Up " | 35d | 2013-02-18 | 2013-03-30 | TSF055 FF+30d, TSF042 FF+30d, TS47 FF+25d | 0d |  |
| TS58 |  | Pre-commissioning " Piping Hydrotest , Reinstatment , Megering , Continuity Test and Touch Up " | 35d | 2013-02-18 | 2013-03-30 | TSF065 FF+30d, TSF052 FF+30d, TS57 FF+25d | 0d |  |
| TS68 |  | Pre-commissioning " Piping Hydrotest , Reinstatment , Megering , Continuity Test and Touch Up " | 35d | 2013-02-18 | 2013-03-30 | TSF075 FF+30d, TSF062 FF+30d, TS67 FF+25d | 0d |  |
| TS78 |  | Pre-commissioning " Piping Hydrotest , Reinstatment , Megering , Continuity Test and Touch Up " | 35d | 2013-02-18 | 2013-03-30 | TSF085 FF+30d, TSF072 FF+30d, TS77 FF+25d | 0d |  |
|  | 5 | **L/O & Sea Fastening** |  | 2012-09-15 | 2013-04-07 |  |  |  |
|  | 3 | **01st Trip (P/L Spools 18" & 8")** |  | 2012-09-15 | 2012-10-22 |  |  |  |
| LOPS101 |  | Arrival of 01st Shipment Material Barge ( P/L Spools) | 0d | 2012-09-15 | 2012-09-15 |  | 0d | start on 2012-09-15 |
| LOPS111 |  | Arrival of 01st Shipment Material Barge ( P/L Spools) | 0d | 2012-09-15 | 2012-09-15 |  | 0d | start on 2012-09-15 |
| LOPS81 |  | Arrival of 01st Shipment Material Barge ( P/L Spools) | 0d | 2012-09-15 | 2012-09-15 |  | 0d | start on 2012-09-15 |
| LOPS91 |  | Arrival of 01st Shipment Material Barge ( P/L Spools) | 0d | 2012-09-15 | 2012-09-15 |  | 0d | start on 2012-09-15 |
| LOPS102 |  | 1st Shipment Material Barge Preparation | 12d | 2012-10-03 | 2012-10-17 | LOPS101, PL61 FF | 136d |  |
| LOPS112 |  | 1st Shipment Material Barge Preparation | 12d | 2012-10-03 | 2012-10-17 | LOPS111, PL71 FF | 136d |  |
| LOPS82 |  | 1st Shipment Material Barge Preparation | 12d | 2012-10-03 | 2012-10-17 | LOPS81, PL41 FF | 136d |  |
| LOPS92 |  | 1st Shipment Material Barge Preparation | 12d | 2012-10-03 | 2012-10-17 | LOPS91, PL51 FF | 136d |  |
| LOPS103 |  | L/O & Sea Fastening (P/L Spools 18" & 8") | 4d | 2012-10-18 | 2012-10-22 | LOPS102, PL61 | 136d |  |
| LOPS113 |  | L/O & Sea Fastening (P/L Spools 18" & 8") | 4d | 2012-10-18 | 2012-10-22 | LOPS112, PL71 | 136d |  |
| LOPS83 |  | L/O & Sea Fastening (P/L Spools 18" & 8") | 4d | 2012-10-18 | 2012-10-22 | LOPS82, PL41 | 136d |  |
| LOPS93 |  | L/O & Sea Fastening (P/L Spools 18" & 8") | 4d | 2012-10-18 | 2012-10-22 | LOPS92, PL51 | 136d |  |
|  | 1 | **02nd Trip (Jacket & Piles)** |  | 2012-12-01 | 2013-01-31 |  |  |  |
| LOJK101 |  | Arrival of 02nd Shipment Material Barge ( Jacket and Piles ) | 0d | 2012-12-01 | 2012-12-01 |  | 0d | start on 2012-12-01 |
| LOJK111 |  | Arrival of 02nd Shipment Material Barge ( Jacket and Piles ) | 0d | 2012-12-01 | 2012-12-01 |  | 0d | start on 2012-12-01 |
| LOJK81 |  | Arrival of 02nd Shipment Material Barge ( Jacket and Piles ) | 0d | 2012-12-01 | 2012-12-01 |  | 0d | start on 2012-12-01 |
| LOJK91 |  | Arrival of 02nd Shipment Material Barge ( Jacket and Piles ) | 0d | 2012-12-01 | 2012-12-01 |  | 0d | start on 2012-12-01 |
| LOJK102 |  | 02nd Shipment Material Barge Preparation | 12d | 2013-01-09 | 2013-01-22 | JK61 FF, PL61 FF, LOJK101, LOJK101 SS | 26d |  |

| ID | WBS | Task | Duration | Start | Finish | Predecessors | Total float | Constraint |
| --- | --- | --- | --- | --- | --- | --- | --- | --- |
| LOJK112 |  | 02nd Shipment Material Barge Preparation | 12d | 2013-01-09 | 2013-01-22 | JK71 FF, PL71 FF, LOJK111, LOJK111 SS | 26d |  |
| LOJK82 |  | 02nd Shipment Material Barge Preparation | 12d | 2013-01-09 | 2013-01-22 | JK41 FF, PL41 FF, LOJK81, LOJK81 SS | 26d |  |
| LOJK92 |  | 02nd Shipment Material Barge Preparation | 12d | 2013-01-09 | 2013-01-22 | JK51 FF, PL51 FF, LOJK91, LOJK91 SS | 26d |  |
| LOJK103 |  | L/O & Sea fastening ( Jacket & Piles ) | 7d | 2013-01-23 | 2013-01-31 | LOJK102 | 26d |  |
| LOJK113 |  | L/O & Sea fastening ( Jacket & Piles ) | 7d | 2013-01-23 | 2013-01-31 | LOJK112 | 26d |  |
| LOJK83 |  | L/O & Sea fastening ( Jacket & Piles ) | 7d | 2013-01-23 | 2013-01-31 | LOJK82 | 26d |  |
| LOJK93 |  | L/O & Sea fastening ( Jacket & Piles ) | 7d | 2013-01-23 | 2013-01-31 | LOJK92 | 26d |  |
|  | 2 | **03rd Trip ( Deck)** |  | 2013-03-02 | 2013-04-07 |  |  |  |
| LODK101 |  | Arrival of 03rd Shipment Material Barge ( Deck C/W TSF ) | 0d | 2013-03-02 | 2013-03-02 |  | -0d | start on 2013-03-01 |
| LODK111 |  | Arrival of 03rd Shipment Material Barge ( Deck C/W TSF ) | 0d | 2013-03-02 | 2013-03-02 |  | -0d | start on 2013-03-01 |
| LODK81 |  | Arrival of 03rd Shipment Material Barge ( Deck C/W TSF ) | 0d | 2013-03-02 | 2013-03-02 |  | -0d | start on 2013-03-01 |
| LODK91 |  | Arrival of 03rd Shipment Material Barge ( Deck C/W TSF ) | 0d | 2013-03-02 | 2013-03-02 |  | -0d | start on 2013-03-01 |
| LODK102 |  | 3rd Shipment Material Barge Preparation | 12d | 2013-03-17 | 2013-03-30 | TS68 FF, LODK101 | 0d |  |
| LODK112 |  | 3rd Shipment Material Barge Preparation | 12d | 2013-03-17 | 2013-03-30 | TS78 FF, LODK111 | 0d |  |
| LODK82 |  | 3rd Shipment Material Barge Preparation | 12d | 2013-03-17 | 2013-03-30 | TS48 FF, LODK81 | 0d |  |
| LODK92 |  | 3rd Shipment Material Barge Preparation | 12d | 2013-03-17 | 2013-03-30 | TS58 FF, LODK91 | 0d |  |
| LODK103 |  | L/O & Sea fastening ( Deck) | 7d | 2013-03-31 | 2013-04-07 | LODK102 | 0d |  |
| LODK113 |  | L/O & Sea fastening ( Deck) | 7d | 2013-03-31 | 2013-04-07 | LODK112 | 0d |  |
| LODK83 |  | L/O & Sea fastening ( Deck) | 7d | 2013-03-31 | 2013-04-07 | LODK82 | 0d |  |
| LODK93 |  | L/O & Sea fastening ( Deck) | 7d | 2013-03-31 | 2013-04-07 | LODK92 | 0d |  |
|  | 4 | **Construction supervision** |  |  |  |  |  |  |
|  | 5 | **Pre-commissioning & Commissioning** |  |  |  |  |  |  |
|  | 6 | **(New WBS)** |  |  |  |  |  |  |

## Version 2 (data date 2012-07-05, saved 2012-10-10, file hela-2l.xer)

Note of the change: Merge branch 'gagankumarba:main' into main

Last finish 2013-09-26 → 2014-11-02 (+402d). Complete tasks 555 → 667.

Added:

| ID | Task | Duration | Start | Finish | Predecessors | Constraint |
| --- | --- | --- | --- | --- | --- | --- |
| I001 | FEED | 255d | 2010-10-20 A | 2011-07-04 A |  |  |
| I101 | Facilities basis of design BOD | 10d | 2010-11-15 A | 2010-11-28 A |  |  |
| I014 | FEED HAZOP | 5d | 2010-12-01 A | 2010-12-07 A |  |  |
| I102 | Project Execution Plan PEP | 10d | 2011-02-07 A | 2011-02-20 A |  |  |
| I103 | Project Management Team PMT Organization Structure | 5d | 2011-02-21 A | 2011-02-27 A |  |  |
| I104 | Integrated master control schedule | 20d | 2011-02-21 A | 2011-03-20 A |  |  |
| I013 | Define Project Risk Management Process | 5d | 2011-03-01 A | 2011-03-07 A |  |  |
| I015 | Define constructabilty review workshop | 5d | 2011-03-15 A | 2011-03-21 A |  |  |
| I106 | Project detailed cost estimate and risk anslysis | 20d | 2011-03-21 A | 2011-04-17 A |  |  |
| I016 | Define Combined engineering discipline review(EDR/PSH( | 5d | 2011-04-04 A | 2011-04-11 A |  |  |
| I107 | Internal benchmarking | 10d | 2011-04-18 A | 2011-05-01 A |  |  |
| I109 | Management of Change MoC process | 10d | 2011-05-02 A | 2011-05-15 A |  |  |
| I110 | ETP Deviation register | 10d | 2011-05-16 A | 2011-05-28 A |  |  |
| I112 | Project Review Report | 10d | 2011-06-01 A | 2011-06-14 A |  |  |
| I114 | Project HSSE Management Plan | 5d | 2011-06-15 A | 2011-06-21 A |  |  |
| I116 | Develop HSSE KPI's | 5d | 2011-06-22 A | 2011-06-28 A |  |  |
| I018 | Define Project Services Cost estimate and schedule review | 20d | 2011-06-23 A | 2011-07-20 A |  |  |
| I118 | Risk Management Plan RMP | 20d | 2011-06-29 A | 2011-07-26 A |  |  |
| I002 | Pipelines inspection program | 108d | 2011-07-05 A | 2012-01-24 A |  |  |
| I006 | Negotiate/award Engineering and procurement services contract | 18d | 2011-07-15 A | 2011-07-29 A |  |  |
| I020 | Define Independent external benchmarking review | 5d | 2011-07-20 A | 2011-07-27 A |  |  |
| I022 | Define Project Services discipline review PSDR | 10d | 2011-07-21 A | 2011-08-03 A |  |  |
| I120 | Planning and scheduling procedures | 20d | 2011-07-27 A | 2011-08-23 A |  |  |
| I008 | Issue letter of award to Enppi | 0d | 2011-07-28 A | 2011-07-28 A |  |  |
| I010 | Issue RFQ structural steel to PJ | 60d | 2011-07-31 A | 2011-10-20 A |  |  |
| I023 | Wells discipline review | 9d | 2011-08-17 A | 2011-08-29 A |  |  |
| I122 | Project Controls system PCS | 10d | 2011-08-24 A | 2011-09-06 A |  |  |
| I024 | Execute detailed engineering PHSSER | 5d | 2011-10-10 A | 2011-10-16 A |  |  |
| I011 | Structural steel engineering | 36d | 2011-10-23 A | 2011-12-11 A |  |  |
| I012 | Clarify/evaluate/approve PJ offer | 24d | 2011-10-23 A | 2011-11-23 A |  |  |
| I128 | Shutdown and control phylosophy | 20d | 2012-04-04 A | 2012-05-01 A |  |  |
| I130 | Commissioning and Operation phylosophy | 10d | 2012-05-02 A | 2012-05-15 A |  |  |
| I132 | Design hazard management plan | 10d | 2012-05-16 A | 2012-05-29 A |  |  |
| I133 | Offshore installation phylosophy | 5d | 2012-05-30 A | 2012-06-05 A |  |  |
| I134 | Hazards register | 5d | 2012-06-06 A | 2012-06-12 A |  |  |
| I135 | Design Safety Case | 5d | 2012-06-13 A | 2012-06-19 A |  |  |
| I136 | HAZOP review | 5d | 2012-06-20 A | 2012-07-05 |  |  |
| I137 | SIL and CIL review | 2d | 2012-07-05 | 2012-07-08 |  | start on 2012-06-27 |
| I138 | HAZID report approval | 10d | 2012-07-05 | 2012-07-18 |  | start on 2012-07-01 |
| I139 | Maintenance Philosophy approval | 10d | 2012-07-15 | 2012-07-26 |  | start on 2012-07-15 |
| I140 | Guidance on Certification (GOC) approval | 5d | 2012-07-29 | 2012-08-02 |  | start on 2012-07-29 |
| I141 | Project close-out framework | 5d | 2012-08-05 | 2012-08-09 |  | start on 2012-08-05 |
| I025 | Execute Construction project PHSSER | 5d | 2012-09-11 | 2012-09-17 |  | start on 2012-09-11 |
| I026 | Fabrication risk management workshop | 5d | 2012-09-18 | 2012-09-24 |  | start on 2012-09-18 |
| I030 | Execute start up efficency review SUER | 5d | 2012-09-18 | 2012-09-24 |  | start on 2012-09-18 |
| I028 | Execute constructabilty review workshop | 5d | 2012-10-16 | 2012-10-29 |  | start on 2012-10-16 |
| I029 | Execute project risk management workshop | 5d | 2012-11-06 | 2012-11-12 |  | start on 2012-11-06 |
| I032 | Wells discipline review | 5d | 2012-12-04 | 2012-12-10 |  | start on 2012-12-04 |
| I034 | Execute pre-startup safety review | 5d | 2013-04-21 | 2013-04-25 |  | start on 2013-04-19 |
| I033 | Execute pre-startup project PHSSER | 5d | 2013-04-30 | 2013-05-06 |  | start on 2013-04-30 |
| I035 | Execute Independent external Go/No go Audit | 5d | 2013-06-25 | 2013-07-01 |  | start on 2013-06-25 |
| I036 | Subsurface MoC | 5d | 2013-07-02 | 2013-07-08 |  | start on 2013-07-02 |
| I037 | Operate Independent external project close-out review | 5d | 2013-11-11 | 2013-11-17 |  | start on 2013-11-11 |
| I038 | Operate early operability review EOR | 5d | 2014-10-27 | 2014-11-02 |  | start on 2014-10-27 |
| 4229ELP1000 | Riser impact risk assessment study -IFA | 1d | 2012-02-15 A | 2012-02-27 A |  |  |
| 4229ELP1010 | Final Riser impact risk assessment study | 5d | 2012-02-28 A | 2012-05-10 A |  |  |
| 4229EPI210 | Line designation table -Approval | 6d | 2011-10-24 A | 2012-01-02 A | 4229PTR90 SS+30d, 4229EPR40 |  |
| 4229EPI110 | Issue plot plans-Approval | 10d | 2011-10-26 A | 2011-11-21 A | 4229PPV20, 4229EPR40 |  |
| 4229EPI220 | Issue plot plans-Design | 15d | 2011-12-20 A | 2012-01-05 A | 4229EPI190, 4229EPI280 FF+5d, 4229EPI110 FS+5d, 4229EPR120 |  |
| 4229EPI430 | Issue ISO's -construction (first batch) | 11d | 2012-07-19 | 2012-08-02 | 4229EPI390 |  |
| 4229EPI460 | Issue ISO's -construction (Second batch)- Final MTO | 10d | 2012-08-05 | 2012-08-16 | 4229EPI430 |  |
| 4229EPI510 | Issue GA`s- Construction | 5d | 2012-08-26 | 2012-08-30 | 4229EPI460 |  |
| 4229EPI100 | Issue MRQ for L&R traps | 7d | 2011-08-15 A | 2011-08-23 A | 4229EPI40, 4229GM10 |  |
| 4229EPI120 | Issue MRQ for Piping bulk | 8d | 2011-11-15 A | 2011-11-24 A | 4229EPR120, 4229EPI20 FS+5d, 4229GM10, 4229EPR80 FF+4d |  |
| 4229EPI130 | Thermal insulation specification | 5d | 2011-11-21 A | 2011-11-24 A | 4229EPI80 FF, 4229EPI200 SS, 4229EPI100, 4229EPI120 |  |
| 4229EPI140 | Field test of piping specification. | 5d | 2011-11-21 A | 2011-11-24 A | 4229PPB60, 4229EPI150 |  |
| 4229EPI150 | Piping fabrication and erection specification | 5d | 2011-11-21 A | 2011-11-27 A | 4229PPV60, 4229EPI130 |  |
| 4229EPI200 | Issue MRQ for Ball valves | 5d | 2011-11-24 A | 2011-12-08 A | 4229EPI160, 4229EPR40, 4229GM10 |  |
| 4229EPI340 | MRQ for Additional Piping Ball valves | 4d | 2012-05-20 A | 2012-05-24 A | 4229EPR80 |  |
| 4229EPI350 | MRQ for Additional Piping Gate,Globe & Butterfly valves | 4d | 2012-05-20 A | 2012-05-24 A | 4229EPR80 |  |
| 4229EPI470 | MRP for additional Piping Ball valves | 5d | 2012-08-13 | 2012-08-26 | 4229PAB70 |  |
| 4229EPI480 | MRP for Additional Piping Gate,Globe & Butterfly valves | 5d | 2012-08-13 | 2012-08-26 | 4229PAV70 |  |
| 4229PFG50 | P.O for Fire & gas detectors | 5d | 2012-06-03 A | 2012-06-05 A | 4229ELP570 |  |
| 4229PFG60 | Fabrication upto R.F.S | 84d | 2012-06-07 A | 2012-08-26 | 4229PFG40, 4229PFG55, 4229PFG50 |  |
| 4229PFF15 | Re-issue RFQ for Fire Fighting | 1d | 2012-03-01 A | 2012-03-03 A | 4229PFF10 |  |
| 4229PFF60 | L.C issued by Gupco | 5d | 2012-07-15 | 2012-07-19 | 4229PFF40, 4229PFF55 |  |
| 4229PFF65 | Fabrication upto R.F.S | 84d | 2012-07-20 | 2012-10-23 | 4229PFF55, 4229PFF60 |  |
| 4229PLS10 | Issue RFQ for Life saving equipment | 2d | 2012-01-05 A | 2012-01-05 A | 4229ELP590 | start on or after 2012-01-05 |
| 4229PLS15 | Bidding Life saving equipment | 25d | 2012-01-09 A | 2012-02-28 A | 4229PLS10 | start on or after 2012-01-09 |
| 4229PLS30 | Fabrication upto R.F.S | 90d | 2012-05-23 A | 2012-05-23 A | 4229PLS50, 4229PLS65 |  |
| 4229PLS35 | Delivery upto site | 45d | 2012-05-23 A | 2012-05-23 A | 4229PLS30 |  |
| 4229PLS50 | L.C issued by Gupco | 5d | 2012-05-23 A | 2012-05-23 A | 4229PLS65 |  |
| 4229PLS55 | commercial evaluation & bid committee for Life saving equipment | 10d | 2012-05-23 A | 2012-05-23 A | 4229PLS40 |  |
| 4229PLS60 | F.O.C for Life saving equipment | 3d | 2012-05-23 A | 2012-05-23 A | 4229PLS55, 4229PLS45 |  |
| 4229PLS65 | P.O for Life saving equipment | 5d | 2012-05-23 A | 2012-05-23 A | 4229ELP610 |  |
| 4229PAP210 | Delivery upto site (Air Freight) | 10d | 2012-10-15 | 2012-10-24 | 4229PAP200 |  |
| 4229PPV25 | T.E.R for Piping valves | 21d | 2012-01-12 A | 2012-02-08 A | 4229EPI260 FF, 4229EPI260 SS |  |
| 4229PPV65 | MRP for Piping valves | 4d | 2012-04-08 A | 2012-04-12 A | 4229EPI310 FF, 4229EPI310 SS |  |
| 4229PTR25 | T.E.R for L&R | 15d | 2011-09-22 A | 2011-12-04 A | 4229EPI160 FF, 4229EPI160 SS |  |
| 4229PTR65 | MRP for L&R | 5d | 2012-02-09 A | 2012-02-19 A | 4229EPI290 SS, 4229EPI290 FF |  |
| 4229PIB1015 | T.E.R for Instrument electrical bulk | 15d | 2012-03-26 A | 2012-06-03 A | 4229EIN360 SS, 4229EIN360 FF |  |
| 37 | **Additional Piping Gate,Globe & Butterfly valves** |  | 2012-05-27 | 2013-01-28 |  |  |
| 4229PAV10 | Issue RFQ for Additional Piping Gate,Globe & Butterfly valves | 1d | 2012-05-27 A | 2012-05-27 A | 4229EPI350 |  |
| 4229PAV20 | Bidding for Piping Gate,Globe & Butterfly valves | 1d | 2012-05-28 A | 2012-06-14 A | 4229PAV10 |  |
| 4229PAV30 | T.E.R for Additional Piping Gate,Globe & Butterfly valves | 25d | 2012-06-18 A | 2012-07-15 | 4229PAV20 |  |
| 4229PAV40 | Receive revised commercial offers | 5d | 2012-07-16 | 2012-07-22 | 4229PAV30 |  |
| 4229PAV50 | commercial evaluation & bid committee for Piping Gate,Globe & Butterfly valves | 10d | 2012-07-23 | 2012-08-05 | 4229PAV40 |  |
| 4229PAV60 | Client approval on bid committee reccomendation | 2d | 2012-08-06 | 2012-08-07 | 4229PAV50 |  |
| 4229PAV70 | F.O.C for Piping Gate,Globe & Butterfly valves | 3d | 2012-08-08 | 2012-08-12 | 4229PAV60 |  |
| 4229PAV80 | MRP for Piping Gate,Globe & Butterfly valves | 5d | 2012-08-13 | 2012-08-26 | 4229PAV70, 4229EPI480 |  |
| 4229PAV90 | P.O for Piping Gate,Globe & Butterfly valves | 2d | 2012-08-27 | 2012-08-28 | 4229PAV80, 4229EPI480 |  |
| 4229PAV100 | L.C issued by Gupco | 5d | 2012-08-29 | 2012-09-04 | 4229PAV90 |  |
| 4229PAV110 | Fabrication upto R.F.S | 140d | 2012-09-01 | 2013-01-18 | 4229PAV90 |  |
| 4229PAV120 | Delivery upto site | 10d | 2013-01-19 | 2013-01-28 | 4229PAV110 |  |
| 36 | **Additional Piping Ball valves** |  | 2012-05-27 | 2013-01-28 |  |  |
| 4229PAB10 | Issue RFQ for Additional Piping Ball valves | 1d | 2012-05-27 A | 2012-05-27 A | 4229EPI340 |  |
| 4229PAB20 | Bidding for Piping Ball vlaves | 1d | 2012-05-28 A | 2012-06-14 A | 4229PAB10 |  |
| 4229PAB30 | T.E.R for Additional Piping Ball valves | 25d | 2012-06-18 A | 2012-07-15 | 4229PAB20 |  |
| 4229PAB40 | Receive revised commercial offers | 5d | 2012-07-16 | 2012-07-22 | 4229PAB30 |  |
| 4229PAB50 | commercial evaluation & bid committee for Piping Ball valves | 10d | 2012-07-23 | 2012-08-05 | 4229PAB40 |  |
| 4229PAB60 | Client approval on bid committee reccomendation | 2d | 2012-08-06 | 2012-08-07 | 4229PAB50 |  |
| 4229PAB70 | F.O.C for Piping Ball valves | 3d | 2012-08-08 | 2012-08-12 | 4229PAB60 |  |
| 4229PAB80 | MRP for Piping Ball valves | 5d | 2012-08-13 | 2012-08-26 | 4229EPI470 SS, 4229EPI470 FF |  |
| 4229PAB90 | P.O for Piping Ball valves | 2d | 2012-08-27 | 2012-08-28 | 4229PAB80, 4229EPI470 |  |
| 4229PAB100 | L.C issued by Gupco | 5d | 2012-08-29 | 2012-09-04 | 4229PAB90 |  |
| 4229PAB110 | Fabrication upto R.F.S | 140d | 2012-09-01 | 2013-01-18 | 4229PAB90 |  |
| 4229PAB120 | Delivery upto site | 10d | 2013-01-19 | 2013-01-28 | 4229PAB110 |  |
| 4229PFI65 | MRP for field Instrument | 5d | 2012-07-05 | 2012-07-11 | 4229EIN350 SS, 4229EIN350 FF |  |
| 4229PRV55 | MRP for pressure regulator valves | 5d | 2012-05-27 A | 2012-05-31 A | 4229EIN320 FF, 4229EIN320 SS |  |
| 4229PSG25 | T.E.R for SGS | 25d | 2011-09-28 A | 2012-01-16 A | 4229EIN80 FF, 4229EIN80 SS |  |
| 4229PSG100 | Delivery upto site (Air freight) | 9d | 2012-12-07 | 2012-12-15 | 4229PSG90 |  |
| 4229PRS25 | T.E.R for Radar System | 23d | 2012-07-03 | 2012-08-02 | 4229ETE170 FF, 4229ETE170 SS |  |
| 4229PEB65 | MRP for Electrical bulk | 5d | 2012-07-10 | 2012-07-16 | 4229EEL210 SS, 4229EEL210 FF |  |
| 4229PVE65 | MRP for K.O drum | 2d | 2012-03-21 A | 2012-03-25 A | 4229EPV60 SS, 4229EPV60 FF |  |
| 4229PTA25 | T.E.R for tanks | 20d | 2011-11-24 A | 2011-12-29 A | 4229EPV30 SS, 4229EPV30 FF |  |
| 4229PTA65 | MRP for tanks | 5d | 2012-03-01 A | 2012-03-03 A | 4229EPV50 SS, 4229EPV50 FF |  |
| 4229PHB25 | T.E.R for hot bends | 25.88d | 2011-10-30 A | 2011-12-08 A | 4229EPL90 SS, 4229EPL90 FF |  |

Removed: PMS110 Mobilization of Sealines and transportation Contractor; LOPS01 Arrival of 01st Shipment Material Barge ( P/L Spools); LOPS11 Arrival of 01st Shipment Material Barge ( P/L Spools); LOPS21 Arrival of 01st Shipment Material Barge ( P/L Spools); LOPS31 Arrival of 01st Shipment Material Barge ( P/L Spools); LOPS12 1st Shipment Material Barge Preparation; LOPS22 1st Shipment Material Barge Preparation; LOPS32 1st Shipment Material Barge Preparation; LOPS13 L/O & Sea Fastening (P/L Spools 18" & 8"); LOPS23 L/O & Sea Fastening (P/L Spools 18" & 8"); LOPS33 L/O & Sea Fastening (P/L Spools 18" & 8"); LOJK01 Arrival of 02nd Shipment Material Barge ( Jacket and Piles ); LOJK11 Arrival of 02nd Shipment Material Barge ( Jacket and Piles ); LOJK21 Arrival of 02nd Shipment Material Barge ( Jacket and Piles ); LOJK31 Arrival of 02nd Shipment Material Barge ( Jacket and Piles ); LOJK12 02nd Shipment Material Barge Preparation; LOJK22 02nd Shipment Material Barge Preparation; LOJK32 02nd Shipment Material Barge Preparation; LOJK13 L/O & Sea fastening ( Jacket & Piles ); LOJK23 L/O & Sea fastening ( Jacket & Piles ); LOJK33 L/O & Sea fastening ( Jacket & Piles ); LODK11 Arrival of 03rd Shipment Material Barge ( Deck C/W TSF ); LODK21 Arrival of 03rd Shipment Material Barge ( Deck C/W TSF ); LODK31 Arrival of 03rd Shipment Material Barge ( Deck C/W TSF ); LODK12 3rd Shipment Material Barge Preparation; LODK22 3rd Shipment Material Barge Preparation; LODK32 3rd Shipment Material Barge Preparation; LODK13 L/O & Sea fastening ( Deck); LODK23 L/O & Sea fastening ( Deck); LODK33 L/O & Sea fastening ( Deck); 4229EPI190 Issue GA's / ISO's -construction(first batch); 4229EPI280 Issue GA's / ISO's -construction(Second batch)- Final MTO; 4229EEL330 Issue MRQ for solar power unit; GM11 Reciving Fax of Award; GM21 Reciving Fax of Award; GM31 Reciving Fax of Award; GM12 Project Fab. Start; GM22 Project Fab. Start; GM32 Project Fab. Start; GM13 Ready for Load out (01st Shipment / Pipeline Spools 18" & 8"); GM23 Ready for Load out (01st Shipment / Pipeline Spools 18" & 8"); GM33 Ready for Load out (01st Shipment / Pipeline Spools 18" & 8"); GM14 Ready for Load out ( 02nd Shipment/ Jacket & Piles ); GM24 Ready for Load out ( 02nd Shipment/ Jacket & Piles ); GM34 Ready for Load out ( 02nd Shipment/ Jacket & Piles ); GM05 Ready for Load out ( 03rd Shipment/ Deck C/W TSF ); GM25 Ready for Load out ( 03rd Shipment/ Deck C/W TSF ); GM35 Ready for Load out ( 03rd Shipment/ Deck C/W TSF ); ENS03 Receiving Jacket Primary & Secondary Steel IFC DWG`s; ENS23 Receiving Jacket Primary & Secondary Steel IFC DWG`s; ENS33 Receiving Jacket Primary & Secondary Steel IFC DWG`s; ENS14 Receiving Piles IFC DWG`s; ENS24 Receiving Piles IFC DWG`s; ENS34 Receiving Piles IFC DWG`s; ENS11 Receiving Final Jacket , Boat Land & Piles MTO; ENS12 Receiving Final Deck Str. MTO; ENS21 Receiving Final Jacket , Boat Land & Piles MTO; ENS22 Receiving Final Deck Str. MTO; ENS31 Receiving Final Jacket , Boat Land & Piles MTO; ENS32 Receiving Final Deck Str. MTO; ENS15 Receiving Deck Str. Primary & Secondary IFC DWG`s; ENS25 Receiving Deck Str. Primary & Secondary IFC DWG`s; ENS35 Receiving Deck Str. Primary & Secondary IFC DWG`s; ENS16 Receiving Piping Supports IFC DWG's; ENS26 Receiving Piping Supports IFC DWG's; ENS36 Receiving Piping Supports IFC DWG's; ENS17 Receiving Cable tarys Support IFC DWG's; ENS27 Receiving Cable tarys Support IFC DWG's; ENS37 Receiving Cable tarys Support IFC DWG's; ENS18 Receiving IFC Equipment fixation DWG`s; ENS28 Receiving IFC Equipment fixation DWG`s; ENS38 Receiving IFC Equipment fixation DWG`s; ENS19 Receiving P/L 8" & 18" IFC DWG's; ENS29 Receiving P/L 8" & 18" IFC DWG's; ENS39 Receiving P/L 8" & 18" IFC DWG's; ENT11 Issue Approved P&ID's / Equipment List IFC DWG's; ENT21 Issue Approved P&ID's / Equipment List IFC DWG's; ENT31 Issue Approved P&ID's / Equipment List IFC DWG's; ENT12 Issue plat plans IFC DWG's; ENT22 Issue plat plans IFC DWG's; ENT32 Issue plat plans IFC DWG's; ENT13 Receiving Piping ISO`s IFC DWG's; ENT23 Receiving Piping ISO`s IFC DWG's; ENT33 Receiving Piping ISO`s IFC DWG's; ENT14 Issue Hydrotest maps & loops IFC DWG's; ENT24 Issue Hydrotest maps & loops IFC DWG's; ENT34 Issue Hydrotest maps & loops IFC DWG's; ENE11 Receiving E&I IFC DWG`s; ENE21 Receiving E&I IFC DWG`s; ENE31 Receiving E&I IFC DWG`s; PRS21 Issue Structural Material P.O's ( Gupco Responsability); PRS31 Issue Structural Material P.O's ( Gupco Responsability); PRS12 Issue LC ( Gupco Responsability); PRS13 Delivery of Structure Material (F.O.B - 13 Wks.) - (Gupco Responsability); PRS22 Issue LC ( Gupco Responsability); PRS23 Delivery of Structure Material (F.O.B - 13 Wks.) - (Gupco Responsability); PRS32 Issue LC ( Gupco Responsability); PRS33 Delivery of Structure Material (F.O.B - 13 Wks.) - (Gupco Responsability); PRS15 Material check with IFC DWG's to Prepare balance material; PRS25 Material check with IFC DWG's to Prepare balance material; PRS35 Material check with IFC DWG's to Prepare balance material; PRS16 Delivery of balance material; PRS26 Delivery of balance material; PRS36 Delivery of balance material; PRS14 Delivery of Structure Material at Site (4 Wks.); PRS24 Delivery of Structure Material at Site (4 Wks.); PRS34 Delivery of Structure Material at Site (4 Wks.); PRP11 Pipeline 18" & Fittings; PRP21 Pipeline 18" & Fittings; PRP22 Pipeline 8" & Fittings; PRP31 Pipeline 18" & Fittings; PRP32 Pipeline 8" & Fittings; PRP42 Pipeline 8" & Fittings; PRP52 Pipeline 8" & Fittings; PRP62 Pipeline 8" & Fittings; PRP72 Pipeline 8" & Fittings; PRT21 Piping Bulk material 1st batch; PRT41 Piping Bulk material 1st batch; PRT61 Piping Bulk material 1st batch; PRT16 Pressure Safety Valve; PRT26 Pressure Safety Valve; PRT36 Pressure Safety Valve; PRT22 Piping Bulk material 2nd batch; PRT42 Piping Bulk material 2nd batch; PRT62 Piping Bulk material 2nd batch; PRT13 Piping Valves Bulk material 1st batch; PRT23 Piping Valves Bulk material 1st batch; PRT33 Piping Valves Bulk material 1st batch; PRT15 Flanges; PRT25 Flanges; PRT35 Flanges; PRT14 Piping valves Bulk material 2nd batch; PRT24 Piping valves Bulk material 2nd batch; PRT34 Piping valves Bulk material 2nd batch; PRT17 Pressure regulator Valve; PRT27 Pressure regulator Valve; PRT37 Pressure regulator Valve; PRT18 Shutdown Valve; PRT28 Shutdown Valve; PRT38 Shutdown Valve; PRT19 Chemical Injection PKG.; PRT29 Chemical Injection PKG.; PRT39 Chemical Injection PKG.; PRT20 Launcher recivier; PRT30 Launcher recivier; PRT40 Launcher recivier; PRT31 Vent KOD; PRT32 Open Drain Tank; PRT51 Vent KOD; PRT52 Open Drain Tank; PRT71 Vent KOD; PRT72 Open Drain Tank; PRE22 Cathodic Protection; PRE42 Cathodic Protection; PRE62 Cathodic Protection; PRE23 Solar Power; PRE43 Solar Power; PRE63 Solar Power; PRE21 Electrical Bulks; PRE41 Electrical Bulks; PRE61 Electrical Bulks; PRE15 Fire fighting system; PRE25 Fire fighting system; PRE35 Fire fighting system; PRE16 Life Saving Equipment; PRE26 Life Saving Equipment; PRE36 Life Saving Equipment; PRE14 F&G Detector; PRE24 F&G Detector; PRE34 F&G Detector; PRE18 Navegation Aids; PRE28 Navegation Aids; PRE38 Navegation Aids; PRE17 Radar system; PRE27 Radar system; PRE37 Radar system; PRE31 Field Instrument; PRE51 Field Instrument; PRE71 Field Instrument; PRE12 multi phase flow meter; PRE20 Instrument Mechanical Bulk; PRE30 Instrument Mechanical Bulk; PRE32 multi phase flow meter; PRE40 Instrument Mechanical Bulk; PRE52 multi phase flow meter; PRE72 multi phase flow meter; PRE19 Instrument Electical Bulk; PRE29 Instrument Electical Bulk; PRE39 Instrument Electical Bulk; PRE33 Safe Guard system; PRE53 Safe Guard system; PRE73 Safe Guard system; PF11 Pre-Fabrication of Steel Structure ( Jacket & Piles); PF21 Pre-Fabrication of Steel Structure ( Jacket & Piles); PF31 Pre-Fabrication of Steel Structure ( Jacket & Piles); JK11 Jacket , Boat Landing Fabrication & Painting; JK21 Jacket , Boat Landing Fabrication & Painting; JK31 Jacket , Boat Landing Fabrication & Painting; JK12 Piles Fabrication & Marking; JK22 Piles Fabrication & Marking; JK32 Piles Fabrication & Marking; PL11 P/L Spools Fabrication; PL21 P/L Spools Fabrication; PL31 P/L Spools Fabrication; DS011 Fabrication and Painting of Below Production Deck/Legs; DS012 Fabrication and Painting of Production Deck; DS021 Fabrication and Painting of Below Production Deck/Legs; DS022 Fabrication and Painting of Production Deck; DS031 Fabrication and Painting of Below Production Deck/Legs; DS032 Fabrication and Painting of Production Deck; DS041 Fabrication and Painting of Below Production Deck/Legs; DS042 Fabrication and Painting of Production Deck; DS013 Fabrication and Paint of Heli-Deck ( & Lifting if Required); DS023 Fabrication and Paint of Heli-Deck ( & Lifting if Required); DS033 Fabrication and Paint of Heli-Deck ( & Lifting if Required); DS043 Fabrication and Paint of Heli-Deck ( & Lifting if Required); DS016 Fabrication & Installation of Deck Str. Miscellence / Padeyes; DS026 Fabrication & Installation of Deck Str. Miscellence / Padeyes; DS036 Fabrication & Installation of Deck Str. Miscellence / Padeyes; DS046 Fabrication & Installation of Deck Str. Miscellence / Padeyes; DS014 Lifting Below Production Deck on High Cups; DS024 Lifting Below Production Deck on High Cups; DS034 Lifting Below Production Deck on High Cups; DS044 Lifting Below Production Deck on High Cups; DS015 Lifting Production Deck on Below Production Level; DS025 Lifting Production Deck on Below Production Level; DS035 Lifting Production Deck on Below Production Level; DS045 Lifting Production Deck on Below Production Level; DS017 Physical Weighting; DS027 Physical Weighting; DS037 Physical Weighting; DS047 Physical Weighting; DS018 Clearanse of structure (Fab. & Painting ) Punch List; DS028 Clearanse of structure (Fab. & Painting ) Punch List; DS038 Clearanse of structure (Fab. & Painting ) Punch List; TFS011 Piping and Piping Supports Fabrication and Painting; TFS021 Piping and Piping Supports Fabrication and Painting; TFS031 Piping and Piping Supports Fabrication and Painting; TSF002 Piping and Piping Supports Erection; TSF012 Piping and Piping Supports Erection; TSF022 Piping and Piping Supports Erection; TSF032 Piping and Piping Supports Erection; TSF003 Equipment Erection on Below Production Level; TSF013 Equipment Erection on Below Production Level; TSF023 Equipment Erection on Below Production Level; TSF033 Equipment Erection on Below Production Level; TSF004 Equipment Erection on Production Level; TSF014 Equipment Erection on Production Level; TSF024 Equipment Erection on Production Level; TSF034 Equipment Erection on Production Level; TSF044 Equipment Erection on Production Level; TSF005 Equipment Erection on Helideck; TSF025 Equipment Erection on Helideck; TSF035 Equipment Erection on Helideck; TSF045 Equipment Erection on Helideck; TS07 E&I Activity; TS27 E&I Activity; TS37 E&I Activity; TS08 Pre-commissioning " Piping Hydrotest , Reinstatment , Megering , Continuity Test and Touch Up "; TS28 Pre-commissioning " Piping Hydrotest , Reinstatment , Megering , Continuity Test and Touch Up "; TS38 Pre-commissioning " Piping Hydrotest , Reinstatment , Megering , Continuity Test and Touch Up "; LOPS51 Arrival of 01st Shipment Material Barge ( P/L Spools); LOPS61 Arrival of 01st Shipment Material Barge ( P/L Spools); LOPS71 Arrival of 01st Shipment Material Barge ( P/L Spools); LOPS42 1st Shipment Material Barge Preparation; LOPS52 1st Shipment Material Barge Preparation; LOPS62 1st Shipment Material Barge Preparation; LOPS72 1st Shipment Material Barge Preparation; LOPS43 L/O & Sea Fastening (P/L Spools 18" & 8"); LOPS53 L/O & Sea Fastening (P/L Spools 18" & 8"); LOPS63 L/O & Sea Fastening (P/L Spools 18" & 8"); LOPS73 L/O & Sea Fastening (P/L Spools 18" & 8"); LOJK51 Arrival of 02nd Shipment Material Barge ( Jacket and Piles ); LOJK61 Arrival of 02nd Shipment Material Barge ( Jacket and Piles ); LOJK71 Arrival of 02nd Shipment Material Barge ( Jacket and Piles ); LOJK42 02nd Shipment Material Barge Preparation; LOJK52 02nd Shipment Material Barge Preparation; LOJK62 02nd Shipment Material Barge Preparation; LOJK72 02nd Shipment Material Barge Preparation; LOJK43 L/O & Sea fastening ( Jacket & Piles ); LOJK53 L/O & Sea fastening ( Jacket & Piles ); LOJK63 L/O & Sea fastening ( Jacket & Piles ); LOJK73 L/O & Sea fastening ( Jacket & Piles ); LODK51 Arrival of 03rd Shipment Material Barge ( Deck C/W TSF ); LODK61 Arrival of 03rd Shipment Material Barge ( Deck C/W TSF ); LODK71 Arrival of 03rd Shipment Material Barge ( Deck C/W TSF ); LODK42 3rd Shipment Material Barge Preparation; LODK52 3rd Shipment Material Barge Preparation; LODK62 3rd Shipment Material Barge Preparation; LODK72 3rd Shipment Material Barge Preparation; LODK43 L/O & Sea fastening ( Deck); LODK53 L/O & Sea fastening ( Deck); LODK63 L/O & Sea fastening ( Deck); LODK73 L/O & Sea fastening ( Deck); GM41 Reciving Fax of Award; GM51 Reciving Fax of Award; GM61 Reciving Fax of Award; GM71 Reciving Fax of Award; GM42 Project Fab. Start; GM52 Project Fab. Start; GM62 Project Fab. Start; GM72 Project Fab. Start; GM43 Ready for Load out (01st Shipment / Pipeline Spools 18" & 8"); GM53 Ready for Load out (01st Shipment / Pipeline Spools 18" & 8"); GM63 Ready for Load out (01st Shipment / Pipeline Spools 18" & 8"); GM73 Ready for Load out (01st Shipment / Pipeline Spools 18" & 8"); GM44 Ready for Load out ( 02nd Shipment/ Jacket & Piles ); GM54 Ready for Load out ( 02nd Shipment/ Jacket & Piles ); GM64 Ready for Load out ( 02nd Shipment/ Jacket & Piles ); GM74 Ready for Load out ( 02nd Shipment/ Jacket & Piles ); GM45 Ready for Load out ( 03rd Shipment/ Deck C/W TSF ); GM55 Ready for Load out ( 03rd Shipment/ Deck C/W TSF ); GM65 Ready for Load out ( 03rd Shipment/ Deck C/W TSF ); GM75 Ready for Load out ( 03rd Shipment/ Deck C/W TSF ); ENS43 Receiving Jacket Primary & Secondary Steel IFC DWG`s; ENS53 Receiving Jacket Primary & Secondary Steel IFC DWG`s; ENS63 Receiving Jacket Primary & Secondary Steel IFC DWG`s; ENS73 Receiving Jacket Primary & Secondary Steel IFC DWG`s; ENS44 Receiving Piles IFC DWG`s; ENS54 Receiving Piles IFC DWG`s; ENS64 Receiving Piles IFC DWG`s; ENS74 Receiving Piles IFC DWG`s; ENS41 Receiving Final Jacket , Boat Land & Piles MTO; ENS42 Receiving Final Deck Str. MTO; ENS51 Receiving Final Jacket , Boat Land & Piles MTO; ENS52 Receiving Final Deck Str. MTO; ENS61 Receiving Final Jacket , Boat Land & Piles MTO; ENS62 Receiving Final Deck Str. MTO; ENS71 Receiving Final Jacket , Boat Land & Piles MTO; ENS72 Receiving Final Deck Str. MTO; ENS45 Receiving Deck Str. Primary & Secondary IFC DWG`s; ENS55 Receiving Deck Str. Primary & Secondary IFC DWG`s; ENS65 Receiving Deck Str. Primary & Secondary IFC DWG`s; ENS75 Receiving Deck Str. Primary & Secondary IFC DWG`s; ENS46 Receiving Piping Supports IFC DWG's; ENS56 Receiving Piping Supports IFC DWG's; ENS66 Receiving Piping Supports IFC DWG's; ENS76 Receiving Piping Supports IFC DWG's; ENS47 Receiving Cable tarys Support IFC DWG's; ENS57 Receiving Cable tarys Support IFC DWG's; ENS67 Receiving Cable tarys Support IFC DWG's; ENS77 Receiving Cable tarys Support IFC DWG's; ENS48 Receiving IFC Equipment fixation DWG`s; ENS58 Receiving IFC Equipment fixation DWG`s; ENS68 Receiving IFC Equipment fixation DWG`s; ENS78 Receiving IFC Equipment fixation DWG`s; ENS49 Receiving P/L 8" & 18" IFC DWG's; ENS59 Receiving P/L 8" & 18" IFC DWG's; ENS69 Receiving P/L 8" & 18" IFC DWG's; ENS79 Receiving P/L 8" & 18" IFC DWG's; ENT41 Issue Approved P&ID's / Equipment List IFC DWG's; ENT51 Issue Approved P&ID's / Equipment List IFC DWG's; ENT61 Issue Approved P&ID's / Equipment List IFC DWG's; ENT71 Issue Approved P&ID's / Equipment List IFC DWG's; ENT42 Issue plat plans IFC DWG's; ENT52 Issue plat plans IFC DWG's; ENT62 Issue plat plans IFC DWG's; ENT72 Issue plat plans IFC DWG's; ENT43 Receiving Piping ISO`s IFC DWG's; ENT53 Receiving Piping ISO`s IFC DWG's; ENT63 Receiving Piping ISO`s IFC DWG's; ENT73 Receiving Piping ISO`s IFC DWG's; ENT44 Issue Hydrotest maps & loops IFC DWG's; ENT54 Issue Hydrotest maps & loops IFC DWG's; ENT64 Issue Hydrotest maps & loops IFC DWG's; ENT74 Issue Hydrotest maps & loops IFC DWG's; ENE41 Receiving E&I IFC DWG`s; ENE51 Receiving E&I IFC DWG`s; ENE61 Receiving E&I IFC DWG`s; ENE71 Receiving E&I IFC DWG`s; PRS41 Issue Structural Material P.O's ( Gupco Responsability); PRS51 Issue Structural Material P.O's ( Gupco Responsability); PRS61 Issue Structural Material P.O's ( Gupco Responsability); PRS71 Issue Structural Material P.O's ( Gupco Responsability); PRS42 Issue LC ( Gupco Responsability); PRS43 Delivery of Structure Material (F.O.B - 13 Wks.) - (Gupco Responsability); PRS52 Issue LC ( Gupco Responsability); PRS53 Delivery of Structure Material (F.O.B - 13 Wks.) - (Gupco Responsability); PRS62 Issue LC ( Gupco Responsability); PRS63 Delivery of Structure Material (F.O.B - 13 Wks.) - (Gupco Responsability); PRS72 Issue LC ( Gupco Responsability); PRS73 Delivery of Structure Material (F.O.B - 13 Wks.) - (Gupco Responsability); PRS45 Material check with IFC DWG's to Prepare balance material; PRS55 Material check with IFC DWG's to Prepare balance material; PRS65 Material check with IFC DWG's to Prepare balance material; PRS75 Material check with IFC DWG's to Prepare balance material; PRS46 Delivery of balance material; PRS56 Delivery of balance material; PRS66 Delivery of balance material; PRS76 Delivery of balance material; PRS44 Delivery of Structure Material at Site (4 Wks.); PRS54 Delivery of Structure Material at Site (4 Wks.); PRS64 Delivery of Structure Material at Site (4 Wks.); PRS74 Delivery of Structure Material at Site (4 Wks.); PRP102 Pipeline 8" & Fittings; PRP112 Pipeline 8" & Fittings; PRP122 Pipeline 8" & Fittings; PRP132 Pipeline 8" & Fittings; PRP142 Pipeline 8" & Fittings; PRP152 Pipeline 8" & Fittings; PRP41 Pipeline 18" & Fittings; PRP51 Pipeline 18" & Fittings; PRP61 Pipeline 18" & Fittings; PRP71 Pipeline 18" & Fittings; PRP82 Pipeline 8" & Fittings; PRP92 Pipeline 8" & Fittings; PRT101 Piping Bulk material 1st batch; PRT121 Piping Bulk material 1st batch; PRT141 Piping Bulk material 1st batch; PRT81 Piping Bulk material 1st batch; PRT46 Pressure Safety Valve; PRT56 Pressure Safety Valve; PRT66 Pressure Safety Valve; PRT76 Pressure Safety Valve; PRT102 Piping Bulk material 2nd batch; PRT122 Piping Bulk material 2nd batch; PRT142 Piping Bulk material 2nd batch; PRT82 Piping Bulk material 2nd batch; PRT43 Piping Valves Bulk material 1st batch; PRT53 Piping Valves Bulk material 1st batch; PRT63 Piping Valves Bulk material 1st batch; PRT73 Piping Valves Bulk material 1st batch; PRT45 Flanges; PRT55 Flanges; PRT65 Flanges; PRT75 Flanges; PRT44 Piping valves Bulk material 2nd batch; PRT54 Piping valves Bulk material 2nd batch; PRT64 Piping valves Bulk material 2nd batch; PRT74 Piping valves Bulk material 2nd batch; PRT47 Pressure regulator Valve; PRT57 Pressure regulator Valve; PRT67 Pressure regulator Valve; PRT77 Pressure regulator Valve; PRT48 Shutdown Valve; PRT58 Shutdown Valve; PRT68 Shutdown Valve; PRT78 Shutdown Valve; PRT49 Chemical Injection PKG.; PRT59 Chemical Injection PKG.; PRT69 Chemical Injection PKG.; PRT79 Chemical Injection PKG.; PRT50 Launcher recivier; PRT60 Launcher recivier; PRT70 Launcher recivier; PRT80 Launcher recivier; PRT111 Vent KOD; PRT112 Open Drain Tank; PRT131 Vent KOD; PRT132 Open Drain Tank; PRT151 Vent KOD; PRT152 Open Drain Tank; PRT91 Vent KOD; PRT92 Open Drain Tank; PRE102 Cathodic Protection; PRE122 Cathodic Protection; PRE142 Cathodic Protection; PRE82 Cathodic Protection; PRE103 Solar Power; PRE123 Solar Power; PRE143 Solar Power; PRE83 Solar Power; PRE101 Electrical Bulks; PRE121 Electrical Bulks; PRE141 Electrical Bulks; PRE81 Electrical Bulks; PRE45 Fire fighting system; PRE55 Fire fighting system; PRE65 Fire fighting system; PRE75 Fire fighting system; PRE46 Life Saving Equipment; PRE56 Life Saving Equipment; PRE66 Life Saving Equipment; PRE76 Life Saving Equipment; PRE44 F&G Detector; PRE54 F&G Detector; PRE64 F&G Detector; PRE74 F&G Detector; PRE48 Navegation Aids; PRE58 Navegation Aids; PRE68 Navegation Aids; PRE78 Navegation Aids; PRE47 Radar system; PRE57 Radar system; PRE67 Radar system; PRE77 Radar system; PRE111 Field Instrument; PRE131 Field Instrument; PRE151 Field Instrument; PRE91 Field Instrument; PRE112 multi phase flow meter; PRE132 multi phase flow meter; PRE50 Instrument Mechanical Bulk; PRE60 Instrument Mechanical Bulk; PRE70 Instrument Mechanical Bulk; PRE80 Instrument Mechanical Bulk; PRE92 multi phase flow meter; PRE49 Instrument Electical Bulk; PRE59 Instrument Electical Bulk; PRE69 Instrument Electical Bulk; PRE79 Instrument Electical Bulk; PRE113 Safe Guard system; PRE133 Safe Guard system; PRE153 Safe Guard system; PRE93 Safe Guard system; PF41 Pre-Fabrication of Steel Structure ( Jacket & Piles); PF51 Pre-Fabrication of Steel Structure ( Jacket & Piles); PF61 Pre-Fabrication of Steel Structure ( Jacket & Piles); PF71 Pre-Fabrication of Steel Structure ( Jacket & Piles); JK41 Jacket , Boat Landing Fabrication & Painting; JK51 Jacket , Boat Landing Fabrication & Painting; JK61 Jacket , Boat Landing Fabrication & Painting; JK71 Jacket , Boat Landing Fabrication & Painting; JK42 Piles Fabrication & Marking; JK52 Piles Fabrication & Marking; JK62 Piles Fabrication & Marking; JK72 Piles Fabrication & Marking; PL41 P/L Spools Fabrication; PL51 P/L Spools Fabrication; PL61 P/L Spools Fabrication; PL71 P/L Spools Fabrication; DS051 Fabrication and Painting of Below Production Deck/Legs; DS052 Fabrication and Painting of Production Deck; DS061 Fabrication and Painting of Below Production Deck/Legs; DS062 Fabrication and Painting of Production Deck; DS071 Fabrication and Painting of Below Production Deck/Legs; DS072 Fabrication and Painting of Production Deck; DS081 Fabrication and Painting of Below Production Deck/Legs; DS082 Fabrication and Painting of Production Deck; DS091 Fabrication and Painting of Below Production Deck/Legs; DS092 Fabrication and Painting of Production Deck; DS053 Fabrication and Paint of Heli-Deck ( & Lifting if Required); DS063 Fabrication and Paint of Heli-Deck ( & Lifting if Required); DS073 Fabrication and Paint of Heli-Deck ( & Lifting if Required); DS083 Fabrication and Paint of Heli-Deck ( & Lifting if Required); DS093 Fabrication and Paint of Heli-Deck ( & Lifting if Required); DS056 Fabrication & Installation of Deck Str. Miscellence / Padeyes; DS066 Fabrication & Installation of Deck Str. Miscellence / Padeyes; DS076 Fabrication & Installation of Deck Str. Miscellence / Padeyes; DS086 Fabrication & Installation of Deck Str. Miscellence / Padeyes; DS096 Fabrication & Installation of Deck Str. Miscellence / Padeyes; DS054 Lifting Below Production Deck on High Cups; DS064 Lifting Below Production Deck on High Cups; DS074 Lifting Below Production Deck on High Cups; DS084 Lifting Below Production Deck on High Cups; DS094 Lifting Below Production Deck on High Cups; DS055 Lifting Production Deck on Below Production Level; DS065 Lifting Production Deck on Below Production Level; DS075 Lifting Production Deck on Below Production Level; DS085 Lifting Production Deck on Below Production Level; DS095 Lifting Production Deck on Below Production Level; DS057 Physical Weighting; DS067 Physical Weighting; DS077 Physical Weighting; DS087 Physical Weighting; DS097 Physical Weighting; DS048 Clearanse of structure (Fab. & Painting ) Punch List; DS058 Clearanse of structure (Fab. & Painting ) Punch List; DS068 Clearanse of structure (Fab. & Painting ) Punch List; DS078 Clearanse of structure (Fab. & Painting ) Punch List; TFS041 Piping and Piping Supports Fabrication and Painting; TFS051 Piping and Piping Supports Fabrication and Painting; TFS061 Piping and Piping Supports Fabrication and Painting; TFS071 Piping and Piping Supports Fabrication and Painting; TSF042 Piping and Piping Supports Erection; TSF052 Piping and Piping Supports Erection; TSF062 Piping and Piping Supports Erection; TSF053 Equipment Erection on Below Production Level; TSF063 Equipment Erection on Below Production Level; TSF073 Equipment Erection on Below Production Level; TSF083 Equipment Erection on Below Production Level; TSF093 Equipment Erection on Below Production Level; TSF054 Equipment Erection on Production Level; TSF064 Equipment Erection on Production Level; TSF074 Equipment Erection on Production Level; TSF084 Equipment Erection on Production Level; TSF055 Equipment Erection on Helideck; TSF065 Equipment Erection on Helideck; TSF075 Equipment Erection on Helideck; TSF085 Equipment Erection on Helideck; TSF095 Equipment Erection on Helideck; TS47 E&I Activity; TS57 E&I Activity; TS67 E&I Activity; TS77 E&I Activity; TS48 Pre-commissioning " Piping Hydrotest , Reinstatment , Megering , Continuity Test and Touch Up "; TS58 Pre-commissioning " Piping Hydrotest , Reinstatment , Megering , Continuity Test and Touch Up "; TS68 Pre-commissioning " Piping Hydrotest , Reinstatment , Megering , Continuity Test and Touch Up "; TS78 Pre-commissioning " Piping Hydrotest , Reinstatment , Megering , Continuity Test and Touch Up "; LOPS101 Arrival of 01st Shipment Material Barge ( P/L Spools); LOPS111 Arrival of 01st Shipment Material Barge ( P/L Spools); LOPS81 Arrival of 01st Shipment Material Barge ( P/L Spools); LOPS91 Arrival of 01st Shipment Material Barge ( P/L Spools); LOPS102 1st Shipment Material Barge Preparation; LOPS112 1st Shipment Material Barge Preparation; LOPS82 1st Shipment Material Barge Preparation; LOPS92 1st Shipment Material Barge Preparation; LOPS103 L/O & Sea Fastening (P/L Spools 18" & 8"); LOPS113 L/O & Sea Fastening (P/L Spools 18" & 8"); LOPS83 L/O & Sea Fastening (P/L Spools 18" & 8"); LOPS93 L/O & Sea Fastening (P/L Spools 18" & 8"); LOJK101 Arrival of 02nd Shipment Material Barge ( Jacket and Piles ); LOJK111 Arrival of 02nd Shipment Material Barge ( Jacket and Piles ); LOJK81 Arrival of 02nd Shipment Material Barge ( Jacket and Piles ); LOJK91 Arrival of 02nd Shipment Material Barge ( Jacket and Piles ); LOJK102 02nd Shipment Material Barge Preparation; LOJK112 02nd Shipment Material Barge Preparation; LOJK82 02nd Shipment Material Barge Preparation; LOJK92 02nd Shipment Material Barge Preparation; LOJK103 L/O & Sea fastening ( Jacket & Piles ); LOJK113 L/O & Sea fastening ( Jacket & Piles ); LOJK83 L/O & Sea fastening ( Jacket & Piles ); LOJK93 L/O & Sea fastening ( Jacket & Piles ); LODK101 Arrival of 03rd Shipment Material Barge ( Deck C/W TSF ); LODK111 Arrival of 03rd Shipment Material Barge ( Deck C/W TSF ); LODK81 Arrival of 03rd Shipment Material Barge ( Deck C/W TSF ); LODK91 Arrival of 03rd Shipment Material Barge ( Deck C/W TSF ); LODK102 3rd Shipment Material Barge Preparation; LODK112 3rd Shipment Material Barge Preparation; LODK82 3rd Shipment Material Barge Preparation; LODK92 3rd Shipment Material Barge Preparation; LODK103 L/O & Sea fastening ( Deck); LODK113 L/O & Sea fastening ( Deck); LODK83 L/O & Sea fastening ( Deck); LODK93 L/O & Sea fastening ( Deck)

Changed:

| ID | Task | Start | Finish | Duration | Complete | Total float | Predecessors | Other |
| --- | --- | --- | --- | --- | --- | --- | --- | --- |
| OFF02 | Compile Platfrom installation ITB | 2012-06-13 → 2012-07-05 (+22d) | 2012-06-19 → 2012-07-11 (+22d) |  |  | 0d → -16d | none → 4229GM50 |  |
| PM01 | Compile transportation and sealines package | 2012-06-20 → 2012-07-05 (+15d) | 2012-07-10 → 2012-07-25 (+15d) |  |  | 0d → -11d |  |  |
| PMS100 | Compile Sealines and transportation bid package | 2012-06-03 → 2012-07-05 (+32d) | 2012-06-20 → 2012-07-24 (+34d) |  |  | 57d → 493d |  |  |
| OFF04 | Bid platfrom installation package | 2012-06-20 → 2012-07-12 (+22d) | 2012-09-18 → 2012-10-10 (+22d) |  |  | 0d → -11d |  |  |
| PMS105 | Negotiation/award sealines and transporation package | 2012-06-21 → 2012-07-25 (+34d) | 2012-11-07 → 2012-12-11 (+34d) |  |  | 57d → 493d |  |  |
| PM04 | Negotiate Sealines and transportation package | 2012-07-11 → 2012-07-26 (+15d) | 2012-10-16 → 2012-11-07 (+22d) |  |  | 55d → 49d |  |  |
| OFF06 | TE platfrom installation package | 2012-09-19 → 2012-10-11 (+22d) | 2012-10-17 → 2012-11-15 (+29d) |  |  | 0d → -11d |  |  |
| PM06 | Award transportation and sealines package | 2012-10-17 → 2012-11-08 (+22d) | 2012-11-06 → 2012-11-21 (+15d) |  |  | 55d → 49d |  |  |
| OFF10 | CE and negotiation platfrom installation package | 2012-10-18 → 2012-11-18 (+31d) | 2013-01-02 → 2013-01-24 (+22d) |  |  | 0d → -11d |  |  |
| PM16 | Mobilizae transportation and sealines contractor | 2012-11-07 → 2012-11-22 (+15d) | 2012-11-26 → 2012-12-11 (+15d) |  |  | 55d → 49d |  |  |
| PMS02 | Transport Jacket and piles | 2012-11-27 → 2012-12-12 (+15d) | 2012-12-16 → 2012-12-31 (+15d) |  |  | 55d → 49d |  |  |
| OFF20 | Award offshore installation package | 2013-01-03 → 2013-01-27 (+24d) | 2013-01-13 → 2013-02-04 (+22d) |  |  | 0d → -11d |  |  |
| PMS03 | Transport sealine spools to site | 2012-11-27 → 2013-01-27 (+61d) | 2012-12-16 → 2013-02-13 (+59d) |  |  | 57d → 19d | PM16 → PM16, LOPS41 |  |
| OFF30 | Mobilize platform installation contractor | 2013-01-14 → 2013-02-05 (+22d) | 2013-02-24 → 2013-03-18 (+22d) |  |  | 0d → -11d |  |  |
| PMS00 | Preinstallation survey | 2013-02-25 → 2013-03-19 (+22d) | 2013-03-03 → 2013-03-25 (+22d) |  |  | 0d → -11d | OFF30, PM16, GM04, GM04 → OFF30, PM16, GM04 |  |
| PMS04 | Install jacket | 2013-03-04 → 2013-03-26 (+22d) | 2013-03-05 → 2013-03-27 (+22d) |  |  | 0d → -11d |  |  |
| PMS09 | Install sealines | 2013-03-04 → 2013-03-26 (+22d) | 2013-03-17 → 2013-04-08 (+22d) |  |  | 2d → -9d |  |  |
| PMS05 | Drive piles | 2013-03-06 → 2013-03-28 (+22d) | 2013-03-17 → 2013-04-08 (+22d) |  |  | 0d → -11d |  |  |
| PMS01 | Transport deck/topsides to site | 2012-12-09 → 2013-07-07 (+210d) | 2012-12-26 → 2013-07-24 (+210d) |  |  | 57d → -88d | Mobilization of Sealines and transportation Contractor → PM06, LODK03 |  |
| PMS06 | Install deck/topside module | 2013-03-18 → 2013-07-25 (+129d) | 2013-03-19 → 2013-07-28 (+131d) |  |  | 0d → -88d |  |  |
| PMS10 | Tie-in risers and sealines | 2013-03-20 → 2013-07-29 (+131d) | 2013-03-25 → 2013-08-01 (+129d) |  |  | 0d → -88d |  |  |
| PMS20 | Post-installation survey | 2013-03-26 → 2013-08-04 (+131d) | 2013-04-03 → 2013-08-12 (+131d) |  |  | 0d → -88d |  |  |
| PMS90 | Release platform and transfer custody to Drilling | 2013-04-04 → 2013-08-13 (+131d) | 2013-04-04 → 2013-08-13 (+131d) |  |  | 0d → -88d |  |  |
| DRIL00 | Mobilize Drilling Rig | 2013-04-07 → 2013-08-14 (+129d) | 2013-04-11 → 2013-08-20 (+131d) |  |  | 0d → -88d |  |  |
| DRIL01 | Drill well no. 1 | 2013-04-14 → 2013-08-21 (+129d) | 2013-06-27 → 2013-11-05 (+131d) |  |  | 0d → -88d |  |  |
| DRIL10 | Complete Well no. 1 | 2013-06-30 → 2013-11-06 (+129d) | 2013-08-29 → 2014-01-07 (+131d) |  |  | 0d → -88d |  |  |
| PMS91 | Mechanical complete and hookup well no. 1 | 2013-09-01 → 2014-01-08 (+129d) | 2013-09-12 → 2014-01-21 (+131d) |  |  | 0d → -88d |  |  |
| PMS96 | Final precommissioning and commissioning | 2013-09-15 → 2014-01-22 (+129d) | 2013-09-26 → 2014-01-30 (+126d) | 10d → 7d |  | 0d → -88d |  | constraint none → finish on or before 2013-09-30 |
| GUP01 | Startup and first oil | 2013-09-26 → 2014-01-30 (+126d) | 2013-09-26 → 2014-01-30 (+126d) |  |  | 0d → 196d |  |  |
| 1 | **General Milestones** |  | 2013-04-07 → 2013-07-06 (+90d) |  |  |  |  |  |
| 4229GM100 | Engineering completion | 2013-02-12 → 2013-01-03 (-40d) | 2013-02-12 → 2013-01-03 (-40d) |  |  | 162d → 36d | 4229GM80, 4229ELP500, 4229ELP70, 4229ELP80, 4229ELP230, 4229ELP260, 4229ELP390, 4229ELP40, 4229ELP480, 4229ELP90, 4229ELP410, 4229ELP100, 4229ELP120, 4229ELP180, 4229ELP340, 4229ELP240, 4229ELP270, 4229ELP170, 4229ELP570, 4229EPR90, 4229EPR120, 4229EPR190, 4229EPI80, 4229EPI390, 4229EPI490, 4229EPI400, 4229EPI50, 4229EPI30, A1010, 4229EME70, 4229EME10, 4229EOF260, 4229EOF560, 4229EOF440, 4229EOF80, 4229EOF480, 4229EEL120, 4229EEL30, 4229EIN100, 4229EIN410, 4229EIN430, 4229EIN270, 4229EIN250, 4229EIN210, 4229EPL420, 4229EPL450, 4229EPL490, 4229EPL20, 4229EPL140, 4229EPL150, 4229ETE20, 4229ETE10, 4229GM90, 4229ELP450, 4229ELP490, 4229ELP190, 4229ELP290, 4229EPR110, 4229EPR170, 4229EPR20, 4229EPR80, 4229EPI440, 4229EPI260, 4229EPI70, 4229EPI410, 4229EOF520, 4229EOF150, 4229EOF40, 4229EOF320, 4229EOF380, 4229EOF250, 4229EEL270, 4229EEL110, 4229EEL160, 4229EEL240, 4229EEL150, 4229EEL140, 4229EIN470, 4229EIN530, 4229EIN310, 4229EPR300, 4229EIN180, 4229EIN40, 4229EIN320, 4229EPL170, 4229EPL350, 4229EPL440, 4229EPL480, 4229EPL340, 4229EPL250, 4229EPL10, 4229ELP520, 4229ELP220, 4229ELP380, 4229ELP370, 4229ELP130, 4229ELP210, 4229EPR100, 4229EPR140, 4229EPI280, 4229EPI310, 4229EME140, 4229EOF200, 4229EOF170, 4229EOF570, 4229EOF450, 4229EOF90, 4229EOF370, 4229EOF180, 4229EEL190, 4229EEL170, 4229EEL200, 4229EEL210, 4229EEL10, 4229EIN130, 4229EIN560, 4229EIN160, 4229EPL430, 4229EPL160, 4229EPL220, 4229EPL60, 4229EPL70, 4229EPL210, 4229EPV30, 4229GM40, 4229ELP200, 4229ELP50, 4229ELP590, 4229ELP400 FF, 4229EPR10, 4229EPR180, 4229EPI240, 4229EPI380, A1000, 4229EME20, 4229EME40, 4229EME130, 4229EME100, 4229EOF590, 4229EOF10, 4229EOF390, 4229EOF490, 4229EOF510, 4229EOF460, 4229EEL90, 4229EEL180, 4229EEL50, 4229EEL20, 4229EEL300, 4229EEL40, 4229EEL130, 4229EIN60, 4229EIN70, 4229EIN440, 4229EIN460, 4229EIN360, 4229EIN340, 4229EIN170, 4229EIN220, 4229EPL390, 4229EPL330, 4229EPL460, 4229EPL470, 4229EPL190, 4229EPL90, 4229EPL100, 4229EPL130, 4229EPV50, 4229EPV60, 4229ETE30, 4229ETE150, 4229GM10, 4229ELP530, 4229ELP140, 4229ELP250, 4229ELP160, 4229ELP350, 4229ELP600, 4229ELP60, 4229EPR50, 4229EPR150, 4229EPI40, 4229EPI230, 4229EPI500, 4229EPI180, 4229EPI10, 4229EPI300, 4229EME160, 4229EOF310, 4229EOF130, 4229EOF420, 4229EOF30, 4229EOF500, 4229EOF530, 4229EOF470, 4229EOF190, 4229EOF430, 4229EIN450, 4229EIN520, 4229EIN300, 4229EIN590, 4229EIN550, 4229EIN230, 4229EIN110, 4229EIN20, 4229EPL290, 4229EPL410, 4229EPL280, 4229EPL80, 4229EPV20, 4229GM130, 4229GM60, 4229ELP460, 4229ELP470, 4229ELP10, 4229ELP280, 4229ELP560, 4229EPR220, 4229EPR210, 4229EPR230, 4229EPR160, 4229EPR130, 4229EPR40, 4229EPI60, A1020, 4229EPI250, 4229EME50, 4229EME150, 4229EOF580, 4229EOF290, 4229EOF600, 4229EOF280, 4229EOF350, 4229EOF340, 4229EOF100, 4229EOF110, 4229EEL100, 4229EEL60, 4229EIN200, 4229EIN420, 4229EIN190, 4229EIN540, 4229EIN380, 4229EIN350, 4229EIN90, 4229EIN30, 4229EIN260, 4229EIN10, 4229EPL380, 4229EPL200, 4229EPL300, 4229EPV40, 4229GM20, 4229ELP510, 4229ELP110, 4229ELP30, 4229ELP300, 4229ELP540, 4229ELP550, Issue GA's / ISO's -construction(first batch), 4229EPI170, 4229EPI370, 4229EME90, 4229EME60, 4229EOF410, 4229EOF270 FS+5d, 4229EOF550, 4229EOF230, 4229EOF140, 4229EOF240, 4229EOF50, 4229EOF630, 4229EEL250, 4229EEL260, 4229EEL220, 4229EEL290, 4229EEL70, 4229EEL230, 4229EIN240, 4229EIN400, 4229EIN390, 4229EIN370, 4229EIN290, 4229EIN80, 4229EPL240, 4229EPL320, 4229EPL260, 4229EPL270, 4229EPL50, 4229EPL30, 4229EPL110, 4229EPL360, 4229EPL180, 4229EPL40, A1630, 4229GM70, 4229GM50, 4229GM30, 4229ELP360, 4229ELP150, 4229ELP20, 4229ELP610, 4229ELP330, 4229EPR30, 4229EPR70, 4229EPR60, 4229EPR200, 4229EPI20, 4229EME30, 4229EME80, 4229EME110, 4229EOF610, 4229EOF20, 4229EOF160, 4229EOF60, 4229EOF70, 4229EOF330, 4229EOF300, 4229EEL80, 4229EIN280, 4229EIN140, 4229EIN150, 4229EIN120, 4229EIN330, 4229EIN50, 4229EPL310, 4229EPL230, 4229EPL400, 4229EPL120, 4229EPL370, 4229EPV10, 4229ETE160, 4229PFV210, 4229EME210 → 4229GM80, 4229ELP500, 4229ELP70, 4229ELP80, 4229ELP230, 4229ELP260, 4229ELP390, 4229ELP40, 4229ELP480, 4229ELP90, 4229ELP410, 4229ELP100, 4229ELP120, 4229ELP180, 4229ELP340, 4229ELP240, 4229ELP270, 4229ELP170, 4229ELP570, 4229EPR90, 4229EPR120, 4229EPR190, 4229EPI80, 4229EPI160, 4229EPI230, 4229EPI250, 4229EPI50, 4229EPI30, A1010, 4229EME70, 4229EME10, 4229EOF260, 4229EOF560, 4229EOF440, 4229EOF80, 4229EOF480, 4229EEL120, 4229EEL30, 4229EIN100, 4229EIN410, 4229EIN430, 4229EIN270, 4229EIN250, 4229EIN210, 4229EPL420, 4229EPL450, 4229EPL490, 4229EPL20, 4229EPL140, 4229EPL150, 4229ETE20, 4229ETE10, 4229GM90, 4229ELP450, 4229ELP490, 4229ELP190, 4229ELP290, 4229EPR110, 4229EPR170, 4229EPR20, 4229EPR80, 4229EPI170, 4229EPI110, 4229EPI70, 4229EPI200, 4229EOF520, 4229EOF150, 4229EOF40, 4229EOF320, 4229EOF380, 4229EOF250, 4229EEL270, 4229EEL110, 4229EEL160, 4229EEL240, 4229EEL150, 4229EEL140, 4229EIN470, 4229EIN530, 4229EIN310, 4229EPR300, 4229EIN180, 4229EIN40, 4229EPL170, 4229EPL350, 4229EPL440, 4229EPL480, 4229EPL340, 4229EPL250, 4229EPL10, 4229ELP520, 4229ELP220, 4229ELP380, 4229ELP370, 4229ELP130, 4229ELP210, 4229EPR100, 4229EPR140, 4229EPI130, 4229EPI150, 4229EME140, 4229EOF200, 4229EOF170, 4229EOF570, 4229EOF450, 4229EOF90, 4229EOF370, 4229EOF180, 4229EEL190, 4229EEL200, 4229EEL10, 4229EIN130, 4229EIN560, 4229EIN160, 4229EPL430, 4229EPL160, 4229EPL220, 4229EPL60, 4229EPL70, 4229EPL210, 4229EPV30, 4229ELP200, 4229ELP50, 4229ELP590, 4229ELP400 FF, 4229EPR10, 4229EPR180, 4229EPI120, 4229EPI180, A1000, 4229EME20, 4229EME40, 4229EME130, 4229EME100, 4229EOF590, 4229EOF10, 4229EOF390, 4229EOF490, 4229EOF510, 4229EOF460, 4229EEL90, 4229EEL180, 4229EEL50, 4229EEL20, 4229EEL300, 4229EEL40, 4229EEL130, 4229EIN60, 4229EIN70, 4229EIN440, 4229EIN460, 4229EIN340, 4229EIN170, 4229EIN220, 4229EPL390, 4229EPL330, 4229EPL460, 4229EPL470, 4229EPL190, 4229EPL90, 4229EPL100, 4229EPL130, 4229EPV50, 4229EPV60, 4229ETE30, 4229ETE150, 4229GM10, 4229ELP530, 4229ELP140, 4229ELP250, 4229ELP160, 4229ELP350, 4229ELP600, 4229ELP60, 4229EPR50, 4229EPR150, 4229EPI40, 4229EPI100, 4229EPI220, 4229EPI260, 4229EPI10, 4229EPI140, 4229EME160, 4229EOF310, 4229EOF130, 4229EOF420, 4229EOF30, 4229EOF500, 4229EOF530, 4229EOF470, 4229EOF190, 4229EOF430, 4229EIN450, 4229EIN520, 4229EIN300, 4229EIN590, 4229EIN550, 4229EIN230, 4229EIN110, 4229EIN20, 4229EPL290, 4229EPL410, 4229EPL280, 4229EPL80, 4229EPV20, 4229GM130, 4229GM60, 4229ELP460, 4229ELP470, 4229ELP10, 4229ELP280, 4229ELP560, 4229EPR220, 4229EPR210, 4229EPR230, 4229EPR160, 4229EPR130, 4229EPR40, 4229EPI60, A1020, 4229EME50, 4229EME150, 4229EOF580, 4229EOF290, 4229EOF600, 4229EOF280, 4229EOF350, 4229EOF340, 4229EOF100, 4229EOF110, 4229EEL100, 4229EEL60, 4229EIN200, 4229EIN420, 4229EIN190, 4229EIN540, 4229EIN380, 4229EIN90, 4229EIN30, 4229EIN260, 4229EIN10, 4229EPL380, 4229EPL200, 4229EPL300, 4229EPV40, 4229GM20, 4229ELP510, 4229ELP110, 4229ELP30, 4229ELP300, 4229ELP540, 4229ELP550, 4229EPI190, 4229EPI240, 4229EPI270, 4229EME90, 4229EME60, 4229EOF410, 4229EOF270 FS+5d, 4229EOF550, 4229EOF230, 4229EOF140, 4229EOF240, 4229EOF50, 4229EOF630, 4229EEL250, 4229EEL260, 4229EEL220, 4229EEL290, 4229EEL70, 4229EEL230, 4229EIN240, 4229EIN400, 4229EIN390, 4229EIN370, 4229EIN290, 4229EPL240, 4229EPL320, 4229EPL260, 4229EPL270, 4229EPL50, 4229EPL30, 4229EPL110, 4229EPL360, 4229EPL180, 4229EPL40, A1630, 4229GM70, 4229GM50, 4229GM30, 4229ELP360, 4229ELP150, 4229ELP20, 4229ELP610, 4229ELP330, 4229EPR30, 4229EPR70, 4229EPR60, 4229EPR200, 4229EPI20, 4229EME30, 4229EME80, 4229EME110, 4229EOF610, 4229EOF20, 4229EOF160, 4229EOF60, 4229EOF70, 4229EOF330, 4229EOF300, 4229EEL80, 4229EIN280, 4229EIN140, 4229EIN150, 4229EIN120, 4229EIN330, 4229EPL310, 4229EPL230, 4229EPL400, 4229EPL120, 4229EPL370, 4229EPV10, 4229ETE160, 4229PFV210, 4229EME210, 4229EPI430, 4229EPI500, 4229EPI490, 4229EIN50, 4229EEL170, 4229EPI410, 4229EIN80, 4229EIN360, 4229ELP1010, 4229EPI390, 4229EPI300, 4229EPI210, 4229EPI440, 4229EPI370, 4229EPI290, 4229EIN320, 4229EPI310, 4229EPI280, 4229EPI380, 4229EEL210, 4229EIN350, 4229GM40, 4229EPI400 |  |
| 4229GM110 | Material delivered at site- except additional shutdown valve (offshore installation) |  |  |  |  | 253d → 39d | 4229PSV100, 4229PPB100, 4229PIB100, 4229PFI100, 4229PFF70, 4229PRS100, 4229PMP100 FF, 4229PSU100, 4229PNA100, 4229PEB100, 4229PIB1090, 4229PRV100, 4229PVE100, 4229PTA100, 4229POV100 → 4229PSV100, 4229PIB100, 4229PFI100, 4229PSG100, 4229PRS100, 4229PMP100 FF, 4229PSU100, 4229PNA100, 4229PEB100, 4229PIB1090, 4229PRV100, 4229PVE100, 4229PTA100, 4229POV100, 4229PPB100 | was named Material delivered at site- except Choke valve (offshore installation) |
| 4229GM120 | Enppi scope completion | 2013-03-11 → 2013-02-24 (-15d) | 2013-03-11 → 2013-02-24 (-15d) |  |  | 199d → 0d | 4229PTA100 FF, 4229PKR100, 4229PIJ100, 4229PHB110, 4229PPB120 FF, 4229PNA100 FF, 4229PIB1090 FF, 4229EIN510 FF, 4229EPL500 FF, 4229EPL510 FF, 4229PMP100 FF, 4229PSU100 FF, 4229PEB100 FF, 4229PFI100 FF, 4229GM100 FF, 4229EPL530 FF, 4229PHS100, 4229PFF100 FF, 4229PPB100 FF, 4229PPV110 FF, 4229PRV100 FF, 4229PVE100 FF, 4229PPL120, 4229PFG100 FF, 4229PFG170 FF, 4229PCP100 FF, 4229PSV100 FF, 4229POV100 FF, 4229PPV120 FF, 4229GM110 FF, 4229EPL520 FF, 4229EPL540 FF, 4229PFF70 FF, 4229ELP580 FF, 4229EIN500 FF, 4229EIN490 FF, 4229EPV70 FF, 4229PAF100, 4229EIN480 FF, 4229EPL550 FF, 4229EPV80 FF, 4229PFL100, 4229PTR100 FF, 4229PIB100 FF, 4229PCV100 FF, 4229PCI100 FF, 4229ELP620 FF, 4229EEL280 FF → 4229PTA100 FF, 4229PKR100, 4229PIJ100, 4229PHB110, 4229PPB120 FF, 4229PNA100 FF, 4229PIB1090 FF, 4229EIN510 FF, 4229EPL500 FF, 4229EPL510 FF, 4229PMP100 FF, 4229PSU100 FF, 4229PEB100 FF, 4229PFI100 FF, 4229GM100 FF, 4229EPL530 FF, 4229PHS100, 4229PFF100 FF, 4229PRV100 FF, 4229PVE100 FF, 4229PPL120, 4229PFG100 FF, 4229PFG170 FF, 4229PCP100 FF, 4229PSV100 FF, 4229POV100 FF, 4229GM110 FF, 4229EPL520 FF, 4229EPL540 FF, 4229PSG100 FF, 4229ELP580 FF, 4229EIN500 FF, 4229EIN490 FF, 4229EPV70 FF, 4229EIN480 FF, 4229EPL550 FF, 4229EPV80 FF, 4229PFL100, 4229PTR100 FF, 4229PIB100 FF, 4229PCV100 FF, 4229PCI100 FF, 4229ELP620 FF, 4229EEL280 FF, 4229GM130, 4229PFG65 FF, 4229PLS35 FF, 4229PFF70 FF, 4229PPB100 FF, 4229PAF100, 4229PPV110 FF, 4229PPV120 FF, 4229PFV210 |  |
| 5 | **L/O & Sea Fastening** | 2012-09-15 → 2012-07-05 (-72d) | 2013-04-07 → 2013-07-06 (+90d) |  |  |  |  |  |
| 3 | **01st Trip (P/L Spools 18" & 8")** | 2012-09-15 → 2012-07-05 (-72d) | 2012-10-22 → 2012-07-24 (-90d) |  |  |  |  |  |
| LOPS02 | 1st Shipment Material Barge Preparation | 2012-10-03 → 2012-07-05 (-90d) | 2012-10-17 → 2012-07-18 (-91d) |  |  | 136d → 678d | Arrival of 01st Shipment Material Barge ( P/L Spools) → none |  |
| LOPS03 | L/O & Sea Fastening (P/L Spools 18" & 8") | 2012-10-18 → 2012-07-19 (-91d) | 2012-10-22 → 2012-07-24 (-90d) |  |  | 136d → 678d |  |  |
| 1 | **02nd Trip (Jacket & Piles)** | 2012-12-01 → 2012-07-05 (-149d) | 2013-01-31 → 2012-07-28 (-187d) |  |  |  |  |  |
| LOJK02 | 02nd Shipment Material Barge Preparation | 2013-01-09 → 2012-07-05 (-188d) | 2013-01-22 → 2012-07-18 (-188d) |  |  | 26d → 675d | Arrival of 02nd Shipment Material Barge ( Jacket and Piles ), Arrival of 02nd Shipment Material Barge ( Jacket and Piles ) SS → none |  |
| LOJK03 | L/O & Sea fastening ( Jacket & Piles ) | 2013-01-23 → 2012-07-19 (-188d) | 2013-01-31 → 2012-07-28 (-187d) |  |  | 26d → 675d |  |  |
| 2 | **03rd Trip ( Deck)** |  | 2013-04-07 → 2013-07-06 (+90d) |  |  |  |  |  |
| LODK02 | 3rd Shipment Material Barge Preparation | 2013-03-17 → 2013-03-02 (-15d) | 2013-03-30 → 2013-03-14 (-16d) |  |  | 0d → -16d |  |  |
| LODK03 | L/O & Sea fastening ( Deck) | 2013-03-31 → 2013-06-29 (+90d) | 2013-04-07 → 2013-07-06 (+90d) |  |  | 0d → -103d | LODK02 → LODK02, DS008 |  |
| 7 | **General activities** |  | 2012-06-04 → 2012-07-02 (+28d) |  |  |  |  |  |
| 4229GM130 | Internal Design Review meeting | 2012-06-03 → 2012-07-01 (+28d) | 2012-06-04 → 2012-07-02 (+28d) |  |  | 333d → 159d |  |  |
| 1 | **Process** |  | 2012-08-02 → 2012-08-30 (+28d) |  |  |  |  |  |
| 1 | **Drawings /lists** |  | 2012-07-10 → 2012-07-12 (+2d) |  |  |  |  |  |
| 4229EPR120 | Issue P&ID'S / Equipment list-Design |  |  |  |  |  | 4229EPR280, 4229EPR40 FS+10d, 4229EPR80 → 4229EPR280, 4229EPR40 FS+10d, 4229EPR80, I136 |  |
| 4229EPR180 | Issue P&ID'S / Equipment list-Construction | 2012-06-10 → 2012-06-03 A (-7d) | 2012-06-28 → 2012-06-26 A (-2d) |  | 0% → 100% | 136d → none |  |  |
| 4229EPR190 | Isuue PFD's / UFD's & material balance -Construction | 2012-04-19 A → 2012-06-27 A (+69d) |  | 10d → 5d | 90% → 0% | 305d → 151d |  |  |
| 4229EPR200 | C&E -Construction | 2012-07-01 → 2012-07-08 (+7d) | 2012-07-10 → 2012-07-12 (+2d) | 8d → 5d |  | 291d → 135d |  |  |
| 2 | **Reports** |  | 2012-07-31 → 2012-08-07 (+7d) |  |  |  |  |  |
| 4229EPR210 | Commissioning ,Pre-commissioning & operating philosophy-IFA | 2012-07-01 → 2012-07-08 (+7d) | 2012-07-12 → 2012-07-19 (+7d) |  |  | 292d → 133d |  |  |
| 4229EPR230 | Commissioning ,Pre-commissioning & operating philosophy-Final | 2012-07-22 → 2012-07-29 (+7d) | 2012-07-31 → 2012-08-07 (+7d) |  |  | 292d → 133d |  |  |
| 3 | **MRQ's** |  | 2012-08-02 → 2012-08-30 (+28d) |  |  |  |  |  |
| 4229EPR250 | V.P.R for chemical injection |  | 2012-07-05 → 2012-07-15 (+10d) |  | 60% → 88% | 310d → 146d |  |  |
| 4229EPR240 | V.P.R for P.S.V |  | 2012-08-02 → 2012-08-30 (+28d) |  | 0% → 12% | 290d → 121d |  |  |
| 1 | **Drawings /lists** |  | 2012-08-30 → 2012-08-29 (-1d) |  |  |  |  |  |
| 4229ELP40 | Hazardous area classification schedule-IFA |  |  |  |  |  | 4229EPI40 → 4229EPI40, 4229EPI110 |  |
| 4229ELP150 | Hazardous area classification schedule-IFD |  |  |  |  |  | 4229EPI80 → 4229EPI80, 4229EPI220 |  |
| 4229ELP70 | F& G detection layout -Approval |  |  |  |  |  | 4229EPI40 → 4229EPI40, 4229EPI110 |  |
| 4229ELP80 | Firefighting, Safety equipment & escape route layout-Approval |  |  |  |  |  | 4229EPI40 FS+5d → 4229EPI40 FS+5d, 4229EPI110 FS+5d | was named Fire fighting, Safety equipment & escape route layout-Approval |
| 4229ELP220 | F& G detection layout -Design |  |  |  |  |  | 4229EPI80 FS+10d → 4229EPI80 FS+10d, 4229EPI220 FS+10d |  |
| 4229ELP230 | Fire fighting, Safety equipment & escape route layout-Design |  |  |  |  |  | 4229EPI80 → 4229EPI80, 4229EPI220 |  |
| 4229ELP520 | F&G installation details -Design |  | 2012-06-03 A |  |  | 330d → none |  |  |
| 4229ELP360 | F& G detection layout -Construction | 2012-07-22 → 2012-07-19 (-3d) | 2012-08-09 → 2012-08-08 (-1d) |  |  | 280d → 127d | 4229EPI390 → 4229EPI160, 4229EPI390 |  |
| 4229ELP370 | Hazardous area classification schedule-IFC | 2012-07-22 → 2012-07-19 (-3d) | 2012-07-24 → 2012-07-23 (-1d) |  |  | 277d → 124d | 4229EPI390 → 4229EPI160, 4229EPI390 |  |
| 4229ELP380 | Fire fighting, Safety equipment & escape route layout-Construction | 2012-07-22 → 2012-07-19 (-3d) | 2012-08-02 → 2012-08-01 (-1d) |  |  | 275d → 122d | 4229EPI390 → 4229EPI160, 4229EPI390 |  |
| 4229ELP390 | F& G cable routing -Construction | 2012-07-29 → 2012-07-26 (-3d) | 2012-08-09 → 2012-08-08 (-1d) |  |  | 275d → 122d |  |  |
| 4229ELP470 | F& G cable list -Construction | 2012-08-05 → 2012-08-02 (-3d) | 2012-08-09 → 2012-08-08 (-1d) |  |  | 280d → 127d |  |  |

| ID | Task | Start | Finish | Duration | Complete | Total float | Predecessors | Other |
| --- | --- | --- | --- | --- | --- | --- | --- | --- |
| 4229ELP500 | Interconnection wiring diagram-Construction | 2012-08-05 → 2012-08-02 (-3d) | 2012-08-16 → 2012-08-15 (-1d) |  |  | 275d → 122d |  |  |
| 4229ELP530 | F&G installation details -Construction | 2012-08-26 → 2012-08-16 (-10d) | 2012-08-30 → 2012-08-29 (-1d) |  |  | 275d → 122d |  |  |
| 4229ELP100 | Fire & explosion HAZARD analysis- Approval |  |  |  |  |  | 4229EPI40 → 4229EPI40, 4229EPI110 |  |
| 4229ELP200 | QRA -Approval |  |  |  |  |  | 4229EPI80 FS+15d → 4229EPI80 FS+15d, 4229EPI220 FS+15d |  |
| 4229ELP210 | HAZOP close out report |  | 2012-06-10 → 2012-07-01 (+21d) |  | 60% → 93% | 296d → 127d |  |  |
| 4229ELP240 | HAZID report |  |  |  |  |  | 4229EPI80 FS+10d → 4229EPI80 FS+10d, 4229EPI220 FS+10d |  |
| 4229ELP280 | PSSR report-Approval |  |  |  |  |  | 4229EPI80 FS+20d → 4229EPI80 FS+20d, 4229EPI220 FS+20d |  |
| 4229ELP120 | SAMS report-Approval | 2012-06-11 → 2012-07-02 (+21d) | 2012-06-24 → 2012-07-15 (+21d) |  |  | 296d → 127d |  |  |
| 4229ELP180 | SAMS report-Final | 2012-07-02 → 2012-07-23 (+21d) | 2012-07-15 → 2012-08-05 (+21d) |  |  | 296d → 127d |  |  |
| 4229ELP340 | HAZARD register | 2012-07-16 → 2012-08-06 (+21d) | 2012-07-25 → 2012-08-15 (+21d) |  |  | 296d → 127d |  |  |
| 4229ELP60 | MRQ for fire fighting system |  |  |  |  |  | 4229EPI40 → 4229EPI40, 4229EPI110 |  |
| 4229ELP600 | T.E.R for life saving equipment |  |  |  |  |  | 4229PFG120 → 4229PFG120, 4229PLS15 |  |
| 4229ELP560 | T.E.R for fire & Gas detection |  |  |  |  |  | 4229PFG15 → 4229PFG20, 4229PFG15 |  |
| 4229ELP610 | MRP for life saving equipment |  |  |  |  |  | 4229PFG140 → 4229PFG140, 4229PLS60 |  |
| 4229ELP620 | V.P.R for life saving equipment |  |  |  |  |  | 4229PFG160 SS+30d → 4229PFG160 SS+30d, 4229PLS30 SS+30d |  |
| 4229ELP570 | MRP for fire & Gas detection |  |  |  |  |  | 4229PFG40 → 4229PFG60, 4229PFG40 |  |
| 4229ELP580 | V.P.R for fire & Gas detection | 2012-07-15 → 2012-06-10 A (-35d) | 2012-09-06 → 2012-08-01 (-36d) |  | 0% → 60% | 270d → 137d | 4229PFG90 SS+30d → 4229PFG90 SS+30d, 4229PFG60 SS+30d |  |
| 4229ELP330 | MRP for fire fighting system | 2012-06-27 → 2012-06-25 A (-2d) | 2012-07-03 → 2012-07-08 (+5d) |  | 0% → 100% | 189d → 60d | 4229PFF45 → 4229PFF60, 4229PFF45 FF |  |
| 4229ELP400 | V.P.R for fire fighting system |  |  |  |  | 250d → 96d | 4229PFF90 SS+30d → 4229PFF90 SS+30d, 4229PFF65 SS+30d |  |
| 2 | **Piping** |  | 2012-09-30 → 2012-08-30 (-31d) |  |  |  |  |  |
| 1 | **Drawing/ lists** |  | 2012-09-06 → 2012-08-30 (-7d) |  |  |  |  |  |
| 4229EPI170 | Piping & Valves classes - Approval (Deleted) |  |  |  |  |  | 4229EPR40 → 4229EPI190 FF+1d, 4229EPR180, 4229EPR40 |  |
| 4229EPI180 | Piping & Valves classes - Design |  |  |  |  |  | 4229EPR120 → 4229EPR180, 4229EPR120 |  |
| 4229EPI230 | Issue GA's -Approval |  |  |  |  |  | 4229EPI40 → 4229EPI190 SS+20d, 4229EPI110 |  |
| 4229EPI240 | Line designation table -Design |  |  |  |  |  | 4229EPR120, 4229EPI20 FS+5d → 4229EPR40, 4229EPI210 FS+5d, 4229EPR120 |  |
| 4229EPI280 | Issue GA's -Design |  |  |  |  |  | 4229EPI80 FF → 4229EPI190, 4229EPI220 FF |  |
| 4229EPI370 | Piping & Valves classes - Construction | 2012-07-01 → 2012-06-27 A (-4d) | 2012-07-05 → 2012-07-08 (+3d) |  | 0% → 80% | 310d → 155d |  |  |
| 4229EPI380 | Line designation table -Construction |  |  |  |  | 297d → 0d | 4229EPR180 → none | constraint none → start on 2012-07-01 |
| 4229EPI390 | Issue plot plans-Construction | 2012-07-01 → 2012-07-08 (+7d) | 2012-07-19 → 2012-07-18 (-1d) | 15d → 9d |  | 136d → 20d |  |  |
| 4229EPI440 | Hydrotest maps & loops- Construction |  |  |  |  | 289d → 135d | Issue GA's / ISO's -construction(first batch) FF+1d, 4229EPR180 → 4229EPR180, 4229EPI430 FF+1d |  |
| 4229EPI500 | Piping supports list / MTO -IFC | 2012-08-26 → 2012-08-12 (-14d) | 2012-09-06 → 2012-08-30 (-7d) |  |  | 265d → 116d | Issue GA's / ISO's -construction(first batch), Issue GA's / ISO's -construction(Second batch)- Final MTO FF+5d → 4229EPI430, 4229EPI460 FF+5d |  |
| 4229EPI490 | Standard pipe supports -Construction | 2012-08-26 → 2012-08-16 (-10d) | 2012-08-30 → 2012-08-29 (-1d) |  |  | 275d → 122d | Issue GA's / ISO's -construction(first batch) SS+20d → 4229EPI430 SS+20d |  |
| 3 | **Reports** |  | 2012-07-29 → 2012-07-26 (-3d) |  |  |  |  |  |
| 4229EPI410 | Stress analysis report |  | 2012-07-29 → 2012-07-26 (-3d) |  |  | 279d → 141d |  |  |
| 2 | **MRQ's** |  | 2012-09-30 → 2012-08-26 (-35d) |  |  |  |  |  |
| 4229EPI160 | T.E.R for L&R |  |  |  |  |  | 4229EPI30 SS, 4229EPI30 FF → 4229PPV90 SS, 4229PRV90 SS, 4229PSG90 SS, 4229PSU90 SS, 4229PNA90 SS, 4229PCV60, 4229EPR180, 4229PVE90 SS, 4229PCI90 SS, 4229PTR90 SS, 4229PMP90 SS, 4229PSV90 SS, 4229POV90 SS, 4229PTR20 |  |
| 4229EPI190 | Issue MRQ for Gate, Globe & butterfly valves |  |  |  |  |  | none → 4229EPI160 |  |
| 4229EPI250 | T.E.R for Piping bulk |  |  |  |  |  | 4229PPB20 → 4229EPI180, 4229PPB20 |  |
| 4229EPI270 | T.E.R for Piping Ball Valves |  |  |  |  |  | none → 4229EPR180 |  |
| 4229EPI260 | T.E.R for Piping Gate, Globe & Butterfly valves |  |  |  |  |  | 4229PPV20 → 4229EPR120, 4229PPV20 |  |
| 4229EPI290 | MRP for L&R |  | 2012-02-19 A → 2012-02-20 A (+1d) |  |  |  | 4229EPI70 SS, 4229EPI70 FF → 4229PTR60 |  |
| 4229EPI300 | MRP for Piping bulk |  |  |  |  |  | 4229PPB60 → 4229PBV70, 4229PPB60 |  |
| 4229EPI420 | V.P.R for launcher & receiver traps |  | 2012-09-30 → 2012-07-29 (-63d) |  | 0% → 75% | 254d → 140d |  |  |
| 4229EPI320 | MRP for Piping Ball Valves |  |  |  |  |  | 4229PBV70 → 4229PAP110, 4229PBV70 |  |
| 4229EPI360 | Additional piping bulk T.E.R | 2012-06-11 → 2012-06-14 A (+3d) | 2012-07-08 → 2012-07-01 (-7d) |  | 0% → 95% | 168d → 87d |  |  |
| 4229EPI450 | Additional piping bulk MRP | 2012-08-08 → 2012-08-01 (-7d) | 2012-08-14 → 2012-08-07 (-7d) |  |  | 275d → 126d |  |  |
| 3 | **Mechanical** |  | 2012-12-05 → 2012-12-06 (+1d) |  |  |  |  |  |
| 4229EME70 | Final Motor load list | 2012-07-01 → 2012-07-08 (+7d) | 2012-07-05 → 2012-07-09 (+4d) | 5d → 2d |  | 295d → 139d |  |  |
| 4229EME50 | Material handling study IFA |  |  |  |  |  | 4229EPI40 → 4229EPI40, 4229EPI110 |  |
| 4229EME90 | Final Material handling study |  |  |  |  |  | 4229EPI80 → 4229EPI80, 4229EPI220 |  |
| 3 | **MRQ's / specifications** |  | 2012-12-05 → 2012-12-06 (+1d) |  |  |  |  |  |
| 4229EME180 | T.E.R. for Progressive cavity pump |  | 2012-06-05 → 2012-06-12 A (+7d) |  | 90% → 100% | 158d → none |  |  |
| 4229EME190 | V.P.R for Progressive Cavity pump | 2012-07-05 → 2012-07-08 (+3d) | 2012-12-05 → 2012-12-06 (+1d) |  |  | 211d → 56d |  |  |
| 4229EME200 | MRP for Progressive Cavity pump | 2012-07-05 → 2012-07-08 (+3d) | 2012-07-11 → 2012-07-12 (+1d) |  |  | 296d → 141d |  |  |
| 8 | **Pressure vessels** |  | 2012-08-02 → 2012-09-06 (+35d) |  |  |  |  |  |
| 3 | **MRQ's** |  | 2012-08-02 → 2012-09-06 (+35d) |  |  |  |  |  |
| 4229EPV10 | Issue MRQ for Small Tanks |  |  |  |  |  | 4229GM10, 4229EPI40 → 4229GM10, 4229EPI40, 4229EPI110 |  |
| 4229EPV80 | V.P.R for Pressure Vesseles |  | 2012-08-02 → 2012-09-06 (+35d) |  |  | 290d → 116d |  |  |
| 4229EEL80 | Electrical layouts IFA |  |  |  |  |  | 4229EPI40 → 4229EPI40, 4229EPI110 |  |
| 4229EEL160 | Hazardous area classification layout -IFD |  |  |  |  |  | 4229EPI80 FF+5d → 4229EPI80 FF+5d, 4229EPI220 FF+5d |  |
| 4229EEL190 | Electrical cable routing layouts -Design |  |  |  |  |  | 4229EPI280, 4229EEL170 FF+5d → 4229EPI130, 4229EPI280, 4229EEL170 FF+5d |  |
| 4229EEL170 | Electrical layouts IFD |  |  |  |  |  | 4229EPI80 → 4229EPI220 |  |
| 4229EEL110 | Electrical Load analysis -Final | 2012-07-08 → 2012-07-10 (+2d) | 2012-07-12 → 2012-07-16 (+4d) |  |  | 295d → 139d |  |  |
| 4229EEL290 | Single line diagram -Construction | 2012-07-19 → 2012-07-17 (-2d) | 2012-08-01 → 2012-07-30 (-2d) |  |  | 291d → 139d |  |  |
| 4229EEL230 | Electrical layouts-Construction | 2012-07-22 → 2012-07-19 (-3d) | 2012-08-02 → 2012-08-01 (-1d) |  |  | 275d → 122d | 4229EPI390 → 4229EPI160, 4229EPI390 |  |
| 4229EEL240 | Hazardous area classification layout -IFC | 2012-07-25 → 2012-07-24 (-1d) | 2012-08-07 → 2012-08-06 (-1d) |  |  | 277d → 124d |  |  |
| 4229EEL260 | Electrical cable routing layouts -Construction |  |  |  |  | 270d → 116d | 4229EEL230 FF+5d, Issue GA's / ISO's -construction(first batch) → 4229EEL230 FF+5d, 4229EPI190, 4229EPI430 |  |
| 3 | **MRQ's** |  | 2012-09-06 → 2012-08-30 (-7d) |  |  |  |  |  |
| 4229EEL200 | T.E.R for Electrical bulk |  | 2012-06-03 → 2012-06-10 A (+7d) |  | 93% → 100% | 205d → none |  |  |
| 4229EEL280 | V.P.R for solar power unit |  | 2012-09-06 → 2012-08-30 (-7d) |  | 14% → 50% | 270d → 121d |  |  |

| ID | Task | Start | Finish | Duration | Complete | Total float | Predecessors | Other |
| --- | --- | --- | --- | --- | --- | --- | --- | --- |
| 4229EEL300 | V.P.R for Navigation aids |  | 2012-07-26 → 2012-07-01 (-25d) |  | 0% → 92% | 295d → 160d |  |  |
| 4229EEL210 | MRP for Electrical bulk | 2012-07-02 → 2012-07-10 (+8d) | 2012-07-08 → 2012-07-16 (+8d) |  |  | 205d → 56d |  |  |
| 6 | **Instrument** |  | 2012-12-05 → 2012-11-19 (-16d) |  |  |  |  |  |
| 1 | **Drawings /lists** |  | 2012-09-06 → 2012-08-30 (-7d) |  |  |  |  |  |
| 4229EIN120 | Instrument layouts -Approval |  |  |  |  |  | 4229EPI40 → 4229EPI40, 4229EPI110 |  |
| 4229EIN520 | Instrument wiring diagram-Approval |  |  |  |  |  | 4229EPI230 → 4229EPI100, 4229EPI230 |  |
| 4229EIN190 | Instrument hook-ups issued for approval |  |  |  |  |  | 4229EPI40 FS+15d → 4229EPI40 FS+15d, 4229EPI110 FS+15d |  |
| 4229EIN310 | Instrument hook-ups issued for design |  |  |  |  |  | 4229EPI80 FS+15d → 4229EPI80 FS+15d, 4229EPI220 FS+15d |  |
| 4229EIN530 | Instrument wiring diagram-Design |  |  |  |  |  | 4229EPI280 → 4229EPI130, 4229EPI280 |  |
| 4229EIN270 | Instrument layouts -Design |  |  |  |  |  | 4229EPI80 → 4229EPI80, 4229EPI220 |  |
| 4229EIN280 | Instrument cable / tubing routing layouts IFD |  |  |  |  |  | 4229EPI280 FF → 4229EPI130 FF, 4229EPI280 FF |  |
| 4229EIN580 | Instrument loop diagram-Design |  | 2012-06-04 → 2012-05-02 A (-33d) |  | 80% → 100% | 332d → none |  |  |
| 4229EIN400 | Instrument index issued for construction | 2012-07-01 → 2012-06-27 A (-4d) | 2012-07-05 → 2012-07-08 (+3d) |  | 0% → 80% | 305d → 150d |  |  |
| 4229EIN410 | Instrument I/O list issued for construction | 2012-07-08 → 2012-07-09 (+1d) | 2012-07-12 → 2012-07-15 (+3d) |  |  | 305d → 150d |  |  |
| 4229EIN420 | Functional loop diagram-Construction | 2012-07-11 → 2012-07-15 (+4d) | 2012-07-31 → 2012-08-02 (+2d) |  |  | 291d → 135d |  |  |
| 4229EIN440 | Instrument hook-ups issued for construction | 2012-07-22 → 2012-07-19 (-3d) | 2012-08-02 → 2012-08-01 (-1d) |  |  | 290d → 137d | 4229EPI390 → 4229EPI160, 4229EPI390 |  |
| 4229EIN450 | Instrument layouts -Construction | 2012-07-22 → 2012-07-19 (-3d) | 2012-08-02 → 2012-08-01 (-1d) |  |  | 275d → 122d | 4229EPI390 → 4229EPI160, 4229EPI390 |  |
| 4229EIN460 | Instrument cable / tubing routing layouts IFC | 2012-07-29 → 2012-07-26 (-3d) | 2012-08-09 → 2012-08-08 (-1d) |  |  | 275d → 122d | Issue GA's / ISO's -construction(first batch) FF, 4229EIN450 FF+5d → 4229EPI190 FF, 4229EIN450 FF+5d, 4229EPI430 FF |  |
| 4229EIN590 | Instrument loop diagram-Construction | 2012-08-01 → 2012-08-05 (+4d) | 2012-08-01 → 2012-08-05 (+4d) |  |  | 291d → 135d |  |  |
| 4229EIN470 | Instrument cable / tubing schedule for construction | 2012-08-12 → 2012-08-09 (-3d) | 2012-08-16 → 2012-08-15 (-1d) |  |  | 280d → 127d |  |  |
| 4229EIN430 | Instrument wiring diagram-Construction | 2012-08-26 → 2012-08-12 (-14d) | 2012-09-06 → 2012-08-30 (-7d) |  |  | 270d → 121d |  |  |
| 3 | **MRQ's** |  | 2012-12-05 → 2012-11-19 (-16d) |  |  |  |  |  |
| 4229EIN490 | V.P.R for MPFM |  | 2012-10-11 → 2012-10-15 (+4d) |  | 0% → 20% | 245d → 89d |  |  |
| 4229EIN360 | T.E.R for Instrument electrical bulk |  | 2012-06-03 A |  | 93% → 100% | 216d → none |  |  |
| 4229EPR300 | V.P.R for Shutdown valves |  | 2012-10-30 → 2012-11-15 (+16d) |  |  | 237d → 71d |  |  |
| 4229EIN290 | MRP for Choke valves |  | 2012-06-04 → 2012-06-05 A (+1d) |  | 60% → 100% | 213d → none |  |  |
| 4229EIN320 | MRP for pressure regulator valves |  | 2012-06-05 → 2012-05-31 A (-5d) |  | 40% → 100% | 151d → none |  |  |
| 4229EIN610 | Additional shutdown valves T.E.R |  | 2012-06-20 → 2012-06-25 A (+5d) |  | 0% → 100% | 160d → none |  |  |
| 4229EIN510 | V.P.R for Pressure regulator valves | 2012-07-08 → 2012-06-06 A (-32d) | 2012-11-22 → 2012-11-19 (-3d) |  | 0% → 3% | 220d → 69d |  |  |
| 4229EIN350 | MRP for field Instrument | 2012-06-24 → 2012-07-05 (+11d) | 2012-06-28 → 2012-07-11 (+13d) |  |  | 197d → 35d |  |  |
| 4229EIN380 | MRP for Instrument electrical bulk | 2012-07-02 → 2012-07-05 (+3d) | 2012-07-08 → 2012-07-11 (+3d) |  |  | 216d → 64d |  |  |
| 4229EIN500 | V.P.R for choke valves | 2012-07-19 → 2012-07-15 (-4d) | 2012-12-05 → 2012-09-13 (-83d) | 90d → 40d |  | 211d → 111d |  |  |
| 4229EIN620 | Additional shutdown valves MRP | 2012-07-18 → 2012-07-22 (+4d) | 2012-07-24 → 2012-07-26 (+2d) |  |  | 290d → 134d |  |  |
| 4229EIN540 | V.P.R for field instruments | 2012-09-05 → 2012-09-18 (+13d) | 2012-10-30 → 2012-11-12 (+13d) |  |  | 237d → 74d |  |  |
| 4229EIN560 | V.P.R for Instrument Electrical bulk | 2012-09-13 → 2012-09-18 (+5d) | 2012-10-10 → 2012-10-15 (+5d) |  |  | 246d → 89d |  |  |
| 1 | **Drawings /lists** |  | 2012-08-09 → 2012-08-08 (-1d) |  |  |  |  |  |
| 4229ETE100 | Telecommunication equipment layout IFA |  |  |  |  |  | 4229EPI40 → 4229EPI40, 4229EPI110 |  |
| 4229ETE110 | Telecommunication equipment layout IFD (Expected to be cancelled) | 2012-06-03 → 2012-07-01 (+28d) | 2012-06-05 → 2012-07-03 (+28d) |  |  | 317d → 143d | 4229EPI80 FS+90d, A1180 → 4229EPI80 FS+90d, A1180, 4229EPI220 FS+90d, 4229PRS25 |  |
| 4229ETE120 | Telecommunication equipment layout IFC (Expected to be cancelled) | 2012-07-22 → 2012-07-19 (-3d) | 2012-08-02 → 2012-08-01 (-1d) |  |  | 290d → 137d |  |  |
| 4229ETE150 | Telecommunication cable routing IFC | 2012-07-29 → 2012-07-26 (-3d) | 2012-08-09 → 2012-08-08 (-1d) |  |  | 285d → 132d |  |  |
| 4 | **Offshore** |  | 2012-09-20 → 2012-09-06 (-14d) |  |  |  |  |  |
| 4229EOF10 | Jacket primary steel Drawings-Approval |  |  |  |  |  | 4229EPI40 FF, 4229GM10 FS+44d → 4229EPI40 FF, 4229GM10 FS+44d, 4229EPI110 FF |  |
| 4229EOF130 | Deck primary steel Drawings- Approval |  |  |  |  |  | 4229EPI40 → 4229EPI40, 4229EPI110 |  |
| 4229EOF270 | General Drawings- Construction |  |  |  |  |  |  | was named Genral Drawings- Construction |
| 4229EOF280 | Cable trays supports -Approval |  | 2012-06-20 → 2012-07-15 (+25d) |  | 0% → 8% | 306d → 135d |  |  |
| 4229EOF550 | Deck primary steel Drawings- Construction |  | 2012-08-09 → 2012-07-26 (-14d) |  | 0% → 60% | 260d → 116d | 4229EPI390, 4229EOF130 FS+7d, 4229EOF130 FF, 4229EOF10 → 4229EPI160, 4229EOF130 FS+7d, 4229EOF130 FF, 4229EOF10, 4229EPI390 |  |
| 4229EOF560 | Deck secondary steel Drawings- Construction |  | 2012-09-06 → 2012-08-16 (-21d) |  |  | 260d → 116d |  |  |
| 4229EOF520 | Jacket Appurtenances Drawings-Construction | 2012-06-03 → 2012-06-17 A (+14d) | 2012-06-20 → 2012-06-26 A (+6d) | 14d → 0d | 0% → 100% | 321d → none |  |  |
| 4229EOF390 | Stairs drawings-Construction | 2012-07-22 → 2012-06-18 A (-34d) | 2012-08-02 → 2012-06-24 A (-39d) |  | 0% → 100% | 290d → none | 4229EPI390, 4229EOF290 FS+5d → 4229EPI160, 4229EOF290 FS+5d, 4229EPI390 |  |
| 4229EOF360 | Piping supports -Approval | 2012-07-30 → 2012-07-01 (-29d) | 2012-08-12 → 2012-07-10 (-33d) | 10d → 8d |  | 279d → 148d | 4229EPI280 FS+60d, 4229EPI410 → 4229EPI130 FS+60d, 4229EPI200, 4229EPI280 FS+60d |  |
| 4229EOF600 | Equipment fixation deatils-Construction |  |  |  |  | 287d → 133d | 4229PSG90 SS+53d, 4229EPI420 SS+42d, 4229EME120 SS+20d, 4229EPR250 SS+40d, 4229EPR240 SS+20d → 4229PSG90 SS+53d, 4229EPI210 SS+42d, 4229EME120 SS+20d, 4229EPR250 SS+40d, 4229EPR240 SS+20d, 4229EPI420 SS+42d |  |
| 4229EOF580 | Piping supports -Construction | 2012-08-13 → 2012-08-05 (-8d) | 2012-08-26 → 2012-08-09 (-17d) |  |  | 279d → 131d | 4229EOF360, Issue GA's / ISO's -construction(first batch) → 4229EOF360, 4229EPI190, 4229EPI430 |  |
| 2 | **Reports** |  | 2012-09-20 → 2012-09-06 (-14d) |  |  |  |  |  |
| 4229EOF240 | Deck miscellaneous design report-Approval |  | 2012-08-27 → 2012-07-18 (-40d) |  |  | 279d → 148d |  |  |
| 4229EOF610 | Topside weight control report- Final | 2012-09-09 → 2012-06-28 A (-73d) | 2012-09-18 → 2012-07-29 (-51d) |  | 0% → 100% | 262d → 131d |  |  |
| 4229EOF420 | In-place analysis design report-Final | 2012-08-05 → 2012-07-22 (-14d) | 2012-08-16 → 2012-08-02 (-14d) |  |  | 280d → 126d |  |  |
| 4229EOF500 | Deck transportation analysis report-Final | 2012-08-05 → 2012-07-22 (-14d) | 2012-08-16 → 2012-08-02 (-14d) |  |  | 280d → 136d |  |  |
| 4229EOF510 | Deck lifting analysis design report-Final | 2012-08-05 → 2012-07-22 (-14d) | 2012-08-16 → 2012-08-02 (-14d) |  |  | 280d → 136d |  |  |
| 4229EOF440 | Earthquake analysis design report-Final | 2012-08-12 → 2012-07-29 (-14d) | 2012-08-30 → 2012-08-09 (-21d) |  |  | 275d → 131d |  |  |
| 4229EOF470 | Pile foundation design report-Final | 2012-08-12 → 2012-07-29 (-14d) | 2012-08-30 → 2012-08-09 (-21d) |  |  | 275d → 131d |  |  |
| 4229EOF490 | Deck loadout analysis report-Final | 2012-08-12 → 2012-07-29 (-14d) | 2012-08-30 → 2012-08-09 (-21d) |  |  | 275d → 131d |  |  |
| 4229EOF530 | Deck miscellaneous design report-Final | 2012-08-12 → 2012-07-29 (-14d) | 2012-08-30 → 2012-08-09 (-21d) |  |  | 275d → 131d |  |  |
| 4229EOF570 | Constructability study report | 2012-08-15 → 2012-08-05 (-10d) | 2012-09-05 → 2012-08-16 (-20d) |  |  | 272d → 126d | 4229EOF610 FF-10d → 4229EOF610 FF-10d, 4229EOF610, 4229EOF420 |  |
| 4229EOF630 | Jacket miscellaneous design report-Final | 2012-09-09 → 2012-08-26 (-14d) | 2012-09-20 → 2012-09-06 (-14d) |  |  | 260d → 116d |  |  |
| 7 | **Pipeline** |  | 2012-09-13 → 2012-09-06 (-7d) |  |  |  |  |  |
| 1 | **Drawings /lists** |  | 2012-06-10 → 2012-06-11 (+1d) |  |  |  |  |  |
| 4229EPL160 | 18" spool arrangement drawing -Approval |  |  |  |  |  | 4229EOF10, 4229EPI40 → 4229EOF10, 4229EPI40, 4229EPI110 |  |
| 4229EPL480 | MTO for risers / spools | 2012-06-03 → 2012-05-28 A (-6d) | 2012-06-10 → 2012-06-11 A (+1d) |  | 0% → 100% | 329d → none |  |  |
| 2 | **Reports** |  | 2012-06-07 → 2012-06-05 (-2d) |  |  |  |  |  |
| 4229EPL490 | Risers / spoolpieces stress analysis report-Construction |  | 2012-06-07 → 2012-06-05 A (-2d) |  | 50% → 100% | 330d → none |  |  |

| ID | Task | Start | Finish | Duration | Complete | Total float | Predecessors |
| --- | --- | --- | --- | --- | --- | --- | --- |
| 3 | **MRQ's** |  | 2012-09-13 → 2012-09-06 (-7d) |  |  |  |  |
| 4229EPL510 | VPR for flanges |  | 2012-08-02 → 2012-07-15 (-18d) |  | 0% → 72% | 290d → 150d |  |
| 4229EPL570 | VPR for 8"line pipe |  | 2012-06-21 → 2012-07-01 (+10d) |  | 75% → 98% | 320d → 160d |  |
| 4229EPL500 | VPR for hot bends |  | 2012-08-02 → 2012-08-30 (+28d) |  | 0% → 12% | 290d → 121d |  |
| 4229EPL360 | Testing & pre-commissioning specification-Final | 2012-09-09 → 2012-09-02 (-7d) | 2012-09-13 → 2012-09-06 (-7d) |  |  | 265d → 116d | 4229EPL310, 4229EPI500, 4229EPL250 FS+5d, 4229EPL290, 4229EPL330, 4229EPL350 → 4229EPL310, 4229EPI220, 4229EPL250 FS+5d, 4229EPL290, 4229EPL330, 4229EPL350, 4229EPI500 |
| 3 | **Procurement** |  | 2013-03-11 → 2013-02-24 (-15d) |  |  |  |  |
| 13 | **Fire & gas detectors** |  | 2012-11-02 → 2012-12-06 (+34d) |  |  |  |  |
| 4229PFG20 | T.E.R for fire & Gas detection |  |  |  |  |  | 4229ELP560 SS, 4229ELP560 FF → 4229PFG10, 4229ELP560 FF, 4229ELP560 SS |
| 4229PFG55 | L.C issued by Gupco | 2012-06-03 → 2012-07-01 (+28d) | 2012-06-07 → 2012-07-05 (+28d) |  |  | 308d → 114d | 4229PIJ70 → 4229PFG50 |
| 4229PFG70 | P.O for Fire & gas detectors | 2012-06-03 → 2012-07-05 (+32d) | 2012-06-07 → 2012-07-11 (+34d) |  |  | 232d → 6d |  |
| 4229PFG80 | L.C issued by Gupco | 2012-06-10 → 2012-07-12 (+32d) | 2012-06-14 → 2012-07-18 (+34d) |  |  | 232d → 6d |  |
| 4229PFG90 | Fabrication upto R.F.S | 2012-06-15 → 2012-07-19 (+34d) | 2012-09-18 → 2012-10-22 (+34d) |  |  | 328d → 8d |  |
| 4229PFG65 | Delivery upto site | 2012-12-18 → 2012-08-27 (-113d) | 2013-01-29 → 2012-09-05 (-146d) | 45d → 10d |  | 240d → 174d | 4229PAP200 → 4229PFG60 |
| 4229PFG100 | Delivery upto site | 2012-09-19 → 2012-10-23 (+34d) | 2012-11-02 → 2012-12-06 (+34d) |  |  | 330d → 8d |  |
| 4229PSV90 | Fabrication upto R.F.S |  |  |  | 43% → 62% | 194d → 30d |  |
| 4229PSV80 | L.C issued by Gupco | 2012-06-03 → 2012-07-01 (+28d) | 2012-06-07 → 2012-07-05 (+28d) |  |  | 136d → 20d |  |
| 3 | **Fire fighting system** |  | 2013-01-01 → 2013-01-30 (+29d) |  |  |  |  |
| 4229PFF20 | Bidding for Fire fighting |  |  |  |  |  | 4229PFF10, 4229PFF110 → 4229PFF10, 4229PFF110, 4229PFF15 |
| 4229PFF30 | Receive revised commercial offers |  | 2012-06-05 → 2012-06-07 A (+2d) |  | 40% → 100% | 189d → none |  |
| 4229PFF35 | commercial evaluation & bid committee for Fire fighting | 2012-06-06 → 2012-06-10 A (+4d) | 2012-06-19 → 2012-06-10 A (-9d) |  | 0% → 100% | 189d → none |  |
| 4229PFF40 | Client approval on bid committee reccomendation | 2012-06-20 → 2012-06-12 A (-8d) | 2012-06-21 → 2012-07-02 (+11d) |  |  | 189d → 60d | 4229PFF35 → 4229PFF30, 4229ELP170, 4229PFF35 |
| 4229PFF50 | MRP for fire fighting system | 2012-06-27 → 2012-06-25 A (-2d) | 2012-07-03 → 2012-07-05 (+2d) |  |  | 189d → 60d |  |
| 4229PFF45 | F.O.C for Fire fighting | 2012-06-24 → 2012-07-03 (+9d) | 2012-06-26 → 2012-07-05 (+9d) |  |  | 189d → 60d |  |
| 4229PFF55 | P.O for Fire fighting | 2012-07-04 → 2012-07-08 (+4d) | 2012-07-10 → 2012-07-12 (+2d) |  |  | 189d → 60d |  |
| 4229PFF80 | L.C issued by Gupco | 2012-07-11 → 2012-08-12 (+32d) | 2012-07-17 → 2012-08-16 (+30d) |  |  | 189d → 455d | 4229PFF55 → 4229PFF70 |
| 4229PFF90 | Fabrication upto R.F.S | 2012-07-18 → 2012-08-17 (+30d) | 2012-11-18 → 2012-12-18 (+30d) |  |  | 267d → 639d | 4229PFF80, 4229PFF55 → 4229PFF80, 4229PFF70 |
| 4229PFF70 | Delivery upto site | 2012-12-07 → 2012-10-24 (-44d) | 2012-12-15 → 2012-12-07 (-8d) | 9d → 45d |  | 287d → 81d | 4229PSG90 → 4229ELP330, 4229PFF65 |
| 4229PFF100 | Delivery upto site | 2012-11-19 → 2012-12-19 (+30d) | 2013-01-01 → 2013-01-30 (+29d) |  |  | 269d → 641d |  |
| 4229PCI90 | Fabrication upto R.F.S |  |  |  | 57% → 77% | 194d → 30d |  |
| 4229PCI80 | L.C issued by Gupco | 2012-06-03 → 2012-07-01 (+28d) | 2012-06-07 → 2012-07-05 (+28d) |  |  | 136d → 20d |  |
| 4229PFG130 | commercial evaluation & bid committee for Life saving equipment |  |  |  |  |  | 4229PLS40 → none |
| 4229PFG140 | F.O.C for Life saving equipment |  |  |  |  |  | 4229PFG130, 4229PLS45 → 4229PFG130 |
| 4229PLS45 | Client approval on bid committee reccomendation |  |  |  |  |  | 4229PFG130 → 4229PLS55 |
| 7 | **Piping Bulk** |  | 2013-03-11 → 2013-01-25 (-45d) |  |  |  |  |
| 4229PPB10 | Issue RFQ for Piping bulk |  |  |  |  |  | 4229GM10, 4229EPI60 → 4229GM10, 4229EPI60, 4229EPI120 |
| 4229PPB70 | P.O for Piping bulk |  |  |  |  |  | 4229EPI300 → 4229EPI140, 4229EPI300 |
| 4229PPB90 | Fabrication upto R.F.S (1st Batch) |  |  |  | 45% → 73% | 365d → 151d |  |
| 4229PPB80 | L.C issued by Gupco | 2012-06-03 → 2012-07-01 (+28d) | 2012-06-07 → 2012-07-05 (+28d) |  |  | 259d → 105d |  |
| 4229PPB110 | Fabrication upto R.F.S for minimal piping balance | 2012-09-28 → 2012-09-14 (-14d) | 2013-01-25 → 2013-01-11 (-14d) |  |  | 199d → 30d | Issue GA's / ISO's -construction(first batch), Issue GA's / ISO's -construction(Second batch)- Final MTO FS+20d → 4229EPI190, 4229EPI280 FS+20d, 4229EPI430, 4229EPI460 FS+15d |
| 4229PPB120 | Delivery upto site (2nd Batch) for minimal piping balance | 2013-01-26 → 2013-01-12 (-14d) | 2013-03-11 → 2013-01-25 (-45d) | 45d → 14d |  | 199d → 30d |  |
| 35 | **Additional piping bulk** |  | 2013-01-29 → 2012-10-24 (-97d) |  |  |  |  |
| 4229PAP110 | Bidding for Piping bulk |  | 2012-06-10 → 2012-06-13 A (+3d) |  | 64% → 100% | 236d → none |  |
| 4229PAP120 | T.E.R for Piping bulk | 2012-06-11 → 2012-06-14 A (+3d) | 2012-07-08 → 2012-07-01 (-7d) |  | 0% → 95% | 168d → 87d | 4229EPI360 SS, 4229EPI360 FF → 4229EPI320 SS, 4229EPI320 FF, 4229EPI360 FF, 4229EPI360 SS |
| 4229PAP130 | Receive revised commercial offers | 2012-07-09 → 2012-07-02 (-7d) | 2012-07-15 → 2012-07-08 (-7d) |  |  | 168d → 87d | 4229EPI360 → 4229EPI320, 4229EPI360 |
| 4229PAP140 | commercial evaluation & bid committee for Piping bulk | 2012-07-16 → 2012-07-09 (-7d) | 2012-07-31 → 2012-07-24 (-7d) |  |  | 168d → 87d |  |
| 4229PAP150 | Client approval on bid committee reccomendation | 2012-08-01 → 2012-07-25 (-7d) | 2012-08-02 → 2012-07-26 (-7d) |  |  | 168d → 87d |  |
| 4229PAP160 | F.O.C for Piping bulk | 2012-08-05 → 2012-07-29 (-7d) | 2012-08-07 → 2012-07-31 (-7d) |  |  | 168d → 87d |  |
| 4229PAP170 | MRP for Piping bulk | 2012-08-08 → 2012-08-01 (-7d) | 2012-08-14 → 2012-08-07 (-7d) |  |  | 275d → 126d |  |
| 4229PAP200 | Fabrication upto R.F.S | 2012-08-08 → 2012-08-01 (-7d) | 2012-12-17 → 2012-10-14 (-64d) | 120d → 63d |  | 238d → 123d |  |
| 4229PAP180 | P.O for Piping bulk | 2012-08-15 → 2012-08-08 (-7d) | 2012-08-16 → 2012-08-09 (-7d) |  |  | 275d → 126d |  |
| 4229PAP190 | L.C issued by Gupco | 2012-08-26 → 2012-08-12 (-14d) | 2012-08-30 → 2012-08-16 (-14d) |  |  | 275d → 126d |  |
| 8 | **Piping Gate,Globe & Butterfly valves** |  | 2013-03-11 → 2013-01-25 (-45d) |  |  |  |  |
| A1110 | T.E.R for Piping valves |  |  |  |  |  | 4229EPI260 FF, 4229EPI260 SS → 4229EPI110 FF, 4229EPI110 SS |
| 4229PPV30 | Receive revised commercial offers |  |  |  |  |  | 4229EPI260 → 4229EPI110, 4229EPI260 |
| 4229PPV40 | commercial evaluation & bid committee for Piping valves |  |  |  |  |  | 4229PPV30, 4229EPI260 → 4229PPV30, 4229EPI110, 4229EPI260 |
| A1380 | MRP for Piping valves |  |  |  |  |  | 4229EPI310 SS, 4229EPI310 FF → 4229EPI150 SS, 4229EPI150 FF |
| 4229PPV70 | P.O for Piping valves |  |  |  |  |  | 4229EPI310 → 4229EPI150, 4229EPI310 |
| 4229PPV90 | Fabrication upto R.F.S (1st Batch) |  |  |  | 46% → 67% | 215d → 30d |  |
| 4229PPV80 | L.C issued by Gupco | 2012-06-03 → 2012-07-01 (+28d) | 2012-06-07 → 2012-07-05 (+28d) |  |  | 151d → 20d |  |
| 4229PPV100 | Fabrication upto R.F.S (2nd Batch) for minimal balance | 2012-09-28 → 2012-09-14 (-14d) | 2013-01-25 → 2013-01-11 (-14d) |  |  | 199d → 30d | Issue GA's / ISO's -construction(first batch), Issue GA's / ISO's -construction(Second batch)- Final MTO FS+20d → 4229EPI430, 4229EPI460 FS+15d |
| 4229PPV120 | Delivery upto site (2nd Batch) for minimal balance | 2013-01-26 → 2013-01-12 (-14d) | 2013-03-11 → 2013-01-25 (-45d) | 45d → 14d |  | 199d → 30d |  |
| 32 | **Piping Ball Valves** |  | 2013-03-11 → 2013-01-26 (-44d) |  |  |  |  |
| 4229PBV10 | Issue RFQ for Piping Ball Valves |  |  |  |  |  | 4229EPI50 → 4229EPI50, 4229EPI200 |
| 4229PBV40 | Receive revised commercial offers |  |  |  |  |  | 4229PBV20, 4229EPI270 → 4229PBV20, 4229EPI290, 4229EPI270 |
| 4229PBV90 | P.O for Piping Ball Valves |  |  |  |  |  | 4229EPI320 → 4229EPI300, 4229EPI320 |
| 4229PBV110 | Fabrication upto R.F.S (1st Batch) |  |  |  | 42% → 64% | 346d → 132d |  |
| 4229PBV150 | L.C issued by Gupco | 2012-06-03 → 2012-07-01 (+28d) | 2012-06-07 → 2012-07-05 (+28d) |  |  | 245d → 92d |  |
| 4229PBV120 | Fabrication upto R.F.S (2nd Batch) for minimal balance | 2012-09-28 → 2012-09-14 (-14d) | 2013-01-25 → 2013-01-11 (-14d) |  |  | 199d → 29d | Issue GA's / ISO's -construction(Second batch)- Final MTO FS+20d → 4229EPI280 FS+20d, 4229EPI460 FS+15d |
| 4229PBV140 | Delivery upto site (2nd Batch) for minimal balance | 2013-01-26 → 2013-01-12 (-14d) | 2013-03-11 → 2013-01-26 (-44d) | 45d → 15d |  | 199d → 29d |  |
| 2 | **Launcher & Receiver traps** |  | 2012-10-23 → 2012-08-22 (-62d) |  |  |  |  |

| ID | Task | Start | Finish | Duration | Complete | Total float | Predecessors |
| --- | --- | --- | --- | --- | --- | --- | --- |
| 4229PTR10 | Issue RFQ for L&R traps |  |  |  |  |  | 4229EPI10 FS-1d → 4229EPI10 FS-1d, 4229EPI100 FS-1d |
| 4229PTR30 | Receive revised commercial offers |  |  |  |  |  | 4229EPI30 → 4229EPI30, 4229EPI160 |
| 4229PTR40 | commercial evaluation & bid committee for L&R traps |  |  |  |  |  | 4229EPI30, 4229PTR30 → 4229EPI30, 4229PTR30, 4229EPI160 |
| 4229PTR70 | P.O for L&R traps |  |  |  |  |  | 4229PTR40, 4229EPI70 → 4229PTR40, 4229EPI70, 4229EPI290 |
| 4229PTR80 | L.C issued by Gupco |  | 2012-06-03 → 2012-07-01 (+28d) |  |  | 140d → 24d |  |
| 4229PTR90 | Fabrication upto R.F.S |  | 2012-10-16 → 2012-08-15 (-62d) |  | 24% → 72% | 198d → 34d |  |
| 4229PTR100 | Delivery upto site | 2012-10-17 → 2012-08-16 (-62d) | 2012-10-23 → 2012-08-22 (-62d) |  |  | 340d → 188d |  |
| 12 | **Instrument electrical bulk** |  | 2012-11-26 → 2012-11-25 (-1d) |  |  |  |  |
| A1300 | T.E.R for Instrument electrical bulk |  | 2012-06-03 → 2012-07-05 (+32d) |  | 93% → 100% | 216d → 597d | 4229EIN360 FF, 4229EIN360 SS → none |
| 4229PIB1020 | Receive revised commercial offers | 2012-06-04 A | 2012-06-10 A |  | 0% → 100% | 216d → none |  |
| 4229PIB1030 | commercial evaluation & bid committee for Instrument electrical bulk | 2012-06-11 → 2012-06-10 A (-1d) | 2012-06-24 → 2012-06-13 A (-11d) |  | 0% → 100% | 216d → none |  |
| 4229PIB1040 | Client approval on bid committee reccomendation | 2012-06-25 → 2012-06-19 A (-6d) | 2012-06-26 → 2012-07-01 (+5d) |  | 0% → 50% | 216d → 64d |  |
| 4229PIB1050 | F.O.C for Instrument electrical bulk | 2012-06-27 → 2012-07-02 (+5d) | 2012-07-01 → 2012-07-04 (+3d) |  |  | 216d → 64d |  |
| 4229PIB1055 | MRP for Instrument electrical bulk | 2012-07-02 → 2012-07-05 (+3d) | 2012-07-08 → 2012-07-11 (+3d) |  |  | 216d → 64d |  |
| 4229PIB1060 | P.O for Instrument electrical bulk | 2012-07-09 → 2012-07-12 (+3d) | 2012-07-10 → 2012-07-15 (+5d) |  |  | 216d → 64d |  |
| 4229PIB1070 | L.C issued by Gupco | 2012-07-11 → 2012-07-16 (+5d) | 2012-07-17 → 2012-07-22 (+5d) |  |  | 216d → 64d |  |
| 4229PIB1080 | Fabrication upto R.F.S | 2012-07-18 → 2012-07-23 (+5d) | 2012-10-27 → 2012-10-26 (-1d) | 90d → 84d |  | 304d → 91d |  |
| 4229PIB1090 | Delivery upto site | 2012-10-28 → 2012-10-27 (-1d) | 2012-11-26 → 2012-11-25 (-1d) |  |  | 306d → 93d |  |
| 15 | **Field instrument** |  | 2012-12-23 → 2013-01-09 (+17d) |  |  |  |  |
| 4229PFI30 | Receive revised commercial offers |  | 2012-06-03 → 2012-05-09 A (-25d) |  |  | 197d → none |  |
| 4229PFI40 | commercial evaluation & bid committee for field Instrument | 2012-06-03 → 2012-05-10 A (-24d) | 2012-06-14 → 2012-06-03 A (-11d) |  | 0% → 100% | 197d → none |  |
| 4229PFI50 | Client approval on bid committee reccomendation | 2012-06-17 → 2012-06-19 A (+2d) | 2012-06-18 → 2012-07-01 (+13d) |  | 0% → 50% | 197d → 35d |  |
| 4229PFI60 | F.O.C for field Instrument | 2012-06-19 → 2012-07-02 (+13d) | 2012-06-21 → 2012-07-04 (+13d) |  |  | 197d → 35d |  |
| A1500 | MRP for field Instrument | 2012-06-24 → 2012-07-05 (+11d) | 2012-06-28 → 2012-07-05 (+7d) | 5d → 0d |  | 197d → 597d | 4229EIN350 SS, 4229EIN350 FF → none |
| 4229PFI70 | P.O for field Instrument | 2012-07-01 → 2012-07-12 (+11d) | 2012-07-02 → 2012-07-15 (+13d) |  |  | 197d → 35d |  |
| 4229PFI80 | L.C issued by Gupco | 2012-07-03 → 2012-07-16 (+13d) | 2012-07-09 → 2012-07-22 (+13d) |  |  | 197d → 35d |  |
| 4229PFI90 | Fabrication upto R.F.S | 2012-07-10 → 2012-07-23 (+13d) | 2012-11-18 → 2012-12-07 (+19d) | 120d → 126d |  | 277d → 44d |  |
| 4229PFI100 | Delivery upto site | 2012-11-19 → 2012-12-08 (+19d) | 2012-12-23 → 2013-01-09 (+17d) |  |  | 279d → 46d |  |
| 4229PCV60 | F.O.C for Choke valves |  | 2012-06-03 → 2012-06-04 A (+1d) |  |  | 156d → none |  |
| 4229PCV65 | MRP for Choke valves |  | 2012-06-04 → 2012-06-05 A (+1d) |  | 60% → 100% | 213d → none |  |
| 4229PCV70 | P.O for Choke valves | 2012-06-05 A | 2012-06-11 → 2012-06-06 A (-5d) |  | 0% → 100% | 213d → none |  |
| 4229PCV90 | Fabrication upto R.F.S | 2012-06-19 → 2012-06-07 A (-12d) |  | 87d → 63d |  | 299d → 117d |  |
| 4229PCV80 | L.C issued by Gupco | 2012-06-12 → 2012-07-01 (+19d) | 2012-06-18 → 2012-07-05 (+17d) |  |  | 213d → 81d |  |
| 4229PRV60 | F.O.C for pressure regulator valves |  | 2012-06-03 → 2012-06-04 A (+1d) |  |  | 151d → none |  |
| A1470 | MRP for pressure regulator valves |  | 2012-06-05 → 2012-07-05 (+30d) |  | 40% → 100% | 151d → 597d | 4229EIN320 FF, 4229EIN320 SS → none |
| 4229PRV70 | P.O for pressure regulator valves | 2012-06-06 → 2012-06-05 A (-1d) | 2012-06-07 → 2012-06-05 A (-2d) |  | 0% → 100% | 151d → none |  |
| 4229PRV90 | Fabrication upto R.F.S | 2012-06-08 → 2012-06-06 A (-2d) |  | 153d → 128d |  | 215d → 36d |  |
| 4229PRV80 | L.C issued by Gupco | 2012-06-10 → 2012-07-01 (+21d) | 2012-06-12 → 2012-07-03 (+21d) |  |  | 327d → 158d |  |
| 4229POV90 | Fabrication upto R.F.S |  |  |  | 17% → 33% | 215d → 30d |  |
| 4229POV80 | L.C issued by Gupco | 2012-06-03 → 2012-07-01 (+28d) | 2012-06-07 → 2012-07-05 (+28d) |  |  | 151d → 20d |  |
| 34 | **Additonal shutdown valves** |  | 2013-02-12 → 2013-02-24 (+12d) |  |  |  |  |
| 4229PFV110 | Bidding for SDV |  | 2012-06-02 → 2012-05-27 A (-6d) |  |  | 227d → none |  |
| 4229PFV120 | T.E.R for SDV |  | 2012-06-20 → 2012-06-25 A (+5d) |  | 0% → 100% | 160d → none |  |
| 4229PFV130 | Receive revised commercial offers | 2012-06-21 → 2012-06-26 A (+5d) | 2012-06-27 → 2012-06-28 A (+1d) |  | 0% → 100% | 160d → none |  |
| 4229PFV140 | Commercial evaluation & bid committee for SDV | 2012-06-28 A | 2012-07-11 → 2012-07-15 (+4d) |  |  | 160d → 0d |  |
| 4229PFV150 | Client approval on bid committee reccommendation | 2012-07-12 → 2012-07-16 (+4d) | 2012-07-15 → 2012-07-17 (+2d) |  |  | 160d → 0d |  |
| 4229PFV160 | F.O.C for SDV | 2012-07-16 → 2012-07-18 (+2d) | 2012-07-17 → 2012-07-19 (+2d) |  |  | 160d → 0d |  |
| 4229PFV200 | Fabrication upto R.F.S | 2012-07-18 → 2012-07-20 (+2d) | 2013-01-13 → 2013-01-15 (+2d) |  |  | 226d → 0d |  |
| 4229PFV170 | MRP for SDV | 2012-07-18 → 2012-07-22 (+4d) | 2012-07-24 → 2012-07-26 (+2d) |  |  | 290d → 134d |  |
| 4229PFV180 | P.O for SDV | 2012-07-25 → 2012-07-29 (+4d) | 2012-07-26 → 2012-07-30 (+4d) |  |  | 290d → 134d |  |
| 4229PFV190 | L.C issued by Gupco | 2012-07-29 → 2012-07-31 (+2d) | 2012-08-02 → 2012-08-06 (+4d) |  |  | 290d → 134d |  |
| 4229PFV210 | Delivery upto site | 2013-01-14 → 2013-01-16 (+2d) | 2013-02-12 → 2013-02-24 (+12d) | 30d → 40d |  | 226d → 0d |  |
| 4229PMP90 | Fabrication upto R.F.S |  |  |  | 44% → 56% | 200d → 36d |  |
| 4229PMP80 | L.C issued by Gupco | 2012-06-03 → 2012-07-01 (+28d) | 2012-06-07 → 2012-07-05 (+28d) |  |  | 330d → 156d |  |
| A1230 | T.E.R for SGS |  |  |  |  |  | 4229EIN80 SS, 4229EIN80 FF → none |
| 4229PSG90 | Fabrication upto R.F.S |  |  |  | 0% → 16% | 215d → 30d |  |
| 4229PSG80 | L.C issued by Gupco | 2012-06-03 → 2012-07-01 (+28d) | 2012-06-07 → 2012-07-05 (+28d) |  |  | 151d → 20d |  |
| 4229PRS20 | Bidding for Radar system |  |  |  | 0% → 93% |  |  |
| A1180 | T.E.R for Radar System | 2012-07-03 → 2012-07-05 (+2d) | 2012-08-02 → 2012-08-06 (+4d) |  |  | 272d → 571d |  |
| 4229PSU90 | Fabrication upto R.F.S |  |  |  | 44% → 60% | 194d → 30d |  |
| 4229PSU80 | L.C issued by Gupco | 2012-06-03 → 2012-07-01 (+28d) | 2012-06-07 → 2012-07-05 (+28d) |  |  | 136d → 20d |  |
| 10 | **Navigation aids** |  | 2012-08-15 → 2012-08-19 (+4d) |  |  |  |  |
| 4229PNA90 | Fabrication upto R.F.S |  | 2012-07-01 → 2012-07-06 (+5d) |  | 82% → 100% | 215d → 30d |  |
| 4229PNA80 | L.C issued by Gupco | 2012-06-03 → 2012-07-01 (+28d) | 2012-06-07 → 2012-07-05 (+28d) |  |  | 151d → 20d |  |
| 4229PNA100 | Delivery upto site | 2012-07-02 → 2012-07-06 (+4d) | 2012-08-15 → 2012-08-19 (+4d) |  |  | 409d → 191d |  |
| 11 | **Electrical bulk** |  | 2012-12-11 → 2012-12-13 (+2d) |  |  |  |  |
| 4229EEB310 | T.E.R for Electrical bulk |  | 2012-06-03 → 2012-06-10 A (+7d) |  | 93% → 100% | 205d → none |  |
| 4229PEB30 | Receive revised commercial offers | 2012-06-04 → 2012-06-11 A (+7d) | 2012-06-10 → 2012-06-24 A (+14d) |  | 0% → 100% | 205d → none |  |
| 4229PEB40 | commercial evaluation & bid committee for Electrical bulk | 2012-06-11 → 2012-06-25 A (+14d) | 2012-06-24 → 2012-06-27 A (+3d) |  | 0% → 100% | 205d → none |  |
| 4229PEB50 | Client approval on bid committee reccomendation | 2012-06-25 → 2012-06-28 A (+3d) | 2012-06-26 → 2012-07-04 (+8d) |  |  | 205d → 56d |  |

| ID | Task | Start | Finish | Duration | Complete | Total float | Predecessors | Other |
| --- | --- | --- | --- | --- | --- | --- | --- | --- |
| 4229PEB60 | F.O.C for Electrical bulk | 2012-06-27 → 2012-07-05 (+8d) | 2012-07-01 → 2012-07-09 (+8d) |  |  | 205d → 56d |  |  |
| A1440 | MRP for Electrical bulk | 2012-07-02 → 2012-07-05 (+3d) | 2012-07-08 → 2012-07-05 (-3d) | 5d → 0d |  | 205d → 597d | 4229EEL210 SS, 4229EEL210 FF → none |  |
| 4229PEB70 | P.O for Electrical bulk | 2012-07-09 → 2012-07-17 (+8d) | 2012-07-10 → 2012-07-18 (+8d) |  |  | 205d → 56d |  |  |
| 4229PEB80 | L.C issued by Gupco | 2012-07-11 → 2012-07-19 (+8d) | 2012-07-17 → 2012-07-25 (+8d) |  |  | 205d → 56d |  |  |
| 4229PEB90 | Fabrication upto R.F.S | 2012-07-18 → 2012-07-26 (+8d) | 2012-10-27 → 2012-10-29 (+2d) | 90d → 84d |  | 289d → 73d |  |  |
| 4229PEB100 | Delivery upto site | 2012-10-28 → 2012-10-30 (+2d) | 2012-12-11 → 2012-12-13 (+2d) |  |  | 291d → 75d |  |  |
| 1 | **Cathodic protection** |  | 2012-07-22 → 2012-07-11 (-11d) |  |  |  |  |  |
| 4229PCP100 | Delivery upto site |  | 2012-07-22 → 2012-06-19 A (-33d) |  | 0% → 100% | 433d → none |  |  |
| 4229PCP80 | L.C issued by Gupco | 2012-06-03 → 2012-07-05 (+32d) | 2012-06-07 → 2012-07-11 (+34d) |  |  | 297d → 561d |  |  |
| 4229PVE90 | Fabrication upto R.F.S |  |  |  | 45% → 60% | 215d → 30d |  |  |
| 4229PVE80 | L.C issued by Gupco | 2012-06-03 → 2012-07-01 (+28d) | 2012-06-07 → 2012-07-05 (+28d) |  |  | 151d → 20d |  |  |
| 33 | **Progress cavity pump** |  | 2013-02-13 → 2013-01-16 (-28d) |  |  |  |  |  |
| 4229PPC120 | T.E.R for pump |  | 2012-06-05 → 2012-06-12 A (+7d) |  | 90% → 100% | 158d → none |  |  |
| 4229PPC130 | Receive revised commercial offers for pump | 2012-06-06 → 2012-06-13 A (+7d) | 2012-06-12 → 2012-06-19 A (+7d) |  | 0% → 100% | 158d → none |  |  |
| 4229PPC180 | commercial evaluation & bid committee for pump | 2012-06-13 → 2012-06-20 A (+7d) | 2012-06-27 → 2012-06-21 A (-6d) | 11d → 0d | 0% → 100% | 158d → none |  |  |
| 4229PPC160 | Client approval on bid committee reccomendation | 2012-06-28 → 2012-06-25 A (-3d) | 2012-07-01 → 2012-07-02 (+1d) |  |  | 158d → 25d |  |  |
| 4229PPC190 | F.O.C for pump | 2012-07-02 → 2012-07-03 (+1d) | 2012-07-04 → 2012-07-05 (+1d) |  |  | 158d → 25d |  |  |
| 4229PPC140 | Fabrication upto R.F.S for pump | 2012-07-05 → 2012-07-06 (+1d) | 2012-12-31 → 2012-12-04 (-27d) | 168d → 140d |  | 224d → 37d |  |  |
| 4229PPC210 | MRP for pump | 2012-07-05 → 2012-07-08 (+3d) | 2012-07-11 → 2012-07-12 (+1d) |  |  | 296d → 141d |  |  |
| 4229PPC200 | P.O for pump | 2012-07-12 → 2012-07-15 (+3d) | 2012-07-18 → 2012-07-19 (+1d) |  |  | 296d → 141d |  |  |
| 4229PPC170 | L.C issued by Gupco | 2012-07-19 → 2012-07-22 (+3d) | 2012-07-25 → 2012-07-26 (+1d) |  |  | 296d → 141d |  |  |
| 4229PPC150 | Delivery upto site for pump | 2012-12-31 → 2012-12-05 (-26d) | 2013-02-13 → 2013-01-16 (-28d) |  |  | 225d → 39d |  |  |
| 4229PPL110 | Fabrication upto R.F.S |  |  |  | 76% → 98% | 404d → 190d |  |  |
| 4229PPL100 | L.C issued by Gupco | 2012-06-03 → 2012-07-01 (+28d) | 2012-06-07 → 2012-07-05 (+28d) |  |  | 286d → 134d |  |  |
| 4229PHB50 | commercial evaluation & bid committee for hot bends |  |  |  |  |  | 4229PHB30 → 4229PHB30, A1200 |  |
| 4229PHB100 | Fabrication upto R.F.S |  |  |  | 30% → 55% | 356d → 142d |  |  |
| 4229PHB90 | L.C issued by Gupco | 2012-06-03 → 2012-07-01 (+28d) | 2012-06-07 → 2012-07-05 (+28d) |  |  | 252d → 100d |  |  |
| 29 | **Flanges** |  | 2012-07-03 → 2012-07-29 (+26d) |  |  |  |  |  |
| 4229PFL90 | Fabrication upto R.F.S |  | 2012-06-19 → 2012-07-15 (+26d) |  | 84% → 86% | 409d → 198d |  |  |
| 4229PFL80 | L.C issued by Gupco | 2012-06-03 → 2012-07-01 (+28d) | 2012-06-07 → 2012-07-05 (+28d) |  |  | 330d → 156d |  |  |
| 4229PFL100 | Delivery upto site | 2012-06-20 → 2012-07-16 (+26d) | 2012-07-03 → 2012-07-29 (+26d) |  |  | 452d → 212d |  |  |
| 26 | **Anchor flanges** |  | 2012-07-07 → 2012-07-22 (+15d) |  |  |  |  |  |
| 4229PAF100 | Delivery upto site |  | 2012-07-07 → 2012-07-22 (+15d) |  | 0% → 43% | 448d → 219d |  |  |
| 4229PAF80 | L.C issued by Gupco | 2012-06-03 → 2012-07-01 (+28d) | 2012-06-07 → 2012-07-05 (+28d) |  |  | 308d → 145d |  |  |
| 27 | **Isolating joints** |  | 2012-07-07 → 2012-07-21 (+14d) |  |  |  |  |  |
| 4229PIJ90 | Fabrication upto R.F.S |  | 2012-06-08 → 2012-06-11 A (+3d) |  |  | 434d → none | 4229PFG55, 4229PIJ70 → 4229PIJ70 |  |
| 4229PIJ100 | Delivery upto site | 2012-06-08 → 2012-06-11 A (+3d) | 2012-07-07 → 2012-07-21 A (+14d) |  | 0% → 100% | 448d → none |  |  |
| Master Rev.F-N-4 | **Hillal-B PLATFORM DEVELOPMENT-Normal** | 2011-11-30 → 2012-02-20 (+82d) | 2013-04-07 → 2013-06-29 (+83d) |  |  |  |  |  |
| 1 | **General Milestone** | 2012-01-21 → 2012-07-05 (+166d) | 2013-03-31 → 2012-11-10 (-141d) |  |  |  |  |  |
| GM01 | Reciving Fax of Award | 2012-01-21 → 2012-07-05 (+166d) | 2012-01-21 → 2012-07-05 (+166d) |  |  | -0d → -139d |  |  |
| GM03 | Ready for Load out (01st Shipment / Pipeline Spools 18" & 8") | 2012-10-18 → 2012-07-05 (-105d) | 2012-10-18 → 2012-07-05 (-105d) |  |  | 140d → 694d | L/O & Sea Fastening (P/L Spools 18" & 8") SS → none |  |
| GM04 | Ready for Load out ( 02nd Shipment/ Jacket & Piles ) | 2013-01-23 → 2012-07-05 (-202d) | 2013-01-23 → 2012-07-05 (-202d) |  |  | 26d → 195d | L/O & Sea fastening ( Jacket & Piles ) SS → none |  |
| GM15 | Ready for Load out ( 03rd Shipment/ Deck C/W TSF ) | 2013-03-31 → 2012-07-05 (-269d) | 2013-03-31 → 2012-07-05 (-269d) |  |  | 7d → 694d | L/O & Sea fastening ( Deck) SS → none |  |
| GM02 | Project Fab. Start | 2012-06-13 → 2012-11-10 (+150d) | 2012-06-13 → 2012-11-10 (+150d) |  |  | 244d → 593d |  |  |
| 2 | **Engineering** | 2011-11-30 → 2012-07-05 (+218d) | 2012-04-30 → 2012-11-19 (+203d) |  |  |  |  |  |
| 1 | **Structure** | 2011-11-30 → 2012-07-05 (+218d) | 2012-04-30 → 2012-11-19 (+203d) |  |  |  |  |  |
| ENS02 | Receiving Final Deck Str. MTO | 2012-01-29 → 2012-07-05 (+158d) | 2012-01-29 → 2012-07-05 (+158d) |  |  | 17d → -114d | GM01 FF+7d → GM01 |  |
| ENS04 | Receiving Piles IFC DWG`s | 2012-01-17 → 2012-07-05 (+170d) | 2012-01-17 → 2012-07-05 (+170d) |  |  | 0d → -170d |  |  |
| ENS05 | Receiving Deck Str. Primary & Secondary IFC DWG`s | 2012-02-07 → 2012-07-05 (+149d) | 2012-03-19 → 2012-08-14 (+148d) |  |  | 0d → -149d |  |  |
| ENS06 | Receiving Piping Supports IFC DWG's | 2012-02-28 → 2012-07-05 (+128d) | 2012-03-19 → 2012-07-24 (+127d) |  |  | 0d → -128d |  |  |
| ENS07 | Receiving Cable tarys Support IFC DWG's | 2012-03-13 → 2012-07-05 (+114d) | 2012-03-26 → 2012-07-17 (+113d) |  |  | 0d → -114d |  |  |
| ENS08 | Receiving IFC Equipment fixation DWG`s | 2012-04-04 → 2012-07-05 (+92d) | 2012-04-17 → 2012-07-17 (+91d) |  |  | 0d → -92d |  |  |
| ENS09 | Receiving P/L 8" & 18" IFC DWG's | 2012-04-10 → 2012-07-05 (+86d) | 2012-04-30 → 2012-07-24 (+85d) |  |  | 0d → -85.12d |  |  |
| ENS13 | Receiving Jacket Primary & Secondary Steel IFC DWG`s | 2011-11-30 → 2012-07-05 (+218d) | 2012-04-16 → 2012-11-19 (+217d) |  |  | 0d → -218d |  |  |
| ENS01 | Receiving Final Jacket , Boat Land & Piles MTO | 2012-01-29 → 2012-07-12 (+165d) | 2012-01-29 → 2012-07-12 (+165d) |  |  | 17d → -121.88d |  |  |
| 2 | **TSF, E&I** | 2012-01-15 → 2012-07-05 (+172d) | 2012-03-12 → 2012-07-18 (+128d) |  |  |  |  |  |
| ENT01 | Issue Approved P&ID's / Equipment List IFC DWG's | 2012-01-15 → 2012-07-05 (+172d) | 2012-01-15 → 2012-07-05 (+172d) |  |  | 0d → -171.12d |  |  |
| ENT02 | Issue plat plans IFC DWG's | 2012-02-06 → 2012-07-05 (+150d) | 2012-02-06 → 2012-07-05 (+150d) |  |  | 0d → -149.12d |  |  |
| ENT03 | Receiving Piping ISO`s IFC DWG's | 2012-02-27 → 2012-07-05 (+129d) | 2012-03-12 → 2012-07-18 (+128d) |  |  | 0d → -129d |  |  |
| ENT04 | Issue Hydrotest maps & loops IFC DWG's | 2012-02-28 → 2012-07-05 (+128d) | 2012-02-28 → 2012-07-05 (+128d) |  |  | 0d → -106d |  |  |
| 3 | **Electrical & Instrumentation (E&I)** | 2012-01-23 → 2012-07-05 (+164d) | 2012-04-29 → 2012-10-09 (+163d) |  |  |  |  |  |
| ENE01 | Receiving E&I IFC DWG`s | 2012-01-23 → 2012-07-05 (+164d) | 2012-04-29 → 2012-10-09 (+163d) |  |  | 0d → -164d |  |  |
| 3 | **Procurment** | 2012-02-07 → 2012-02-20 (+13d) | 2012-09-24 → 2013-01-22 (+120d) |  |  |  |  |  |
| 1 | **Structure Material** | 2012-02-07 → 2012-02-20 (+13d) | 2012-09-24 → 2013-01-22 (+120d) |  |  |  |  |  |
| PRS01 | Issue Deck Structural Material P.O's ( Gupco) | 2012-02-07 → 2012-02-20 A (+13d) | 2012-02-07 → 2012-02-20 A (+13d) |  | 0% → 100% | 0d → none |  | was named Issue Structural Material P.O's ( Gupco Responsability) |
| PRS02 | Issue LC ( Gupco Responsability) | 2012-02-15 → 2012-03-14 A (+28d) | 2012-02-15 → 2012-03-14 A (+28d) |  | 0% → 100% | 0d → none |  |  |
| PRS11 | Issue Jacket/pile Structural Material P.O's ( Gupco) | 2012-02-07 → 2012-07-05 (+149d) | 2012-02-07 → 2012-07-05 (+149d) |  |  | 0d → -149d |  | was named Issue Structural Material P.O's ( Gupco Responsability) |
| PRS03 | Delivery of Structure Material (F.O.B - 13 Wks.) - (Gupco Responsability) | 2012-02-15 → 2012-07-12 (+148d) | 2012-05-15 → 2012-10-11 (+149d) |  |  | 0d → -121.88d |  |  |
| PRS05 | Material check with IFC DWG's to Prepare balance material | 2012-04-16 → 2012-08-15 (+121d) | 2012-04-23 → 2012-08-21 (+120d) |  |  | 195.87d → 648.88d | Receiving Jacket Primary & Secondary Steel IFC DWG`s, ENS04, ENS05 → ENS04, ENS05 |  |
| PRS06 | Delivery of balance material | 2012-04-23 → 2012-08-22 (+121d) | 2012-09-24 → 2013-01-22 (+120d) |  |  | 195.87d → 648.88d |  |  |

| ID | Task | Start | Finish | Total float | Predecessors | Other |
| --- | --- | --- | --- | --- | --- | --- |
| PRS04 | Delivery of Deck Structure Material at Site (4 Wks.) | 2012-05-16 → 2012-10-11 (+148d) | 2012-06-12 → 2012-11-08 (+149d) | 0d → -121.88d |  | was named Delivery of Structure Material at Site (4 Wks.) |
| 2 | **P/L Spools Material** | 2012-05-31 → 2012-07-05 (+35d) | 2012-07-20 → 2012-08-24 (+35d) |  |  |  |
| PRP01 | Pipeline 18" & Fittings | 2012-05-31 → 2012-07-05 (+35d) | 2012-07-20 → 2012-08-24 (+35d) | 0d → -68d |  |  |
| PRP02 | Pipeline 8" & Fittings | 2012-05-31 → 2012-07-05 (+35d) | 2012-07-20 → 2012-08-24 (+35d) | -0d → -35d |  |  |
| PRP12 | Pipeline 8" & Fittings | 2012-05-31 → 2012-07-05 (+35d) | 2012-07-20 → 2012-08-24 (+35d) | -0d → -35d |  |  |
| 3 | **Piping Material** | 2012-05-08 → 2012-07-05 (+58d) |  |  |  |  |
| PRT01 | Piping Bulk material 1st batch | 2012-05-08 → 2012-07-05 (+58d) | 2012-06-06 → 2012-08-03 (+58d) | -0d → -58d |  |  |
| PRT02 | Piping Bulk material 2nd batch | 2012-06-11 → 2012-07-05 (+24d) | 2012-07-10 → 2012-08-03 (+24d) | -0d → -24d |  |  |
| PRT03 | Piping Valves Bulk material 1st batch | 2012-06-24 → 2012-07-05 (+11d) | 2012-07-07 → 2012-07-18 (+11d) | -0d → -11d |  |  |
| PRT06 | Pressure Safety Valve | 2012-06-05 → 2012-07-05 (+30d) | 2012-07-18 → 2012-08-17 (+30d) | -0d → -30d |  |  |
| 4 | **Equipment** | 2012-05-09 → 2012-07-05 (+57d) | 2012-08-11 → 2012-08-18 (+7d) |  |  |  |
| PRT09 | Chemical Injection PKG. | 2012-05-09 → 2012-07-05 (+57d) | 2012-06-22 → 2012-08-18 (+57d) | -0d → -57d |  |  |
| PRT10 | Launcher recivier | 2012-06-16 → 2012-07-05 (+19d) | 2012-07-30 → 2012-08-18 (+19d) | -0d → -19d |  |  |
| PRT11 | Vent KOD | 2012-06-28 → 2012-07-05 (+7d) | 2012-08-11 → 2012-08-18 (+7d) | -0d → -7d |  |  |
| PRT12 | Open Drain Tank | 2012-06-28 → 2012-07-05 (+7d) | 2012-08-11 → 2012-08-18 (+7d) | -0d → -7d |  |  |
| 5 | **E&I Material** | 2012-04-06 → 2012-07-05 (+90d) |  |  |  |  |
| 1 | **Electrical Material** | 2012-05-24 → 2012-07-05 (+42d) |  |  |  |  |
| PRE02 | Cathodic Protection | 2012-05-24 → 2012-07-05 (+42d) | 2012-07-07 → 2012-08-18 (+42d) | -0d → -42d |  |  |
| PRE03 | Solar Power | 2012-06-04 → 2012-07-05 (+31d) | 2012-07-18 → 2012-08-18 (+31d) | -0d → -31d |  |  |
| 2 | **F&G Material** | 2012-06-28 → 2012-07-05 (+7d) |  |  |  |  |
| PRE05 | Fire fighting system | 2012-06-28 → 2012-07-05 (+7d) | 2012-08-11 → 2012-08-18 (+7d) | -0d → -7d |  |  |
| 3 | **Telecom Material** | 2012-04-06 → 2012-07-05 (+90d) | 2012-07-19 → 2012-08-18 (+30d) |  |  |  |
| PRE07 | Radar system | 2012-06-20 → 2012-07-05 (+15d) | 2012-07-19 → 2012-08-03 (+15d) | -0d → -15d |  |  |
| PRE08 | Navegation Aids | 2012-04-06 → 2012-07-05 (+90d) | 2012-05-20 → 2012-08-18 (+90d) | -0d → -90d |  |  |
| 4 | **Instrument Material** | 2012-06-23 → 2012-07-05 (+12d) |  |  |  |  |
| PRE11 | Field Instrument | 2012-06-23 → 2012-07-05 (+12d) | 2012-08-06 → 2012-08-18 (+12d) | -0d → -12d |  |  |
| 6 | **Pre-Fabrication** | 2012-06-13 → 2012-07-05 (+22d) | 2012-11-08 → 2012-12-02 (+24d) |  |  |  |
| PF01 | Pre-Fabrication of Steel Structure ( Jacket & Piles) | 2012-06-13 → 2012-07-05 (+22d) | 2012-11-08 → 2012-12-02 (+24d) | 26d → 512d | Receiving Jacket Primary & Secondary Steel IFC DWG`s SS+14d, ENS04 FF+60d, PRS04 → ENS04 FF+60d |  |
| 4 | **Fabrication** | 2012-06-13 → 2012-07-05 (+22d) | 2013-03-30 → 2013-06-27 (+89d) |  |  |  |
| 1 | **Jacket and Piles Fabrication** | 2012-06-21 → 2012-07-14 (+23d) | 2013-01-22 → 2013-02-16 (+25d) |  |  |  |
| JK01 | Jacket , Boat Landing Fabrication & Painting | 2012-06-21 → 2012-07-14 (+23d) | 2013-01-22 → 2013-02-16 (+25d) | 26d → 512d |  |  |
| JK02 | Piles Fabrication & Marking | 2012-08-06 → 2012-09-01 (+26d) | 2013-01-08 → 2013-01-31 (+23d) | 74d → 524d |  |  |
| 3 | **P/L Spools Fabrication** | 2012-06-30 → 2012-10-07 (+99d) | 2012-10-17 → 2013-01-26 (+101d) |  |  |  |
| PL01 | P/L Spools Fabrication | 2012-06-30 → 2012-10-07 (+99d) | 2012-10-17 → 2013-01-26 (+101d) | 104d → -108d | PRP01 SS+30d, PRP02 FF+45d → PRP01 SS+30d, PRP02 FF+45d, 4229PIJ90 FS+30d, 4229PPL120, 4229PHB110 |  |
| 2 | **Deck Fabrication** | 2012-06-13 → 2012-07-05 (+22d) | 2013-03-30 → 2013-06-27 (+89d) |  |  |  |
| 1 | **Deck Structure Fabrication** | 2012-06-13 → 2012-11-10 (+150d) | 2013-03-30 → 2013-06-27 (+89d) |  |  |  |
| DS001 | Fabrication and Painting of cellar Deck/Legs | 2012-06-13 → 2012-11-10 (+150d) | 2012-10-18 → 2013-03-16 (+149d) | 0d → -58d |  | was named Fabrication and Painting of Below Production Deck/Legs |
| DS002 | Fabrication and Painting of Production Deck | 2012-06-13 → 2012-12-15 (+185d) | 2012-11-08 → 2013-05-09 (+182d) | 0d → -103d | DS001 SS → 4229PSU100 FF+7d, 4229PMP100 FF+28d, PRS04 FS+28d, 4229PPC150 FF+28d, 4229PTA100 FF+28d, 4229PEB100 FF+28d, 4229PRS100 FF+20d, 4229PSG20 FF+20d, 4229PMP100 FS+21d, 4229POV100 FF+21d, 4229PFI100 FF+30d, 4229PIB1090 FF+21d, 4229PTR100 FF+28d, 4229PBV130 FF+30d, 4229PBV140 FF+15d, 4229PCI100 FF+28d, 4229PSV100 FF+28d, 4229PFG100 FF+21d |  |
| DS003 | Fabrication and Paint of Heli-Deck ( & Lifting if Required) | 2012-08-27 → 2013-01-09 (+135d) | 2013-01-20 → 2013-06-03 (+134d) | 50d → -103d | DS002 SS+60d → DS002 SS+21d, PRS04 |  |
| DS006 | Fabrication & Installation of Deck Str. Miscellence / Padeyes | 2012-10-04 → 2013-01-16 (+104d) | 2013-03-02 → 2013-06-10 (+100d) | 10d → -93d | DS007 FF+6d, DS005 FF+30d → DS007 FF+6d |  |
| DS004 | Lifting cellar Deck on High Cups | 2012-10-20 → 2013-03-17 (+148d) | 2012-10-24 → 2013-03-21 (+148d) | 3d → -58d |  | was named Lifting Below Production Deck on High Cups |
| DS005 | Lifting Production Deck on Below Production Level | 2012-11-10 → 2013-05-11 (+182d) | 2012-11-27 → 2013-05-27 (+181d) | 0d → -97d | DS002, Equipment Erection on Below Production Level → DS002, DS004 |  |
| DS007 | Physical Weighting | 2013-02-23 → 2013-06-03 (+100d) | 2013-02-23 → 2013-06-03 (+100d) | 10d → -103d | Piping and Piping Supports Erection → DS005, DS003 |  |
| DS008 | Clearance of structure (Fab. & Painting ) Punch List | 2013-03-06 → 2013-06-04 (+90d) | 2013-03-30 → 2013-06-27 (+89d) | 7d → -103d | Pre-commissioning " Piping Hydrotest , Reinstatment , Megering , Continuity Test and Touch Up " FF, DS006 → DS006 FF+5d, DS007 | was named Clearanse of structure (Fab. & Painting ) Punch List |
| 2 | **TSF Fabrication and Erection** | 2012-07-21 → 2012-07-05 (-16d) | 2013-03-30 → 2012-12-27 (-93d) |  |  |  |
| 1 | **Piping fabrication & erection** | 2012-07-21 → 2012-08-28 (+38d) | 2013-02-23 → 2012-12-27 (-58d) |  |  |  |
| TFS001 | Piping and Piping Supports Fabrication and Painting | 2012-07-21 → 2012-08-28 (+38d) | 2012-11-24 → 2012-12-27 (+33d) | 40d → 552d | ENT03, PRT01 SS+7d, PRT02 FF+30d, PRT05 SS+6d, PRT03 FF+15d, PRT04 FF+15d → ENT03, PRT01 SS+7d, PRT02 FF+30d, PRT05, PRT03 FF+15d, PRT04 FF+15d |  |
| 2 | **Equipment erection** | 2012-10-29 → 2012-07-05 (-116d) | 2012-12-23 → 2012-07-12 (-164d) |  |  |  |
| TSF015 | Equipment Erection on Helideck | 2012-12-16 → 2012-07-05 (-164d) | 2012-12-23 → 2012-07-12 (-164d) | 50d → 657d | Receiving IFC Equipment fixation DWG`s, Fabrication and Paint of Heli-Deck ( & Lifting if Required) SS+90d, Solar Power → none |  |
| TSF043 | Equipment Erection on Below Production Level | 2012-10-29 → 2012-07-05 (-116d) | 2012-11-05 → 2012-07-12 (-116d) | 3d → 687d |  |  |
| 3 | **E&I Activies** | 2012-11-10 → 2012-07-05 (-128d) | 2013-02-26 → 2012-10-23 (-126d) |  |  |  |
| TS17 | E&I Activity | 2012-11-10 → 2012-07-05 (-128d) | 2013-02-26 → 2012-10-23 (-126d) | 2d → 579d | Receiving E&I IFC DWG`s SS+7d, Piping and Piping Supports Erection FF+3d, Lifting Production Deck on Below Production Level FF+45d, Electrical Bulks, Cathodic Protection, Solar Power, F&G Detector, Fire fighting system, Life Saving Equipment, Radar system, Navegation Aids, Instrument Electical Bulk, Instrument Mechanical Bulk, Field Instrument, multi phase flow meter FF+30d, Safe Guard system FF+30d → none |  |
| 4 | **Pre-commissioning** | 2013-02-18 → 2012-10-13 (-128d) | 2013-03-30 → 2012-11-26 (-124d) |  |  |  |
| TS18 | Pre-commissioning " Piping Hydrotest , Reinstatment , Megering , Continuity Test and Touch Up " | 2013-02-18 → 2012-10-13 (-128d) | 2013-03-30 → 2012-11-26 (-124d) | 0d → 579d | TSF015 FF+30d, Piping and Piping Supports Erection FF+30d, TS17 FF+25d → TSF015 FF+30d, TS17 FF+25d |  |
| 5 | **L/O & Sea Fastening** | 2012-09-15 → 2012-12-01 (+77d) | 2013-04-07 → 2013-06-29 (+83d) |  |  |  |
| 3 | **01st Trip (P/L Spools 18" & 8")** | 2012-09-15 → 2013-01-27 (+134d) | 2012-10-22 → 2013-01-27 (+97d) |  |  |  |
| LOPS41 | Arrival of 01st Shipment Material Barge ( P/L Spools) | 2012-09-15 → 2013-01-27 (+134d) | 2012-09-15 → 2013-01-27 (+134d) | 0d → -108d | none → PL01 |  |
| 1 | **02nd Trip (Jacket & Piles)** |  | 2013-01-31 → 2012-12-01 (-61d) |  |  |  |
| 2 | **03rd Trip ( Deck)** | 2013-03-02 → 2013-06-29 (+119d) | 2013-04-07 → 2013-06-29 (+83d) |  |  |  |
| LODK41 | Arrival of 03rd Shipment Material Barge ( Deck C/W TSF ) | 2013-03-02 → 2013-06-29 (+119d) | 2013-03-02 → 2013-06-29 (+119d) | -0d → -99d | none → DS008 |  |
| Master Rev.F-N-4 | **Hillal-B PLATFORM DEVELOPMENT-Normal** | 2011-11-30 → 2012-07-05 (+218d) | 2013-04-07 → 2012-10-04 (-185d) |  |  |  |
| 1 | **General Milestone** | 2012-01-21 → none | 2013-03-31 → none |  |  |  |
| 2 | **Engineering** | 2011-11-30 → none | 2012-04-30 → none |  |  |  |
| 1 | **Structure** | 2011-11-30 → none | 2012-04-30 → none |  |  |  |
| 2 | **TSF, E&I** | 2012-01-15 → none | 2012-03-12 → none |  |  |  |
| 3 | **Electrical & Instrumentation (E&I)** | 2012-01-23 → none | 2012-04-29 → none |  |  |  |
| 3 | **Procurment** | 2012-02-07 → 2012-07-18 (+162d) | 2012-09-24 → 2012-09-12 (-12d) |  |  |  |
| 1 | **Structure Material** | 2012-02-07 → none | 2012-09-24 → none |  |  |  |
| 2 | **P/L Spools Material** | 2012-05-31 → none | 2012-07-20 → none |  |  |  |
| 3 | **Piping Material** | 2012-05-08 → none | 2012-09-04 → none |  |  |  |

| ID | Task | Start | Finish | Total float | Predecessors |
| --- | --- | --- | --- | --- | --- |
| 4 | **Equipment** | 2012-05-09 → none | 2012-08-11 → none |  |  |
| 5 | **E&I Material** | 2012-04-06 → 2012-07-18 (+103d) | 2012-09-16 → 2012-09-12 (-4d) |  |  |
| 1 | **Electrical Material** | 2012-05-24 → none | 2012-09-06 → none |  |  |
| 2 | **F&G Material** | 2012-06-28 → none | 2012-08-20 → none |  |  |
| 3 | **Telecom Material** | 2012-04-06 → none | 2012-07-19 → none |  |  |
| 4 | **Instrument Material** | 2012-06-23 → 2012-07-18 (+25d) | 2012-09-16 → 2012-09-12 (-4d) |  |  |
| 6 | **Pre-Fabrication** | 2012-06-13 → none | 2012-11-08 → none |  |  |
| 4 | **Fabrication** | 2012-06-13 → 2012-07-05 (+22d) | 2013-03-30 → 2012-10-04 (-177d) |  |  |
| 1 | **Jacket and Piles Fabrication** | 2012-06-21 → none | 2013-01-22 → none |  |  |
| 3 | **P/L Spools Fabrication** | 2012-06-30 → none | 2012-10-17 → none |  |  |
| 2 | **Deck Fabrication** | 2012-06-13 → 2012-07-05 (+22d) | 2013-03-30 → 2012-10-04 (-177d) |  |  |
| 1 | **Deck Structure Fabrication** | 2012-06-13 → none | 2013-03-30 → none |  |  |
| 2 | **TSF Fabrication and Erection** | 2012-07-21 → 2012-07-05 (-16d) | 2013-03-30 → 2012-10-04 (-177d) |  |  |
| 1 | **Piping fabrication & erection** | 2012-07-21 → 2012-07-05 (-16d) | 2013-02-23 → 2012-10-04 (-142d) |  |  |
| TSF072 | Piping and Piping Supports Erection | 2012-11-25 → 2012-07-05 (-143d) | 2013-02-23 → 2012-10-04 (-142d) | 0d → 619d | Lifting Below Production Deck on High Cups, Piping and Piping Supports Fabrication and Painting SS+60d, Lifting Production Deck on Below Production Level SS+12d, Pressure Safety Valve FF+30d, Pressure regulator Valve FF+30d, Shutdown Valve FF+30d, Equipment Erection on Production Level FF+30d → none |
| 2 | **Equipment erection** | 2012-10-29 → 2012-07-05 (-116d) | 2012-12-23 → 2012-07-22 (-154d) |  |  |
| TSF094 | Equipment Erection on Production Level | 2012-11-28 → 2012-07-05 (-146d) | 2012-12-15 → 2012-07-22 (-146d) | 27d → 679d |  |
| 3 | **E&I Activies** | 2012-11-10 → none | 2013-02-26 → none |  |  |
| 4 | **Pre-commissioning** | 2013-02-18 → none | 2013-03-30 → none |  |  |
| 5 | **L/O & Sea Fastening** | 2012-09-15 → none | 2013-04-07 → none |  |  |
| 3 | **01st Trip (P/L Spools 18" & 8")** | 2012-09-15 → none | 2012-10-22 → none |  |  |
| 1 | **02nd Trip (Jacket & Piles)** | 2012-12-01 → none | 2013-01-31 → none |  |  |
| 2 | **03rd Trip ( Deck)** | 2013-03-02 → none | 2013-04-07 → none |  |  |
