# Cleopatra Jungle

How a schedule from Primavera P6 changed from version to version. A marks actual dates.

## Version 1 (data date 2010-06-21, saved 2010-08-08, file jungle recovery plan.xer)

Note of the change: Merge branch 'gagankumarba:main' into main

| ID | WBS | Task | Duration | Start | Finish | Predecessors | Total float |
| --- | --- | --- | --- | --- | --- | --- | --- |
|  | Startup | **Startup Phase** |  | 2010-06-21 | 2010-06-21 |  |  |
| A1000 |  | Project Start | 0d | 2010-06-21 | 2010-06-21 | A1020 | 16d |
| A1020 |  | Site Taking Over | 0d | 2010-06-21 | 2010-06-21 |  | 16d |
|  | Const. | **Construction Phase** |  | 2010-06-21 | 2010-12-28 |  |  |
|  | zone 1 | **Zone.No 1** |  | 2010-06-21 | 2010-11-02 |  |  |
|  | villa 10 | **Villa Number D10** |  | 2010-06-21 | 2010-10-31 |  |  |
|  | 1 | **general dates** |  | 2010-06-21 | 2010-10-31 |  |  |
| A10560 |  | IFC drawings | 0d | 2010-06-21 | 2010-06-21 |  | 43d |
| A10540 |  | Start Villa construction | 0d | 2010-07-03 | 2010-07-03 | A10560 FS+10d | 43d |
| A10610 |  | Fence Drawings IFC | 1d | 2010-07-03 | 2010-07-03 | A10540 | 89d |
| A10550 |  | finish Villa construction | 0d | 2010-10-31 | 2010-10-31 | A10520, A10670, A10600 | 46d |
|  | 2 | **earth works** |  | 2010-07-03 | 2010-07-04 |  |  |
| A10310 |  | excavation | 1d | 2010-07-03 | 2010-07-03 | A10540 | 43d |
| A10320 |  | soil replacement | 0d | 2010-07-04 | 2010-07-04 | A10310 | 43d |
|  | 3 | **foundation level** |  | 2010-07-05 | 2010-09-23 |  |  |
| A10330 |  | Plain Concrete Foundation | 2d | 2010-07-05 | 2010-07-06 | A10320 FS+1d | 43d |
| A10620 |  | backfilling between P.C Foundation | 4d | 2010-07-12 | 2010-07-15 | A10330 FS+4d | 43d |
| A10340 |  | Reinforced Concrete Foundation | 7d | 2010-07-20 | 2010-07-27 | A10620 FS+3d | 46d |
| A10350 |  | under ground brick works | 2d | 2010-08-11 | 2010-08-12 | A10410 | 46d |
| A10360 |  | under ground insulation for RC & Brick work | 2d | 2010-08-14 | 2010-08-15 | A10350 | 46d |
| A10370 |  | backfilling for under ground | 4d | 2010-08-16 | 2010-08-19 | A10360 | 46d |
| A10380 |  | P.C slab on grade 10CM | 1d | 2010-09-19 | 2010-09-19 | A10530, A10470 | 54d |
| A10390 |  | moisture insulation with membrane sheets | 2d | 2010-09-20 | 2010-09-21 | A10380 | 54d |
| A10400 |  | R.C slab on grade | 2d | 2010-09-22 | 2010-09-23 | A10390 | 54d |
|  | 4 | **skeleton & brick walls** |  | 2010-08-04 | 2010-10-28 |  |  |
| A10410 |  | columns for ground floor | 6d | 2010-08-04 | 2010-08-10 | A10340 FS+6d | 46d |
| A10420 |  | slab for ground floor | 9d | 2010-08-21 | 2010-08-30 | A10410, A10370 | 46d |
| A10570 |  | pouring for ground floor's slab | 1d | 2010-08-31 | 2010-08-31 | A10420, A10480 FF+3d | 46d |
| A10430 |  | columns for 1st floor | 6d | 2010-09-01 | 2010-09-07 | A10570 | 46d |
| A10600 |  | Fence work | 50d | 2010-09-01 | 2010-10-28 | A10570, A10610 FS+10d | 48d |
| A10440 |  | slab for 1st floor | 9d | 2010-09-08 | 2010-09-18 | A10430 | 46d |
| A10470 |  | Brick works for ground floor | 5d | 2010-09-13 | 2010-09-18 | A10570 FS+10d | 54d |
| A10580 |  | pouring for 1st floor's slab | 1d | 2010-09-19 | 2010-09-19 | A10440, A10490 FF+3d | 46d |
| A10450 |  | columns for roof floor | 4d | 2010-09-22 | 2010-09-26 | A10580 FS+2d | 46d |
| A10460 |  | slab for roof floor | 6d | 2010-09-27 | 2010-10-03 | A10450 | 46d |
| A10640 |  | Brick works for 1st floor | 5d | 2010-10-02 | 2010-10-06 | A10580 FS+10d | 56d |
| A10590 |  | pouring for roof floor's slab | 1d | 2010-10-04 | 2010-10-04 | A10460, A10500 FF+2d | 46d |
| A10650 |  | Brick works for roof floor | 5d | 2010-10-14 | 2010-10-19 | A10590 FS+8d | 50d |
|  | 5 | **electro mechanical** |  | 2010-08-21 | 2010-10-21 |  |  |
| A10530 |  | plumbing connections under slab on grade | 2d | 2010-08-21 | 2010-08-22 | A10370 | 77d |
| A10480 |  | electrical conduits for ground floor's slab | 2d | 2010-08-25 | 2010-08-26 | A10420 SS+4d | 47d |
| A10490 |  | electrical conduits for 1st floor slab | 2d | 2010-09-13 | 2010-09-14 | A10440 SS+4d | 47d |
| A10680 |  | electrical conduits for ground floor walls | 2d | 2010-09-26 | 2010-09-27 | A10400 FS+1d | 58d |
| A10500 |  | electrical conduits for roof slab | 1d | 2010-09-30 | 2010-09-30 | A10460 SS+3d | 47d |
| A10690 |  | electrical conduits for 1st floor walls | 2d | 2010-10-07 | 2010-10-09 | A10640 | 56d |
| A10700 |  | electrical conduits for roof floor walls | 2d | 2010-10-20 | 2010-10-21 | A10650 | 53d |
|  | 6 | **finishing** |  | 2010-09-28 | 2010-10-31 |  |  |
| A10510 |  | Internal plastering for ground floor | 8d | 2010-09-28 | 2010-10-06 | A10680 | 54d |
| A10660 |  | Internal plastering for 1st floor | 8d | 2010-10-10 | 2010-10-18 | A10510, A10690 | 56d |
| A10520 |  | External plastering | 10d | 2010-10-20 | 2010-10-31 | A10650 | 46d |
| A10670 |  | Internal plastering for roof floor | 5d | 2010-10-23 | 2010-10-27 | A10660, A10700 | 53d |
|  | villa 11 | **Villa Number B11** |  | 2010-06-21 | 2010-10-19 |  |  |
|  | 1 | **general dates** |  | 2010-06-21 | 2010-10-19 |  |  |
| A10960 |  | IFC drawings | 0d | 2010-06-21 | 2010-06-21 |  | 56d |
| A10940 |  | Start Villa construction | 0d | 2010-06-23 | 2010-06-23 | A10960 FS+2d | 56d |
| A11010 |  | Fence Drawings IFC | 1d | 2010-06-23 | 2010-06-23 | A10940 | 97d |
| A10950 |  | finish Villa construction | 0d | 2010-10-19 | 2010-10-19 | A10920, A11070, A11000 | 56d |
|  | 2 | **earth works** |  | 2010-06-23 | 2010-07-07 |  |  |
| A10710 |  | excavation | 1d | 2010-06-23 | 2010-06-23 | A10940 | 56d |
| A10720 |  | soil replacement | 12d | 2010-06-24 | 2010-07-07 | A10710 | 56d |
|  | 3 | **foundation level** |  | 2010-07-10 | 2010-09-12 |  |  |
| A10730 |  | Plain Concrete Foundation | 2d | 2010-07-10 | 2010-07-11 | A10720 FS+1d | 56d |
| A11020 |  | backfilling between P.C Foundation | 2d | 2010-07-13 | 2010-07-14 | A10730 FS+1d | 52d |
| A10740 |  | Reinforced Concrete Foundation | 7d | 2010-07-15 | 2010-07-22 | A11020 | 56d |
| A10750 |  | under ground brick works | 2d | 2010-07-31 | 2010-08-01 | A10810 | 56d |
| A10760 |  | under ground insulation for RC & Brick work | 2d | 2010-08-02 | 2010-08-03 | A10750 | 56d |
| A10770 |  | backfilling for under ground | 4d | 2010-08-04 | 2010-08-08 | A10760 | 56d |
| A10780 |  | P.C slab on grade 10CM | 1d | 2010-09-07 | 2010-09-07 | A10930, A10870 | 64d |
| A10790 |  | moisture insulation with membrane sheets | 2d | 2010-09-08 | 2010-09-09 | A10780 | 64d |
| A10800 |  | R.C slab on grade | 2d | 2010-09-11 | 2010-09-12 | A10790 | 64d |

| ID | WBS | Task | Duration | Start | Finish | Predecessors | Total float |
| --- | --- | --- | --- | --- | --- | --- | --- |
|  | 4 | **skeleton & brick walls** |  | 2010-07-24 | 2010-10-17 |  |  |
| A10810 |  | columns for ground floor | 6d | 2010-07-24 | 2010-07-29 | A10740 | 56d |
| A10820 |  | slab for ground floor | 9d | 2010-08-09 | 2010-08-18 | A10810, A10770 | 56d |
| A10970 |  | pouring for ground floor's slab | 1d | 2010-08-19 | 2010-08-19 | A10820, A10880 FF+3d | 56d |
| A10830 |  | columns for 1st floor | 6d | 2010-08-21 | 2010-08-26 | A10970 | 56d |
| A11000 |  | Fence work | 50d | 2010-08-21 | 2010-10-17 | A10970, A11010 FS+10d | 58d |
| A10840 |  | slab for 1st floor | 9d | 2010-08-28 | 2010-09-06 | A10830 | 56d |
| A10870 |  | Brick works for ground floor | 5d | 2010-09-01 | 2010-09-06 | A10970 FS+10d | 64d |
| A10980 |  | pouring for 1st floor's slab | 1d | 2010-09-07 | 2010-09-07 | A10840, A10890 FF+3d | 56d |
| A10850 |  | columns for roof floor | 4d | 2010-09-11 | 2010-09-14 | A10980 FS+2d | 56d |
| A10860 |  | slab for roof floor | 6d | 2010-09-15 | 2010-09-21 | A10850 | 56d |
| A11040 |  | Brick works for 1st floor | 5d | 2010-09-20 | 2010-09-25 | A10980 FS+10d | 66d |
| A10990 |  | pouring for roof floor's slab | 1d | 2010-09-22 | 2010-09-22 | A10860, A10900 FF+2d | 56d |
| A11050 |  | Brick works for roof floor | 5d | 2010-10-03 | 2010-10-07 | A10990 FS+8d | 60d |
|  | 5 | **electro mechanical** |  | 2010-08-09 | 2010-10-10 |  |  |
| A10930 |  | plumbing connections under slab on grade | 2d | 2010-08-09 | 2010-08-10 | A10770 | 87d |
| A10880 |  | electrical conduits for ground floor's slab | 2d | 2010-08-14 | 2010-08-15 | A10820 SS+4d | 57d |
| A10890 |  | electrical conduits for 1st floor slab | 2d | 2010-09-01 | 2010-09-02 | A10840 SS+4d | 57d |
| A11080 |  | electrical conduits for ground floor walls | 2d | 2010-09-14 | 2010-09-15 | A10800 FS+1d | 68d |
| A10900 |  | electrical conduits for roof slab | 1d | 2010-09-19 | 2010-09-19 | A10860 SS+3d | 57d |
| A11090 |  | electrical conduits for 1st floor walls | 2d | 2010-09-26 | 2010-09-27 | A11040 | 66d |
| A11100 |  | electrical conduits for roof floor walls | 2d | 2010-10-09 | 2010-10-10 | A11050 | 63d |
|  | 6 | **finishing** |  | 2010-09-16 | 2010-10-19 |  |  |
| A10910 |  | Internal plastering for ground floor | 8d | 2010-09-16 | 2010-09-25 | A11080 | 64d |
| A11060 |  | Internal plastering for 1st floor | 8d | 2010-09-28 | 2010-10-06 | A10910, A11090 | 66d |
| A10920 |  | External plastering | 10d | 2010-10-09 | 2010-10-19 | A11050 | 56d |
| A11070 |  | Internal plastering for roof floor | 5d | 2010-10-11 | 2010-10-16 | A11060, A11100 | 63d |
|  | villa 12 | **Villa Number B12** |  | 2010-06-21 | 2010-10-18 |  |  |
|  | 1 | **general dates** |  | 2010-06-21 | 2010-10-18 |  |  |
| A11340 |  | Start Villa construction | 0d | 2010-06-21 | 2010-06-21 | A11360 | 57d |
| A11360 |  | IFC drawings | 0d | 2010-06-21 | 2010-06-21 |  | 57d |
| A11410 |  | Fence Drawings IFC | 1d | 2010-06-21 | 2010-06-21 | A11340 | 99d |
| A11350 |  | finish Villa construction | 0d | 2010-10-18 | 2010-10-18 | A11320, A11470, A11400 | 57d |
|  | 2 | **earth works** |  | 2010-06-23 | 2010-07-06 |  |  |
| A11110 |  | excavation | 0d | 2010-06-23 | 2010-06-23 | A11340 FS+2d | 57d |
| A11120 |  | soil replacement | 12d | 2010-06-23 | 2010-07-06 | A11110 | 57d |
|  | 3 | **foundation level** |  | 2010-07-07 | 2010-09-11 |  |  |
| A11130 |  | Plain Concrete Foundation | 2d | 2010-07-07 | 2010-07-08 | A11120 | 57d |
| A11420 |  | backfilling between P.C Foundation | 2d | 2010-07-11 | 2010-07-12 | A11130 FS+1d | 53d |
| A11140 |  | Reinforced Concrete Foundation | 7d | 2010-07-13 | 2010-07-20 | A11420 | 57d |
| A11150 |  | under ground brick works | 2d | 2010-07-29 | 2010-07-31 | A11210 | 57d |
| A11160 |  | under ground insulation for RC & Brick work | 2d | 2010-08-01 | 2010-08-02 | A11150 | 57d |
| A11170 |  | backfilling for under ground | 4d | 2010-08-03 | 2010-08-07 | A11160 | 57d |
| A11180 |  | P.C slab on grade 10CM | 1d | 2010-09-06 | 2010-09-06 | A11330, A11270 | 65d |
| A11190 |  | moisture insulation with membrane sheets | 2d | 2010-09-07 | 2010-09-08 | A11180 | 65d |
| A11200 |  | R.C slab on grade | 2d | 2010-09-09 | 2010-09-11 | A11190 | 65d |
|  | 4 | **skeleton & brick walls** |  | 2010-07-22 | 2010-10-16 |  |  |
| A11210 |  | columns for ground floor | 6d | 2010-07-22 | 2010-07-28 | A11140 FS+1d | 57d |
| A11220 |  | slab for ground floor | 9d | 2010-08-08 | 2010-08-17 | A11210, A11170 | 57d |
| A11370 |  | pouring for ground floor's slab | 1d | 2010-08-18 | 2010-08-18 | A11220, A11280 FF+3d | 57d |
| A11230 |  | columns for 1st floor | 6d | 2010-08-19 | 2010-08-25 | A11370 | 57d |
| A11400 |  | Fence work | 50d | 2010-08-19 | 2010-10-16 | A11370, A11410 FS+10d | 59d |
| A11240 |  | slab for 1st floor | 9d | 2010-08-26 | 2010-09-05 | A11230 | 57d |
| A11270 |  | Brick works for ground floor | 5d | 2010-08-31 | 2010-09-05 | A11370 FS+10d | 65d |
| A11380 |  | pouring for 1st floor's slab | 1d | 2010-09-06 | 2010-09-06 | A11240, A11290 FF+3d | 57d |
| A11250 |  | columns for roof floor | 4d | 2010-09-09 | 2010-09-13 | A11380 FS+2d | 57d |
| A11260 |  | slab for roof floor | 6d | 2010-09-14 | 2010-09-20 | A11250 | 57d |
| A11440 |  | Brick works for 1st floor | 5d | 2010-09-19 | 2010-09-23 | A11380 FS+10d | 67d |
| A11390 |  | pouring for roof floor's slab | 1d | 2010-09-21 | 2010-09-21 | A11260, A11300 FF+2d | 57d |
| A11450 |  | Brick works for roof floor | 5d | 2010-10-02 | 2010-10-06 | A11390 FS+8d | 61d |
|  | 5 | **electro mechanical** |  | 2010-08-08 | 2010-10-09 |  |  |
| A11330 |  | plumbing connections under slab on grade | 2d | 2010-08-08 | 2010-08-09 | A11170 | 88d |
| A11280 |  | electrical conduits for ground floor's slab | 2d | 2010-08-12 | 2010-08-14 | A11220 SS+4d | 58d |
| A11290 |  | electrical conduits for 1st floor slab | 2d | 2010-08-31 | 2010-09-01 | A11240 SS+4d | 58d |
| A11480 |  | electrical conduits for ground floor walls | 2d | 2010-09-13 | 2010-09-14 | A11200 FS+1d | 69d |
| A11300 |  | electrical conduits for roof slab | 1d | 2010-09-18 | 2010-09-18 | A11260 SS+3d | 58d |
| A11490 |  | electrical conduits for 1st floor walls | 2d | 2010-09-25 | 2010-09-26 | A11440 | 67d |
| A11500 |  | electrical conduits for roof floor walls | 2d | 2010-10-07 | 2010-10-09 | A11450 | 64d |
|  | 6 | **finishing** |  | 2010-09-15 | 2010-10-18 |  |  |
| A11310 |  | Internal plastering for ground floor | 8d | 2010-09-15 | 2010-09-23 | A11480 | 65d |

| ID | WBS | Task | Duration | Start | Finish | Predecessors | Total float |
| --- | --- | --- | --- | --- | --- | --- | --- |
| A11460 |  | Internal plastering for 1st floor | 8d | 2010-09-27 | 2010-10-05 | A11310, A11490 | 67d |
| A11320 |  | External plastering | 10d | 2010-10-07 | 2010-10-18 | A11450 | 57d |
| A11470 |  | Internal plastering for roof floor | 5d | 2010-10-10 | 2010-10-14 | A11460, A11500 | 64d |
|  | villa 13 | **Villa Number B13** |  | 2010-06-21 | 2010-10-30 |  |  |
|  | 1 | **general dates** |  | 2010-06-21 | 2010-10-30 |  |  |
| A11760 |  | IFC drawings | 0d | 2010-06-21 | 2010-06-21 |  | 44d |
| A11740 |  | Start Villa construction | 0d | 2010-06-27 | 2010-06-27 | A11760 FS+5d | 44d |
| A11810 |  | Fence Drawings IFC | 1d | 2010-06-27 | 2010-06-27 | A11740 | 94d |
| A11750 |  | finish Villa construction | 0d | 2010-10-30 | 2010-10-30 | A11720, A11870, A11800 | 47d |
|  | 2 | **earth works** |  | 2010-06-29 | 2010-07-12 |  |  |
| A11510 |  | excavation | 0d | 2010-06-29 | 2010-06-29 | A11740 FS+2d | 44d |
| A11520 |  | soil replacement | 12d | 2010-06-29 | 2010-07-12 | A11510 | 44d |
|  | 3 | **foundation level** |  | 2010-07-13 | 2010-09-22 |  |  |
| A11530 |  | Plain Concrete Foundation | 2d | 2010-07-13 | 2010-07-14 | A11520 | 44d |
| A11820 |  | backfilling between P.C Foundation | 2d | 2010-07-17 | 2010-07-18 | A11530 FS+1d | 44d |
| A11540 |  | Reinforced Concrete Foundation | 13d | 2010-07-19 | 2010-08-02 | A11820 | 47d |
| A11550 |  | under ground brick works | 2d | 2010-08-10 | 2010-08-11 | A11610 | 47d |
| A11560 |  | under ground insulation for RC & Brick work | 2d | 2010-08-12 | 2010-08-14 | A11550 | 47d |
| A11570 |  | backfilling for under ground | 4d | 2010-08-15 | 2010-08-18 | A11560 | 47d |
| A11580 |  | P.C slab on grade 10CM | 1d | 2010-09-18 | 2010-09-18 | A11730, A11670 | 55d |
| A11590 |  | moisture insulation with membrane sheets | 2d | 2010-09-19 | 2010-09-20 | A11580 | 55d |
| A11600 |  | R.C slab on grade | 2d | 2010-09-21 | 2010-09-22 | A11590 | 55d |
|  | 4 | **skeleton & brick walls** |  | 2010-08-03 | 2010-10-27 |  |  |
| A11610 |  | columns for ground floor | 6d | 2010-08-03 | 2010-08-09 | A11540 | 47d |
| A11620 |  | slab for ground floor | 9d | 2010-08-19 | 2010-08-29 | A11610, A11570 | 47d |
| A11770 |  | pouring for ground floor's slab | 1d | 2010-08-30 | 2010-08-30 | A11620, A11680 FF+3d | 47d |
| A11630 |  | columns for 1st floor | 6d | 2010-08-31 | 2010-09-06 | A11770 | 47d |
| A11800 |  | Fence work | 50d | 2010-08-31 | 2010-10-27 | A11770, A11810 FS+10d | 49d |
| A11640 |  | slab for 1st floor | 9d | 2010-09-07 | 2010-09-16 | A11630 | 47d |
| A11670 |  | Brick works for ground floor | 5d | 2010-09-12 | 2010-09-16 | A11770 FS+10d | 55d |
| A11780 |  | pouring for 1st floor's slab | 1d | 2010-09-18 | 2010-09-18 | A11640, A11690 FF+3d | 47d |
| A11650 |  | columns for roof floor | 4d | 2010-09-21 | 2010-09-25 | A11780 FS+2d | 47d |
| A11660 |  | slab for roof floor | 6d | 2010-09-26 | 2010-10-02 | A11650 | 47d |
| A11840 |  | Brick works for 1st floor | 5d | 2010-09-30 | 2010-10-05 | A11780 FS+10d | 57d |
| A11790 |  | pouring for roof floor's slab | 1d | 2010-10-03 | 2010-10-03 | A11660, A11700 FF+2d | 47d |
| A11850 |  | Brick works for roof floor | 5d | 2010-10-13 | 2010-10-18 | A11790 FS+8d | 51d |
|  | 5 | **electro mechanical** |  | 2010-08-19 | 2010-10-20 |  |  |
| A11730 |  | plumbing connections under slab on grade | 2d | 2010-08-19 | 2010-08-21 | A11570 | 78d |
| A11680 |  | electrical conduits for ground floor's slab | 2d | 2010-08-24 | 2010-08-25 | A11620 SS+4d | 48d |
| A11690 |  | electrical conduits for 1st floor slab | 2d | 2010-09-12 | 2010-09-13 | A11640 SS+4d | 48d |
| A11880 |  | electrical conduits for ground floor walls | 2d | 2010-09-25 | 2010-09-26 | A11600 FS+1d | 59d |
| A11700 |  | electrical conduits for roof slab | 1d | 2010-09-29 | 2010-09-29 | A11660 SS+3d | 48d |
| A11890 |  | electrical conduits for 1st floor walls | 2d | 2010-10-06 | 2010-10-07 | A11840 | 57d |
| A11900 |  | electrical conduits for roof floor walls | 2d | 2010-10-19 | 2010-10-20 | A11850 | 54d |
|  | 6 | **finishing** |  | 2010-09-27 | 2010-10-30 |  |  |
| A11710 |  | Internal plastering for ground floor | 8d | 2010-09-27 | 2010-10-05 | A11880 | 55d |
| A11860 |  | Internal plastering for 1st floor | 8d | 2010-10-09 | 2010-10-17 | A11710, A11890 | 57d |
| A11720 |  | External plastering | 10d | 2010-10-19 | 2010-10-30 | A11850 | 47d |
| A11870 |  | Internal plastering for roof floor | 5d | 2010-10-21 | 2010-10-26 | A11860, A11900 | 54d |
|  | villa 14 | **Villa Number B14** |  | 2010-06-21 | 2010-11-02 |  |  |
|  | 1 | **general dates** |  | 2010-06-21 | 2010-11-02 |  |  |
| A12140 |  | Start Villa construction | 0d | 2010-06-21 | 2010-06-21 | A12160 FS+5d | 41d |
| A12160 |  | IFC drawings | 0d | 2010-06-21 | 2010-06-21 |  | 41d |
| A12210 |  | Fence Drawings IFC | 1d | 2010-06-21 | 2010-06-21 | A12140 | 99d |
| A12150 |  | finish Villa construction | 0d | 2010-11-02 | 2010-11-02 | A12120, A12270, A12200 | 44d |
|  | 2 | **earth works** |  | 2010-06-27 | 2010-07-11 |  |  |
| A11910 |  | excavation | 0d | 2010-06-27 | 2010-06-27 | A12140 | 41d |
| A11920 |  | soil replacement | 12d | 2010-06-28 | 2010-07-11 | A11910 FS+1d | 41d |
|  | 3 | **foundation level** |  | 2010-07-17 | 2010-09-26 |  |  |
| A11930 |  | Plain Concrete Foundation | 2d | 2010-07-17 | 2010-07-18 | A11920 FS+4d | 41d |
| A12220 |  | backfilling between P.C Foundation | 2d | 2010-07-20 | 2010-07-21 | A11930 FS+1d | 41d |
| A11940 |  | Reinforced Concrete Foundation | 13d | 2010-07-22 | 2010-08-05 | A12220 | 44d |
| A11950 |  | under ground brick works | 2d | 2010-08-14 | 2010-08-15 | A12010 | 44d |
| A11960 |  | under ground insulation for RC & Brick work | 2d | 2010-08-16 | 2010-08-17 | A11950 | 44d |
| A11970 |  | backfilling for under ground | 4d | 2010-08-18 | 2010-08-22 | A11960 | 44d |
| A11980 |  | P.C slab on grade 10CM | 1d | 2010-09-21 | 2010-09-21 | A12130, A12070 | 52d |
| A11990 |  | moisture insulation with membrane sheets | 2d | 2010-09-22 | 2010-09-23 | A11980 | 52d |
| A12000 |  | R.C slab on grade | 2d | 2010-09-25 | 2010-09-26 | A11990 | 52d |
|  | 4 | **skeleton & brick walls** |  | 2010-08-07 | 2010-10-31 |  |  |
| A12010 |  | columns for ground floor | 6d | 2010-08-07 | 2010-08-12 | A11940 | 44d |

| ID | WBS | Task | Duration | Start | Finish | Predecessors | Total float |
| --- | --- | --- | --- | --- | --- | --- | --- |
| A12020 |  | slab for ground floor | 9d | 2010-08-23 | 2010-09-01 | A12010, A11970 | 44d |
| A12170 |  | pouring for ground floor's slab | 1d | 2010-09-02 | 2010-09-02 | A12020, A12080 FF+3d | 44d |
| A12030 |  | columns for 1st floor | 6d | 2010-09-04 | 2010-09-09 | A12170 | 44d |
| A12200 |  | Fence work | 50d | 2010-09-04 | 2010-10-31 | A12170, A12210 FS+10d | 46d |
| A12040 |  | slab for 1st floor | 9d | 2010-09-11 | 2010-09-20 | A12030 | 44d |
| A12070 |  | Brick works for ground floor | 5d | 2010-09-15 | 2010-09-20 | A12170 FS+10d | 52d |
| A12180 |  | pouring for 1st floor's slab | 1d | 2010-09-21 | 2010-09-21 | A12040, A12090 FF+3d | 44d |
| A12050 |  | columns for roof floor | 4d | 2010-09-25 | 2010-09-28 | A12180 FS+2d | 44d |
| A12060 |  | slab for roof floor | 6d | 2010-09-29 | 2010-10-05 | A12050 | 44d |
| A12240 |  | Brick works for 1st floor | 5d | 2010-10-04 | 2010-10-09 | A12180 FS+10d | 54d |
| A12190 |  | pouring for roof floor's slab | 1d | 2010-10-06 | 2010-10-06 | A12060, A12100 FF+2d | 44d |
| A12250 |  | Brick works for roof floor | 5d | 2010-10-17 | 2010-10-21 | A12190 FS+8d | 48d |
|  | 5 | **electro mechanical** |  | 2010-08-23 | 2010-10-24 |  |  |
| A12130 |  | plumbing connections under slab on grade | 2d | 2010-08-23 | 2010-08-24 | A11970 | 75d |
| A12080 |  | electrical conduits for ground floor's slab | 2d | 2010-08-28 | 2010-08-29 | A12020 SS+4d | 45d |
| A12090 |  | electrical conduits for 1st floor slab | 2d | 2010-09-15 | 2010-09-16 | A12040 SS+4d | 45d |
| A12280 |  | electrical conduits for ground floor walls | 2d | 2010-09-28 | 2010-09-29 | A12000 FS+1d | 56d |
| A12100 |  | electrical conduits for roof slab | 1d | 2010-10-03 | 2010-10-03 | A12060 SS+3d | 45d |
| A12290 |  | electrical conduits for 1st floor walls | 2d | 2010-10-10 | 2010-10-11 | A12240 | 54d |
| A12300 |  | electrical conduits for roof floor walls | 2d | 2010-10-23 | 2010-10-24 | A12250 | 51d |
|  | 6 | **finishing** |  | 2010-09-30 | 2010-11-02 |  |  |
| A12110 |  | Internal plastering for ground floor | 8d | 2010-09-30 | 2010-10-09 | A12280 | 52d |
| A12260 |  | Internal plastering for 1st floor | 8d | 2010-10-12 | 2010-10-20 | A12110, A12290 | 54d |
| A12120 |  | External plastering | 10d | 2010-10-23 | 2010-11-02 | A12250 | 44d |
| A12270 |  | Internal plastering for roof floor | 5d | 2010-10-25 | 2010-10-30 | A12260, A12300 | 51d |
|  | zone 2 | **Zone.No 2** |  | 2010-06-21 | 2010-11-13 |  |  |
|  | villa 89 | **Villa Number D89** |  | 2010-06-21 | 2010-11-02 |  |  |
|  | 1 | **general dates** |  | 2010-06-21 | 2010-11-02 |  |  |
| A13340 |  | Start Villa construction | 0d | 2010-06-21 | 2010-06-21 | A13360 FS+14d | 44d |
| A13360 |  | IFC drawings | 0d | 2010-06-21 | 2010-06-21 |  | 44d |
| A13410 |  | Fence Drawings IFC | 1d | 2010-06-21 | 2010-06-21 | A13340 | 99d |
| A13350 |  | finish Villa construction | 0d | 2010-11-02 | 2010-11-02 | A13320, A13470, A13400 | 44d |
|  | 2 | **earth works** |  | 2010-07-07 | 2010-07-22 |  |  |
| A13110 |  | excavation | 2d | 2010-07-07 | 2010-07-08 | A13340 | 44d |
| A13120 |  | soil replacement | 12d | 2010-07-10 | 2010-07-22 | A13110 | 44d |
|  | 3 | **foundation level** |  | 2010-07-24 | 2010-09-26 |  |  |
| A13130 |  | Plain Concrete Foundation | 2d | 2010-07-24 | 2010-07-25 | A13120 | 44d |
| A13420 |  | backfilling between P.C Foundation | 2d | 2010-07-27 | 2010-07-28 | A13130 FS+1d | 40d |
| A13140 |  | Reinforced Concrete Foundation | 7d | 2010-07-29 | 2010-08-05 | A13420 | 44d |
| A13150 |  | under ground brick works | 2d | 2010-08-14 | 2010-08-15 | A13210 | 44d |
| A13160 |  | under ground insulation for RC & Brick work | 2d | 2010-08-16 | 2010-08-17 | A13150 | 44d |
| A13170 |  | backfilling for under ground | 4d | 2010-08-18 | 2010-08-22 | A13160 | 44d |
| A13180 |  | P.C slab on grade 10CM | 1d | 2010-09-21 | 2010-09-21 | A13330, A13270 | 52d |
| A13190 |  | moisture insulation with membrane sheets | 2d | 2010-09-22 | 2010-09-23 | A13180 | 52d |
| A13200 |  | R.C slab on grade | 2d | 2010-09-25 | 2010-09-26 | A13190 | 52d |
|  | 4 | **skeleton & brick walls** |  | 2010-08-07 | 2010-10-31 |  |  |
| A13210 |  | columns for ground floor | 6d | 2010-08-07 | 2010-08-12 | A13140 | 44d |
| A13220 |  | slab for ground floor | 9d | 2010-08-23 | 2010-09-01 | A13210, A13170 | 44d |
| A13370 |  | pouring for ground floor's slab | 1d | 2010-09-02 | 2010-09-02 | A13220, A13280 FF+3d | 44d |
| A13230 |  | columns for 1st floor | 6d | 2010-09-04 | 2010-09-09 | A13370 | 44d |
| A13400 |  | Fence work | 50d | 2010-09-04 | 2010-10-31 | A13370, A13410 FS+10d | 46d |
| A13240 |  | slab for 1st floor | 9d | 2010-09-11 | 2010-09-20 | A13230 | 44d |
| A13270 |  | Brick works for ground floor | 5d | 2010-09-15 | 2010-09-20 | A13370 FS+10d | 52d |
| A13380 |  | pouring for 1st floor's slab | 1d | 2010-09-21 | 2010-09-21 | A13240, A13290 FF+3d | 44d |
| A13250 |  | columns for roof floor | 4d | 2010-09-25 | 2010-09-28 | A13380 FS+2d | 44d |
| A13260 |  | slab for roof floor | 6d | 2010-09-29 | 2010-10-05 | A13250 | 44d |
| A13440 |  | Brick works for 1st floor | 5d | 2010-10-04 | 2010-10-09 | A13380 FS+10d | 54d |
| A13390 |  | pouring for roof floor's slab | 1d | 2010-10-06 | 2010-10-06 | A13260, A13300 FF+2d | 44d |
| A13450 |  | Brick works for roof floor | 5d | 2010-10-17 | 2010-10-21 | A13390 FS+8d | 48d |
|  | 5 | **electro mechanical** |  | 2010-08-23 | 2010-10-24 |  |  |
| A13330 |  | plumbing connections under slab on grade | 2d | 2010-08-23 | 2010-08-24 | A13170 | 75d |
| A13280 |  | electrical conduits for ground floor's slab | 2d | 2010-08-28 | 2010-08-29 | A13220 SS+4d | 45d |
| A13290 |  | electrical conduits for 1st floor slab | 2d | 2010-09-15 | 2010-09-16 | A13240 SS+4d | 45d |
| A13480 |  | electrical conduits for ground floor walls | 2d | 2010-09-28 | 2010-09-29 | A13200 FS+1d | 56d |
| A13300 |  | electrical conduits for roof slab | 1d | 2010-10-03 | 2010-10-03 | A13260 SS+3d | 45d |
| A13490 |  | electrical conduits for 1st floor walls | 2d | 2010-10-10 | 2010-10-11 | A13440 | 54d |
| A13500 |  | electrical conduits for roof floor walls | 2d | 2010-10-23 | 2010-10-24 | A13450 | 51d |
|  | 6 | **finishing** |  | 2010-09-30 | 2010-11-02 |  |  |
| A13310 |  | Internal plastering for ground floor | 8d | 2010-09-30 | 2010-10-09 | A13480 | 52d |
| A13460 |  | Internal plastering for 1st floor | 8d | 2010-10-12 | 2010-10-20 | A13310, A13490 | 54d |

| ID | WBS | Task | Duration | Start | Finish | Predecessors | Total float |
| --- | --- | --- | --- | --- | --- | --- | --- |
| A13320 |  | External plastering | 10d | 2010-10-23 | 2010-11-02 | A13450 | 44d |
| A13470 |  | Internal plastering for roof floor | 5d | 2010-10-25 | 2010-10-30 | A13460, A13500 | 51d |
|  | villa 90 | **Villa Number D90** |  | 2010-06-21 | 2010-09-29 |  |  |
|  | 1 | **general dates** |  | 2010-06-21 | 2010-09-29 |  |  |
| A13760 |  | IFC drawings | 0d | 2010-06-21 | 2010-06-21 |  | 84d |
| A13740 |  | Start Villa construction | 0d | 2010-07-08 | 2010-07-08 | A13760 FS+15d | 84d |
| A13810 |  | Fence Drawings IFC | 1d | 2010-07-08 | 2010-07-08 | A13740 | 84d |
| A13750 |  | finish Villa construction | 0d | 2010-09-29 | 2010-09-29 | A13720, A13870, A13800 | 73d |
|  | 2 | **earth works** |  | 2010-07-08 | 2010-07-24 |  |  |
| A13510 |  | excavation | 0d | 2010-07-08 | 2010-07-08 | A13740 | 126d |
| A13520 |  | soil replacement | 14d | 2010-07-08 | 2010-07-24 | A13510 | 126d |
|  | 3 | **foundation level** |  | 2010-06-21 | 2010-08-18 |  |  |
| A13540 |  | Reinforced Concrete Foundation | 7d | 2010-06-21 | 2010-06-28 |  | 77d |
| A13550 |  | under ground brick works | 2d | 2010-07-06 | 2010-07-07 | A13610 | 77d |
| A13560 |  | under ground insulation for RC & Brick work | 2d | 2010-07-08 | 2010-07-10 | A13550 | 77d |
| A13570 |  | backfilling for under ground | 4d | 2010-07-11 | 2010-07-14 | A13560 | 77d |
| A13530 |  | Plain Concrete Foundation | 2d | 2010-07-25 | 2010-07-26 | A13520 | 126d |
| A13820 |  | backfilling between P.C Foundation | 2d | 2010-07-28 | 2010-07-29 | A13530 FS+1d | 126d |
| A13580 |  | P.C slab on grade 10CM | 1d | 2010-08-14 | 2010-08-14 | A13730, A13670 | 85d |
| A13590 |  | moisture insulation with membrane sheets | 2d | 2010-08-15 | 2010-08-16 | A13580 | 85d |
| A13600 |  | R.C slab on grade | 2d | 2010-08-17 | 2010-08-18 | A13590 | 85d |
|  | 4 | **skeleton & brick walls** |  | 2010-06-29 | 2010-09-22 |  |  |
| A13610 |  | columns for ground floor | 6d | 2010-06-29 | 2010-07-05 | A13540 | 77d |
| A13620 |  | slab for ground floor | 9d | 2010-07-15 | 2010-07-25 | A13610, A13570 | 77d |
| A13770 |  | pouring for ground floor's slab | 1d | 2010-07-26 | 2010-07-26 | A13620, A13680 FF+3d | 77d |
| A13630 |  | columns for 1st floor | 6d | 2010-07-27 | 2010-08-02 | A13770 | 77d |
| A13800 |  | Fence work | 50d | 2010-07-27 | 2010-09-22 | A13770, A13810 FS+10d | 79d |
| A13640 |  | slab for 1st floor | 9d | 2010-08-03 | 2010-08-12 | A13630 | 77d |
| A13670 |  | Brick works for ground floor | 5d | 2010-08-08 | 2010-08-12 | A13770 FS+10d | 85d |
| A13780 |  | pouring for 1st floor's slab | 1d | 2010-08-14 | 2010-08-14 | A13640, A13690 FF+3d | 77d |
| A13650 |  | columns for roof floor | 4d | 2010-08-17 | 2010-08-21 | A13780 FS+2d | 77d |
| A13660 |  | slab for roof floor | 6d | 2010-08-22 | 2010-08-28 | A13650 | 77d |
| A13840 |  | Brick works for 1st floor | 5d | 2010-08-26 | 2010-08-31 | A13780 FS+10d | 83d |
| A13790 |  | pouring for roof floor's slab | 1d | 2010-08-29 | 2010-08-29 | A13660, A13700 FF+2d | 77d |
| A13850 |  | Brick works for roof floor | 5d | 2010-09-13 | 2010-09-18 | A13790 FS+8d | 77d |
|  | 5 | **electro mechanical** |  | 2010-07-15 | 2010-09-20 |  |  |
| A13730 |  | plumbing connections under slab on grade | 2d | 2010-07-15 | 2010-07-17 | A13570 | 108d |
| A13680 |  | electrical conduits for ground floor's slab | 2d | 2010-07-20 | 2010-07-21 | A13620 SS+4d | 78d |
| A13690 |  | electrical conduits for 1st floor slab | 2d | 2010-08-08 | 2010-08-09 | A13640 SS+4d | 78d |
| A13880 |  | electrical conduits for ground floor walls | 2d | 2010-08-21 | 2010-08-22 | A13600 FS+1d | 85d |
| A13700 |  | electrical conduits for roof slab | 1d | 2010-08-25 | 2010-08-25 | A13660 SS+3d | 78d |
| A13890 |  | electrical conduits for 1st floor walls | 2d | 2010-09-01 | 2010-09-02 | A13840 | 83d |
| A13900 |  | electrical conduits for roof floor walls | 2d | 2010-09-19 | 2010-09-20 | A13850 | 80d |
|  | 6 | **finishing** |  | 2010-08-23 | 2010-09-29 |  |  |
| A13710 |  | Internal plastering for ground floor | 8d | 2010-08-23 | 2010-08-31 | A13880 | 85d |
| A13860 |  | Internal plastering for 1st floor | 8d | 2010-09-04 | 2010-09-16 | A13710, A13890 | 83d |
| A13720 |  | External plastering | 10d | 2010-09-19 | 2010-09-29 | A13850 | 73d |
| A13870 |  | Internal plastering for roof floor | 5d | 2010-09-21 | 2010-09-26 | A13860, A13900 | 80d |
|  | villa 91 | **Villa Number D91** |  | 2010-06-21 | 2010-11-04 |  |  |
|  | 1 | **general dates** |  | 2010-06-21 | 2010-11-04 |  |  |
| A14160 |  | IFC drawings | 0d | 2010-06-21 | 2010-06-21 |  | 42d |
| A14140 |  | Start Villa construction | 0d | 2010-07-10 | 2010-07-10 | A14160 FS+16d | 42d |
| A14210 |  | Fence Drawings IFC | 1d | 2010-07-10 | 2010-07-10 | A14140 | 83d |
| A14150 |  | finish Villa construction | 0d | 2010-11-04 | 2010-11-04 | A14120, A14270, A14200 | 42d |
|  | 2 | **earth works** |  | 2010-07-10 | 2010-07-25 |  |  |
| A13910 |  | excavation | 2d | 2010-07-10 | 2010-07-11 | A14140 | 42d |
| A13920 |  | soil replacement | 12d | 2010-07-12 | 2010-07-25 | A13910 | 42d |
|  | 3 | **foundation level** |  | 2010-07-26 | 2010-09-28 |  |  |
| A13930 |  | Plain Concrete Foundation | 2d | 2010-07-26 | 2010-07-27 | A13920 | 42d |
| A14220 |  | backfilling between P.C Foundation | 2d | 2010-07-29 | 2010-07-31 | A13930 FS+1d | 38d |
| A13940 |  | Reinforced Concrete Foundation | 7d | 2010-08-01 | 2010-08-08 | A14220 | 42d |
| A13950 |  | under ground brick works | 2d | 2010-08-16 | 2010-08-17 | A14010 | 42d |
| A13960 |  | under ground insulation for RC & Brick work | 2d | 2010-08-18 | 2010-08-19 | A13950 | 42d |
| A13970 |  | backfilling for under ground | 4d | 2010-08-21 | 2010-08-24 | A13960 | 42d |
| A13980 |  | P.C slab on grade 10CM | 1d | 2010-09-23 | 2010-09-23 | A14130, A14070 | 50d |
| A13990 |  | moisture insulation with membrane sheets | 2d | 2010-09-25 | 2010-09-26 | A13980 | 50d |
| A14000 |  | R.C slab on grade | 2d | 2010-09-27 | 2010-09-28 | A13990 | 50d |
|  | 4 | **skeleton & brick walls** |  | 2010-08-09 | 2010-11-02 |  |  |
| A14010 |  | columns for ground floor | 6d | 2010-08-09 | 2010-08-15 | A13940 | 42d |
| A14020 |  | slab for ground floor | 9d | 2010-08-25 | 2010-09-04 | A14010, A13970 | 42d |

| ID | WBS | Task | Duration | Start | Finish | Predecessors | Total float |
| --- | --- | --- | --- | --- | --- | --- | --- |
| A14170 |  | pouring for ground floor's slab | 1d | 2010-09-05 | 2010-09-05 | A14020, A14080 FF+3d | 42d |
| A14030 |  | columns for 1st floor | 6d | 2010-09-06 | 2010-09-12 | A14170 | 42d |
| A14200 |  | Fence work | 50d | 2010-09-06 | 2010-11-02 | A14170, A14210 FS+10d | 44d |
| A14040 |  | slab for 1st floor | 9d | 2010-09-13 | 2010-09-22 | A14030 | 42d |
| A14070 |  | Brick works for ground floor | 5d | 2010-09-18 | 2010-09-22 | A14170 FS+10d | 50d |
| A14180 |  | pouring for 1st floor's slab | 1d | 2010-09-23 | 2010-09-23 | A14040, A14090 FF+3d | 42d |
| A14050 |  | columns for roof floor | 4d | 2010-09-27 | 2010-09-30 | A14180 FS+2d | 42d |
| A14060 |  | slab for roof floor | 6d | 2010-10-02 | 2010-10-07 | A14050 | 42d |
| A14240 |  | Brick works for 1st floor | 5d | 2010-10-06 | 2010-10-11 | A14180 FS+10d | 52d |
| A14190 |  | pouring for roof floor's slab | 1d | 2010-10-09 | 2010-10-09 | A14060, A14100 FF+2d | 42d |
| A14250 |  | Brick works for roof floor | 5d | 2010-10-19 | 2010-10-24 | A14190 FS+8d | 46d |
|  | 5 | **electro mechanical** |  | 2010-08-25 | 2010-10-26 |  |  |
| A14130 |  | plumbing connections under slab on grade | 2d | 2010-08-25 | 2010-08-26 | A13970 | 73d |
| A14080 |  | electrical conduits for ground floor's slab | 2d | 2010-08-30 | 2010-08-31 | A14020 SS+4d | 43d |
| A14090 |  | electrical conduits for 1st floor slab | 2d | 2010-09-18 | 2010-09-19 | A14040 SS+4d | 43d |
| A14280 |  | electrical conduits for ground floor walls | 2d | 2010-09-30 | 2010-10-02 | A14000 FS+1d | 54d |
| A14100 |  | electrical conduits for roof slab | 1d | 2010-10-05 | 2010-10-05 | A14060 SS+3d | 43d |
| A14290 |  | electrical conduits for 1st floor walls | 2d | 2010-10-12 | 2010-10-13 | A14240 | 52d |
| A14300 |  | electrical conduits for roof floor walls | 2d | 2010-10-25 | 2010-10-26 | A14250 | 49d |
|  | 6 | **finishing** |  | 2010-10-03 | 2010-11-04 |  |  |
| A14110 |  | Internal plastering for ground floor | 8d | 2010-10-03 | 2010-10-11 | A14280 | 50d |
| A14260 |  | Internal plastering for 1st floor | 8d | 2010-10-14 | 2010-10-23 | A14110, A14290 | 52d |
| A14120 |  | External plastering | 10d | 2010-10-25 | 2010-11-04 | A14250 | 42d |
| A14270 |  | Internal plastering for roof floor | 5d | 2010-10-27 | 2010-11-01 | A14260, A14300 | 49d |
|  | villa 92 | **Villa Number A92** |  | 2010-06-21 | 2010-11-06 |  |  |
|  | 1 | **general dates** |  | 2010-06-21 | 2010-11-06 |  |  |
| A14560 |  | IFC drawings | 0d | 2010-06-21 | 2010-06-21 |  | 41d |
| A14540 |  | Start Villa construction | 0d | 2010-07-11 | 2010-07-11 | A14560 FS+17d | 41d |
| A14610 |  | Fence Drawings IFC | 1d | 2010-07-11 | 2010-07-11 | A14540 | 82d |
| A14550 |  | finish Villa construction | 0d | 2010-11-06 | 2010-11-06 | A14520, A14670, A14600 | 41d |
|  | 2 | **earth works** |  | 2010-07-11 | 2010-07-26 |  |  |
| A14310 |  | excavation | 2d | 2010-07-11 | 2010-07-12 | A14540 | 41d |
| A14320 |  | soil replacement | 12d | 2010-07-13 | 2010-07-26 | A14310 | 41d |
|  | 3 | **foundation level** |  | 2010-07-27 | 2010-09-29 |  |  |
| A14330 |  | Plain Concrete Foundation | 2d | 2010-07-27 | 2010-07-28 | A14320 | 41d |
| A14620 |  | backfilling between P.C Foundation | 2d | 2010-07-31 | 2010-08-01 | A14330 FS+1d | 37d |
| A14340 |  | Reinforced Concrete Foundation | 7d | 2010-08-02 | 2010-08-09 | A14620 | 41d |
| A14350 |  | under ground brick works | 2d | 2010-08-17 | 2010-08-18 | A14410 | 41d |
| A14360 |  | under ground insulation for RC & Brick work | 2d | 2010-08-19 | 2010-08-21 | A14350 | 41d |
| A14370 |  | backfilling for under ground | 4d | 2010-08-22 | 2010-08-25 | A14360 | 41d |
| A14380 |  | P.C slab on grade 10CM | 1d | 2010-09-25 | 2010-09-25 | A14530, A14470 | 49d |
| A14390 |  | moisture insulation with membrane sheets | 2d | 2010-09-26 | 2010-09-27 | A14380 | 49d |
| A14400 |  | R.C slab on grade | 2d | 2010-09-28 | 2010-09-29 | A14390 | 49d |
|  | 4 | **skeleton & brick walls** |  | 2010-08-10 | 2010-11-03 |  |  |
| A14410 |  | columns for ground floor | 6d | 2010-08-10 | 2010-08-16 | A14340 | 41d |
| A14420 |  | slab for ground floor | 9d | 2010-08-26 | 2010-09-05 | A14410, A14370 | 41d |
| A14570 |  | pouring for ground floor's slab | 1d | 2010-09-06 | 2010-09-06 | A14420, A14480 FF+3d | 41d |
| A14430 |  | columns for 1st floor | 6d | 2010-09-07 | 2010-09-13 | A14570 | 41d |
| A14600 |  | Fence work | 50d | 2010-09-07 | 2010-11-03 | A14570, A14610 FS+10d | 43d |
| A14440 |  | slab for 1st floor | 9d | 2010-09-14 | 2010-09-23 | A14430 | 41d |
| A14470 |  | Brick works for ground floor | 5d | 2010-09-19 | 2010-09-23 | A14570 FS+10d | 49d |
| A14580 |  | pouring for 1st floor's slab | 1d | 2010-09-25 | 2010-09-25 | A14440, A14490 FF+3d | 41d |
| A14450 |  | columns for roof floor | 4d | 2010-09-28 | 2010-10-02 | A14580 FS+2d | 41d |
| A14460 |  | slab for roof floor | 6d | 2010-10-03 | 2010-10-09 | A14450 | 41d |
| A14640 |  | Brick works for 1st floor | 5d | 2010-10-07 | 2010-10-12 | A14580 FS+10d | 51d |
| A14590 |  | pouring for roof floor's slab | 1d | 2010-10-10 | 2010-10-10 | A14460, A14500 FF+2d | 41d |
| A14650 |  | Brick works for roof floor | 5d | 2010-10-20 | 2010-10-25 | A14590 FS+8d | 45d |
|  | 5 | **electro mechanical** |  | 2010-08-26 | 2010-10-27 |  |  |
| A14530 |  | plumbing connections under slab on grade | 2d | 2010-08-26 | 2010-08-28 | A14370 | 72d |
| A14480 |  | electrical conduits for ground floor's slab | 2d | 2010-08-31 | 2010-09-01 | A14420 SS+4d | 42d |
| A14490 |  | electrical conduits for 1st floor slab | 2d | 2010-09-19 | 2010-09-20 | A14440 SS+4d | 42d |
| A14680 |  | electrical conduits for ground floor walls | 2d | 2010-10-02 | 2010-10-03 | A14400 FS+1d | 53d |
| A14500 |  | electrical conduits for roof slab | 1d | 2010-10-06 | 2010-10-06 | A14460 SS+3d | 42d |
| A14690 |  | electrical conduits for 1st floor walls | 2d | 2010-10-13 | 2010-10-14 | A14640 | 51d |
| A14700 |  | electrical conduits for roof floor walls | 2d | 2010-10-26 | 2010-10-27 | A14650 | 48d |
|  | 6 | **finishing** |  | 2010-10-04 | 2010-11-06 |  |  |
| A14510 |  | Internal plastering for ground floor | 8d | 2010-10-04 | 2010-10-12 | A14680 | 49d |
| A14660 |  | Internal plastering for 1st floor | 8d | 2010-10-16 | 2010-10-24 | A14510, A14690 | 51d |
| A14520 |  | External plastering | 10d | 2010-10-26 | 2010-11-06 | A14650 | 41d |
| A14670 |  | Internal plastering for roof floor | 5d | 2010-10-28 | 2010-11-02 | A14660, A14700 | 48d |

| ID | WBS | Task | Duration | Start | Finish | Predecessors | Total float |
| --- | --- | --- | --- | --- | --- | --- | --- |
|  | villa 93 | **Villa Number F93** |  | 2010-06-21 | 2010-11-07 |  |  |
|  | 1 | **general dates** |  | 2010-06-21 | 2010-11-07 |  |  |
| A14960 |  | IFC drawings | 0d | 2010-06-21 | 2010-06-21 |  | 40d |
| A14940 |  | Start Villa construction | 0d | 2010-07-12 | 2010-07-12 | A14960 FS+18d | 40d |
| A15010 |  | Fence Drawings IFC | 1d | 2010-07-12 | 2010-07-12 | A14940 | 81d |
| A14950 |  | finish Villa construction | 0d | 2010-11-07 | 2010-11-07 | A14920, A15070, A15000 | 40d |
|  | 2 | **earth works** |  | 2010-07-12 | 2010-07-27 |  |  |
| A14710 |  | excavation | 0d | 2010-07-12 | 2010-07-12 | A14940 | 40d |
| A14720 |  | soil replacement | 14d | 2010-07-12 | 2010-07-27 | A14710 | 40d |
|  | 3 | **foundation level** |  | 2010-07-28 | 2010-09-30 |  |  |
| A14730 |  | Plain Concrete Foundation | 2d | 2010-07-28 | 2010-07-29 | A14720 | 40d |
| A15020 |  | backfilling between P.C Foundation | 2d | 2010-08-01 | 2010-08-02 | A14730 FS+1d | 36d |
| A14740 |  | Reinforced Concrete Foundation | 7d | 2010-08-03 | 2010-08-10 | A15020 | 40d |
| A14750 |  | under ground brick works | 2d | 2010-08-18 | 2010-08-19 | A14810 | 40d |
| A14760 |  | under ground insulation for RC & Brick work | 2d | 2010-08-21 | 2010-08-22 | A14750 | 40d |
| A14770 |  | backfilling for under ground | 4d | 2010-08-23 | 2010-08-26 | A14760 | 40d |
| A14780 |  | P.C slab on grade 10CM | 1d | 2010-09-26 | 2010-09-26 | A14930, A14870 | 48d |
| A14790 |  | moisture insulation with membrane sheets | 2d | 2010-09-27 | 2010-09-28 | A14780 | 48d |
| A14800 |  | R.C slab on grade | 2d | 2010-09-29 | 2010-09-30 | A14790 | 48d |
|  | 4 | **skeleton & brick walls** |  | 2010-08-11 | 2010-11-04 |  |  |
| A14810 |  | columns for ground floor | 6d | 2010-08-11 | 2010-08-17 | A14740 | 40d |
| A14820 |  | slab for ground floor | 9d | 2010-08-28 | 2010-09-06 | A14810, A14770 | 40d |
| A14970 |  | pouring for ground floor's slab | 1d | 2010-09-07 | 2010-09-07 | A14820, A14880 FF+3d | 40d |
| A14830 |  | columns for 1st floor | 6d | 2010-09-08 | 2010-09-14 | A14970 | 40d |
| A15000 |  | Fence work | 50d | 2010-09-08 | 2010-11-04 | A14970, A15010 FS+10d | 42d |
| A14840 |  | slab for 1st floor | 9d | 2010-09-15 | 2010-09-25 | A14830 | 40d |
| A14870 |  | Brick works for ground floor | 5d | 2010-09-20 | 2010-09-25 | A14970 FS+10d | 48d |
| A14980 |  | pouring for 1st floor's slab | 1d | 2010-09-26 | 2010-09-26 | A14840, A14890 FF+3d | 40d |
| A14850 |  | columns for roof floor | 4d | 2010-09-29 | 2010-10-03 | A14980 FS+2d | 40d |
| A14860 |  | slab for roof floor | 6d | 2010-10-04 | 2010-10-10 | A14850 | 40d |
| A15040 |  | Brick works for 1st floor | 5d | 2010-10-09 | 2010-10-13 | A14980 FS+10d | 50d |
| A14990 |  | pouring for roof floor's slab | 1d | 2010-10-11 | 2010-10-11 | A14860, A14900 FF+2d | 40d |
| A15050 |  | Brick works for roof floor | 5d | 2010-10-21 | 2010-10-26 | A14990 FS+8d | 44d |
|  | 5 | **electro mechanical** |  | 2010-08-28 | 2010-10-28 |  |  |
| A14930 |  | plumbing connections under slab on grade | 2d | 2010-08-28 | 2010-08-29 | A14770 | 71d |
| A14880 |  | electrical conduits for ground floor's slab | 2d | 2010-09-01 | 2010-09-02 | A14820 SS+4d | 41d |
| A14890 |  | electrical conduits for 1st floor slab | 2d | 2010-09-20 | 2010-09-21 | A14840 SS+4d | 41d |
| A15080 |  | electrical conduits for ground floor walls | 2d | 2010-10-03 | 2010-10-04 | A14800 FS+1d | 52d |
| A14900 |  | electrical conduits for roof slab | 1d | 2010-10-07 | 2010-10-07 | A14860 SS+3d | 41d |
| A15090 |  | electrical conduits for 1st floor walls | 2d | 2010-10-14 | 2010-10-16 | A15040 | 50d |
| A15100 |  | electrical conduits for roof floor walls | 2d | 2010-10-27 | 2010-10-28 | A15050 | 47d |
|  | 6 | **finishing** |  | 2010-10-05 | 2010-11-07 |  |  |
| A14910 |  | Internal plastering for ground floor | 8d | 2010-10-05 | 2010-10-13 | A15080 | 48d |
| A15060 |  | Internal plastering for 1st floor | 8d | 2010-10-17 | 2010-10-25 | A14910, A15090 | 50d |
| A14920 |  | External plastering | 10d | 2010-10-27 | 2010-11-07 | A15050 | 40d |
| A15070 |  | Internal plastering for roof floor | 5d | 2010-10-30 | 2010-11-03 | A15060, A15100 | 47d |
|  | villa 94 | **Villa Number F94** |  | 2010-06-21 | 2010-11-08 |  |  |
|  | 1 | **general dates** |  | 2010-06-21 | 2010-11-08 |  |  |
| A15360 |  | IFC drawings | 0d | 2010-06-21 | 2010-06-21 |  | 39d |
| A15340 |  | Start Villa construction | 0d | 2010-07-13 | 2010-07-13 | A15360 FS+19d | 39d |
| A15410 |  | Fence Drawings IFC | 1d | 2010-07-13 | 2010-07-13 | A15340 | 80d |
| A15350 |  | finish Villa construction | 0d | 2010-11-08 | 2010-11-08 | A15320, A15470, A15400 | 39d |
|  | 2 | **earth works** |  | 2010-07-13 | 2010-07-28 |  |  |
| A15110 |  | excavation | 0d | 2010-07-13 | 2010-07-13 | A15340 | 39d |
| A15120 |  | soil replacement | 14d | 2010-07-13 | 2010-07-28 | A15110 | 39d |
|  | 3 | **foundation level** |  | 2010-07-29 | 2010-10-02 |  |  |
| A15130 |  | Plain Concrete Foundation | 2d | 2010-07-29 | 2010-07-31 | A15120 | 39d |
| A15420 |  | backfilling between P.C Foundation | 2d | 2010-08-02 | 2010-08-03 | A15130 FS+1d | 35d |
| A15140 |  | Reinforced Concrete Foundation | 7d | 2010-08-04 | 2010-08-11 | A15420 | 39d |
| A15150 |  | under ground brick works | 2d | 2010-08-19 | 2010-08-21 | A15210 | 39d |
| A15160 |  | under ground insulation for RC & Brick work | 2d | 2010-08-22 | 2010-08-23 | A15150 | 39d |
| A15170 |  | backfilling for under ground | 4d | 2010-08-24 | 2010-08-28 | A15160 | 39d |
| A15180 |  | P.C slab on grade 10CM | 1d | 2010-09-27 | 2010-09-27 | A15330, A15270 | 47d |
| A15190 |  | moisture insulation with membrane sheets | 2d | 2010-09-28 | 2010-09-29 | A15180 | 47d |
| A15200 |  | R.C slab on grade | 2d | 2010-09-30 | 2010-10-02 | A15190 | 47d |
|  | 4 | **skeleton & brick walls** |  | 2010-08-12 | 2010-11-06 |  |  |
| A15210 |  | columns for ground floor | 6d | 2010-08-12 | 2010-08-18 | A15140 | 39d |
| A15220 |  | slab for ground floor | 9d | 2010-08-29 | 2010-09-07 | A15210, A15170 | 39d |
| A15370 |  | pouring for ground floor's slab | 1d | 2010-09-08 | 2010-09-08 | A15220, A15280 FF+3d | 39d |
| A15230 |  | columns for 1st floor | 6d | 2010-09-09 | 2010-09-15 | A15370 | 39d |

| ID | WBS | Task | Duration | Start | Finish | Predecessors | Total float |
| --- | --- | --- | --- | --- | --- | --- | --- |
| A15400 |  | Fence work | 50d | 2010-09-09 | 2010-11-06 | A15370, A15410 FS+10d | 41d |
| A15240 |  | slab for 1st floor | 9d | 2010-09-16 | 2010-09-26 | A15230 | 39d |
| A15270 |  | Brick works for ground floor | 5d | 2010-09-21 | 2010-09-26 | A15370 FS+10d | 47d |
| A15380 |  | pouring for 1st floor's slab | 1d | 2010-09-27 | 2010-09-27 | A15240, A15290 FF+3d | 39d |
| A15250 |  | columns for roof floor | 4d | 2010-09-30 | 2010-10-04 | A15380 FS+2d | 39d |
| A15260 |  | slab for roof floor | 6d | 2010-10-05 | 2010-10-11 | A15250 | 39d |
| A15440 |  | Brick works for 1st floor | 5d | 2010-10-10 | 2010-10-14 | A15380 FS+10d | 49d |
| A15390 |  | pouring for roof floor's slab | 1d | 2010-10-12 | 2010-10-12 | A15260, A15300 FF+2d | 39d |
| A15450 |  | Brick works for roof floor | 5d | 2010-10-23 | 2010-10-27 | A15390 FS+8d | 43d |
|  | 5 | **electro mechanical** |  | 2010-08-29 | 2010-10-30 |  |  |
| A15330 |  | plumbing connections under slab on grade | 2d | 2010-08-29 | 2010-08-30 | A15170 | 70d |
| A15280 |  | electrical conduits for ground floor's slab | 2d | 2010-09-02 | 2010-09-04 | A15220 SS+4d | 40d |
| A15290 |  | electrical conduits for 1st floor slab | 2d | 2010-09-21 | 2010-09-22 | A15240 SS+4d | 40d |
| A15480 |  | electrical conduits for ground floor walls | 2d | 2010-10-04 | 2010-10-05 | A15200 FS+1d | 51d |
| A15300 |  | electrical conduits for roof slab | 1d | 2010-10-09 | 2010-10-09 | A15260 SS+3d | 40d |
| A15490 |  | electrical conduits for 1st floor walls | 2d | 2010-10-16 | 2010-10-17 | A15440 | 49d |
| A15500 |  | electrical conduits for roof floor walls | 2d | 2010-10-28 | 2010-10-30 | A15450 | 46d |
|  | 6 | **finishing** |  | 2010-10-06 | 2010-11-08 |  |  |
| A15310 |  | Internal plastering for ground floor | 8d | 2010-10-06 | 2010-10-14 | A15480 | 47d |
| A15460 |  | Internal plastering for 1st floor | 8d | 2010-10-18 | 2010-10-26 | A15310, A15490 | 49d |
| A15320 |  | External plastering | 10d | 2010-10-28 | 2010-11-08 | A15450 | 39d |
| A15470 |  | Internal plastering for roof floor | 5d | 2010-10-31 | 2010-11-04 | A15460, A15500 | 46d |
|  | villa 95 | **Villa Number A95** |  | 2010-06-21 | 2010-11-07 |  |  |
|  | 1 | **general dates** |  | 2010-06-21 | 2010-11-07 |  |  |
| A15760 |  | IFC drawings | 0d | 2010-06-21 | 2010-06-21 |  | 40d |
| A15740 |  | Start Villa construction | 0d | 2010-07-12 | 2010-07-12 | A15760 FS+18d | 40d |
| A15810 |  | Fence Drawings IFC | 1d | 2010-07-12 | 2010-07-12 | A15740 | 81d |
| A15750 |  | finish Villa construction | 0d | 2010-11-07 | 2010-11-07 | A15720, A15870, A15800 | 40d |
|  | 2 | **earth works** |  | 2010-07-12 | 2010-07-27 |  |  |
| A15510 |  | excavation | 2d | 2010-07-12 | 2010-07-13 | A15740 | 40d |
| A15520 |  | soil replacement | 12d | 2010-07-14 | 2010-07-27 | A15510 | 40d |
|  | 3 | **foundation level** |  | 2010-07-28 | 2010-09-30 |  |  |
| A15530 |  | Plain Concrete Foundation | 2d | 2010-07-28 | 2010-07-29 | A15520 | 40d |
| A15820 |  | backfilling between P.C Foundation | 2d | 2010-08-01 | 2010-08-02 | A15530 FS+1d | 36d |
| A15540 |  | Reinforced Concrete Foundation | 7d | 2010-08-03 | 2010-08-10 | A15820 | 40d |
| A15550 |  | under ground brick works | 2d | 2010-08-18 | 2010-08-19 | A15610 | 40d |
| A15560 |  | under ground insulation for RC & Brick work | 2d | 2010-08-21 | 2010-08-22 | A15550 | 40d |
| A15570 |  | backfilling for under ground | 4d | 2010-08-23 | 2010-08-26 | A15560 | 40d |
| A15580 |  | P.C slab on grade 10CM | 1d | 2010-09-26 | 2010-09-26 | A15730, A15670 | 48d |
| A15590 |  | moisture insulation with membrane sheets | 2d | 2010-09-27 | 2010-09-28 | A15580 | 48d |
| A15600 |  | R.C slab on grade | 2d | 2010-09-29 | 2010-09-30 | A15590 | 48d |
|  | 4 | **skeleton & brick walls** |  | 2010-08-11 | 2010-11-04 |  |  |
| A15610 |  | columns for ground floor | 6d | 2010-08-11 | 2010-08-17 | A15540 | 40d |
| A15620 |  | slab for ground floor | 9d | 2010-08-28 | 2010-09-06 | A15610, A15570 | 40d |
| A15770 |  | pouring for ground floor's slab | 1d | 2010-09-07 | 2010-09-07 | A15620, A15680 FF+3d | 40d |
| A15630 |  | columns for 1st floor | 6d | 2010-09-08 | 2010-09-14 | A15770 | 40d |
| A15800 |  | Fence work | 50d | 2010-09-08 | 2010-11-04 | A15770, A15810 FS+10d | 42d |
| A15640 |  | slab for 1st floor | 9d | 2010-09-15 | 2010-09-25 | A15630 | 40d |
| A15670 |  | Brick works for ground floor | 5d | 2010-09-20 | 2010-09-25 | A15770 FS+10d | 48d |
| A15780 |  | pouring for 1st floor's slab | 1d | 2010-09-26 | 2010-09-26 | A15640, A15690 FF+3d | 40d |
| A15650 |  | columns for roof floor | 4d | 2010-09-29 | 2010-10-03 | A15780 FS+2d | 40d |
| A15660 |  | slab for roof floor | 6d | 2010-10-04 | 2010-10-10 | A15650 | 40d |
| A15840 |  | Brick works for 1st floor | 5d | 2010-10-09 | 2010-10-13 | A15780 FS+10d | 50d |
| A15790 |  | pouring for roof floor's slab | 1d | 2010-10-11 | 2010-10-11 | A15660, A15700 FF+2d | 40d |
| A15850 |  | Brick works for roof floor | 5d | 2010-10-21 | 2010-10-26 | A15790 FS+8d | 44d |
|  | 5 | **electro mechanical** |  | 2010-08-28 | 2010-10-28 |  |  |
| A15730 |  | plumbing connections under slab on grade | 2d | 2010-08-28 | 2010-08-29 | A15570 | 71d |
| A15680 |  | electrical conduits for ground floor's slab | 2d | 2010-09-01 | 2010-09-02 | A15620 SS+4d | 41d |
| A15690 |  | electrical conduits for 1st floor slab | 2d | 2010-09-20 | 2010-09-21 | A15640 SS+4d | 41d |
| A15880 |  | electrical conduits for ground floor walls | 2d | 2010-10-03 | 2010-10-04 | A15600 FS+1d | 52d |
| A15700 |  | electrical conduits for roof slab | 1d | 2010-10-07 | 2010-10-07 | A15660 SS+3d | 41d |
| A15890 |  | electrical conduits for 1st floor walls | 2d | 2010-10-14 | 2010-10-16 | A15840 | 50d |
| A15900 |  | electrical conduits for roof floor walls | 2d | 2010-10-27 | 2010-10-28 | A15850 | 47d |
|  | 6 | **finishing** |  | 2010-10-05 | 2010-11-07 |  |  |
| A15710 |  | Internal plastering for ground floor | 8d | 2010-10-05 | 2010-10-13 | A15880 | 48d |
| A15860 |  | Internal plastering for 1st floor | 8d | 2010-10-17 | 2010-10-25 | A15710, A15890 | 50d |
| A15720 |  | External plastering | 10d | 2010-10-27 | 2010-11-07 | A15850 | 40d |
| A15870 |  | Internal plastering for roof floor | 5d | 2010-10-30 | 2010-11-03 | A15860, A15900 | 47d |
|  | villa 96 | **Villa Number A96** |  | 2010-06-21 | 2010-11-13 |  |  |
|  | 1 | **general dates** |  | 2010-06-21 | 2010-11-13 |  |  |

| ID | WBS | Task | Duration | Start | Finish | Predecessors | Total float |
| --- | --- | --- | --- | --- | --- | --- | --- |
| A16160 |  | IFC drawings | 0d | 2010-06-21 | 2010-06-21 |  | 35d |
| A16140 |  | Start Villa construction | 0d | 2010-07-18 | 2010-07-18 | A16160 FS+23d | 35d |
| A16210 |  | Fence Drawings IFC | 1d | 2010-07-18 | 2010-07-18 | A16140 | 76d |
| A16150 |  | finish Villa construction | 0d | 2010-11-13 | 2010-11-13 | A16120, A16270, A16200 | 35d |
|  | 2 | **earth works** |  | 2010-07-18 | 2010-08-02 |  |  |
| A15910 |  | excavation | 2d | 2010-07-18 | 2010-07-19 | A16140 | 35d |
| A15920 |  | soil replacement | 12d | 2010-07-20 | 2010-08-02 | A15910 | 35d |
|  | 3 | **foundation level** |  | 2010-08-03 | 2010-10-06 |  |  |
| A15930 |  | Plain Concrete Foundation | 2d | 2010-08-03 | 2010-08-04 | A15920 | 35d |
| A16220 |  | backfilling between P.C Foundation | 2d | 2010-08-07 | 2010-08-08 | A15930 FS+1d | 31d |
| A15940 |  | Reinforced Concrete Foundation | 7d | 2010-08-09 | 2010-08-16 | A16220 | 35d |
| A15950 |  | under ground brick works | 2d | 2010-08-24 | 2010-08-25 | A16010 | 35d |
| A15960 |  | under ground insulation for RC & Brick work | 2d | 2010-08-26 | 2010-08-28 | A15950 | 35d |
| A15970 |  | backfilling for under ground | 4d | 2010-08-29 | 2010-09-01 | A15960 | 35d |
| A15980 |  | P.C slab on grade 10CM | 1d | 2010-10-02 | 2010-10-02 | A16130, A16070 | 43d |
| A15990 |  | moisture insulation with membrane sheets | 2d | 2010-10-03 | 2010-10-04 | A15980 | 43d |
| A16000 |  | R.C slab on grade | 2d | 2010-10-05 | 2010-10-06 | A15990 | 43d |
|  | 4 | **skeleton & brick walls** |  | 2010-08-17 | 2010-11-10 |  |  |
| A16010 |  | columns for ground floor | 6d | 2010-08-17 | 2010-08-23 | A15940 | 35d |
| A16020 |  | slab for ground floor | 9d | 2010-09-02 | 2010-09-12 | A16010, A15970 | 35d |
| A16170 |  | pouring for ground floor's slab | 1d | 2010-09-13 | 2010-09-13 | A16020, A16080 FF+3d | 35d |
| A16030 |  | columns for 1st floor | 6d | 2010-09-14 | 2010-09-20 | A16170 | 35d |
| A16200 |  | Fence work | 50d | 2010-09-14 | 2010-11-10 | A16170, A16210 FS+10d | 37d |
| A16040 |  | slab for 1st floor | 9d | 2010-09-21 | 2010-09-30 | A16030 | 35d |
| A16070 |  | Brick works for ground floor | 5d | 2010-09-26 | 2010-09-30 | A16170 FS+10d | 43d |
| A16180 |  | pouring for 1st floor's slab | 1d | 2010-10-02 | 2010-10-02 | A16040, A16090 FF+3d | 35d |
| A16050 |  | columns for roof floor | 4d | 2010-10-05 | 2010-10-09 | A16180 FS+2d | 35d |
| A16060 |  | slab for roof floor | 6d | 2010-10-10 | 2010-10-16 | A16050 | 35d |
| A16240 |  | Brick works for 1st floor | 5d | 2010-10-14 | 2010-10-19 | A16180 FS+10d | 45d |
| A16190 |  | pouring for roof floor's slab | 1d | 2010-10-17 | 2010-10-17 | A16060, A16100 FF+2d | 35d |
| A16250 |  | Brick works for roof floor | 5d | 2010-10-27 | 2010-11-01 | A16190 FS+8d | 39d |
|  | 5 | **electro mechanical** |  | 2010-09-02 | 2010-11-03 |  |  |
| A16130 |  | plumbing connections under slab on grade | 2d | 2010-09-02 | 2010-09-04 | A15970 | 66d |
| A16080 |  | electrical conduits for ground floor's slab | 2d | 2010-09-07 | 2010-09-08 | A16020 SS+4d | 36d |
| A16090 |  | electrical conduits for 1st floor slab | 2d | 2010-09-26 | 2010-09-27 | A16040 SS+4d | 36d |
| A16280 |  | electrical conduits for ground floor walls | 2d | 2010-10-09 | 2010-10-10 | A16000 FS+1d | 47d |
| A16100 |  | electrical conduits for roof slab | 1d | 2010-10-13 | 2010-10-13 | A16060 SS+3d | 36d |
| A16290 |  | electrical conduits for 1st floor walls | 2d | 2010-10-20 | 2010-10-21 | A16240 | 45d |
| A16300 |  | electrical conduits for roof floor walls | 2d | 2010-11-02 | 2010-11-03 | A16250 | 42d |
|  | 6 | **finishing** |  | 2010-10-11 | 2010-11-13 |  |  |
| A16110 |  | Internal plastering for ground floor | 8d | 2010-10-11 | 2010-10-19 | A16280 | 43d |
| A16260 |  | Internal plastering for 1st floor | 8d | 2010-10-23 | 2010-10-31 | A16110, A16290 | 45d |
| A16120 |  | External plastering | 10d | 2010-11-02 | 2010-11-13 | A16250 | 35d |
| A16270 |  | Internal plastering for roof floor | 5d | 2010-11-04 | 2010-11-09 | A16260, A16300 | 42d |
|  | villa 97 | **Villa Number A97** |  | 2010-06-21 | 2010-11-11 |  |  |
|  | 1 | **general dates** |  | 2010-06-21 | 2010-11-11 |  |  |
| A16560 |  | IFC drawings | 0d | 2010-06-21 | 2010-06-21 |  | 36d |
| A16540 |  | Start Villa construction | 0d | 2010-07-17 | 2010-07-17 | A16560 FS+22d | 36d |
| A16610 |  | Fence Drawings IFC | 1d | 2010-07-17 | 2010-07-17 | A16540 | 77d |
| A16550 |  | finish Villa construction | 0d | 2010-11-11 | 2010-11-11 | A16520, A16670, A16600 | 36d |
|  | 2 | **earth works** |  | 2010-07-17 | 2010-08-01 |  |  |
| A16310 |  | excavation | 2d | 2010-07-17 | 2010-07-18 | A16540 | 36d |
| A16320 |  | soil replacement | 12d | 2010-07-19 | 2010-08-01 | A16310 | 36d |
|  | 3 | **foundation level** |  | 2010-08-02 | 2010-10-05 |  |  |
| A16330 |  | Plain Concrete Foundation | 2d | 2010-08-02 | 2010-08-03 | A16320 | 36d |
| A16620 |  | backfilling between P.C Foundation | 2d | 2010-08-05 | 2010-08-07 | A16330 FS+1d | 32d |
| A16340 |  | Reinforced Concrete Foundation | 7d | 2010-08-08 | 2010-08-15 | A16620 | 36d |
| A16350 |  | under ground brick works | 2d | 2010-08-23 | 2010-08-24 | A16410 | 36d |
| A16360 |  | under ground insulation for RC & Brick work | 2d | 2010-08-25 | 2010-08-26 | A16350 | 36d |
| A16370 |  | backfilling for under ground | 4d | 2010-08-28 | 2010-08-31 | A16360 | 36d |
| A16380 |  | P.C slab on grade 10CM | 1d | 2010-09-30 | 2010-09-30 | A16530, A16470 | 44d |
| A16390 |  | moisture insulation with membrane sheets | 2d | 2010-10-02 | 2010-10-03 | A16380 | 44d |
| A16400 |  | R.C slab on grade | 2d | 2010-10-04 | 2010-10-05 | A16390 | 44d |
|  | 4 | **skeleton & brick walls** |  | 2010-08-16 | 2010-11-09 |  |  |
| A16410 |  | columns for ground floor | 6d | 2010-08-16 | 2010-08-22 | A16340 | 36d |
| A16420 |  | slab for ground floor | 9d | 2010-09-01 | 2010-09-11 | A16410, A16370 | 36d |
| A16570 |  | pouring for ground floor's slab | 1d | 2010-09-12 | 2010-09-12 | A16420, A16480 FF+3d | 36d |
| A16430 |  | columns for 1st floor | 6d | 2010-09-13 | 2010-09-19 | A16570 | 36d |
| A16600 |  | Fence work | 50d | 2010-09-13 | 2010-11-09 | A16570, A16610 FS+10d | 38d |
| A16440 |  | slab for 1st floor | 9d | 2010-09-20 | 2010-09-29 | A16430 | 36d |

| ID | WBS | Task | Duration | Start | Finish | Predecessors | Total float |
| --- | --- | --- | --- | --- | --- | --- | --- |
| A16470 |  | Brick works for ground floor | 5d | 2010-09-25 | 2010-09-29 | A16570 FS+10d | 44d |
| A16580 |  | pouring for 1st floor's slab | 1d | 2010-09-30 | 2010-09-30 | A16440, A16490 FF+3d | 36d |
| A16450 |  | columns for roof floor | 4d | 2010-10-04 | 2010-10-07 | A16580 FS+2d | 36d |
| A16460 |  | slab for roof floor | 6d | 2010-10-09 | 2010-10-14 | A16450 | 36d |
| A16640 |  | Brick works for 1st floor | 5d | 2010-10-13 | 2010-10-18 | A16580 FS+10d | 46d |
| A16590 |  | pouring for roof floor's slab | 1d | 2010-10-16 | 2010-10-16 | A16460, A16500 FF+2d | 36d |
| A16650 |  | Brick works for roof floor | 5d | 2010-10-26 | 2010-10-31 | A16590 FS+8d | 40d |
|  | 5 | **electro mechanical** |  | 2010-09-01 | 2010-11-02 |  |  |
| A16530 |  | plumbing connections under slab on grade | 2d | 2010-09-01 | 2010-09-02 | A16370 | 67d |
| A16480 |  | electrical conduits for ground floor's slab | 2d | 2010-09-06 | 2010-09-07 | A16420 SS+4d | 37d |
| A16490 |  | electrical conduits for 1st floor slab | 2d | 2010-09-25 | 2010-09-26 | A16440 SS+4d | 37d |
| A16680 |  | electrical conduits for ground floor walls | 2d | 2010-10-07 | 2010-10-09 | A16400 FS+1d | 48d |
| A16500 |  | electrical conduits for roof slab | 1d | 2010-10-12 | 2010-10-12 | A16460 SS+3d | 37d |
| A16690 |  | electrical conduits for 1st floor walls | 2d | 2010-10-19 | 2010-10-20 | A16640 | 46d |
| A16700 |  | electrical conduits for roof floor walls | 2d | 2010-11-01 | 2010-11-02 | A16650 | 43d |
|  | 6 | **finishing** |  | 2010-10-10 | 2010-11-11 |  |  |
| A16510 |  | Internal plastering for ground floor | 8d | 2010-10-10 | 2010-10-18 | A16680 | 44d |
| A16660 |  | Internal plastering for 1st floor | 8d | 2010-10-21 | 2010-10-30 | A16510, A16690 | 46d |
| A16520 |  | External plastering | 10d | 2010-11-01 | 2010-11-11 | A16650 | 36d |
| A16670 |  | Internal plastering for roof floor | 5d | 2010-11-03 | 2010-11-08 | A16660, A16700 | 43d |
|  | zone 3 | **Zone.No 3** |  | 2010-06-21 | 2010-12-14 |  |  |
|  | villa 9 | **Villa Number D9** |  | 2010-06-21 | 2010-12-09 |  |  |
|  | 1 | **general dates** |  | 2010-06-21 | 2010-12-09 |  |  |
| A10250 |  | IFC drawings | 0d | 2010-06-21 | 2010-06-21 |  | 60d |
| A10230 |  | Start Villa construction | 0d | 2010-08-11 | 2010-08-11 | A10250, A1000 FS+44d | 16d |
| A10300 |  | Fence Drawings IFC | 1d | 2010-08-11 | 2010-08-11 | A10230 | 55d |
| A10240 |  | finish Villa construction | 0d | 2010-12-09 | 2010-12-09 | A10200, A10192, A10290 | 16d |
|  | 2 | **earth works** |  | 2010-08-11 | 2010-08-26 |  |  |
| A9980 |  | excavation | 2d | 2010-08-11 | 2010-08-12 | A10230 | 16d |
| A9990 |  | soil replacement | 12d | 2010-08-14 | 2010-08-26 | A9980 | 16d |
|  | 3 | **foundation level** |  | 2010-08-28 | 2010-10-28 |  |  |
| A10000 |  | Plain Concrete Foundation | 2d | 2010-08-28 | 2010-08-29 | A9990 | 16d |
| A10001 |  | backfilling between P.C Foundation | 2d | 2010-08-31 | 2010-09-01 | A10000 FS+1d | 12d |
| A10010 |  | Reinforced Concrete Foundation | 7d | 2010-09-02 | 2010-09-09 | A10001 | 16d |
| A10020 |  | under ground brick works | 2d | 2010-09-18 | 2010-09-19 | A10080 | 16d |
| A10030 |  | under ground insulation for RC & Brick work | 2d | 2010-09-20 | 2010-09-21 | A10020 | 16d |
| A10040 |  | backfilling for under ground | 2d | 2010-09-22 | 2010-09-23 | A10030 | 16d |
| A10050 |  | P.C slab on grade 10CM | 1d | 2010-10-24 | 2010-10-24 | A10210, A10140 | 24d |
| A10060 |  | moisture insulation with membrane sheets | 2d | 2010-10-25 | 2010-10-26 | A10050 | 24d |
| A10070 |  | R.C slab on grade | 2d | 2010-10-27 | 2010-10-28 | A10060 | 24d |
|  | 4 | **skeleton & brick walls** |  | 2010-09-11 | 2010-12-07 |  |  |
| A10080 |  | columns for ground floor | 6d | 2010-09-11 | 2010-09-16 | A10010 | 16d |
| A10090 |  | slab for ground floor | 9d | 2010-09-25 | 2010-10-04 | A10080, A10040 | 16d |
| A10260 |  | pouring for ground floor's slab | 1d | 2010-10-05 | 2010-10-05 | A10090, A10150 FF+3d | 16d |
| A10100 |  | columns for 1st floor | 6d | 2010-10-06 | 2010-10-12 | A10260 | 16d |
| A10290 |  | Fence work | 50d | 2010-10-06 | 2010-12-07 | A10260, A10300 FS+10d | 18d |
| A10110 |  | slab for 1st floor | 9d | 2010-10-13 | 2010-10-23 | A10100 | 16d |
| A10140 |  | Brick works for ground floor | 5d | 2010-10-18 | 2010-10-23 | A10260 FS+10d | 24d |
| A10270 |  | pouring for 1st floor's slab | 1d | 2010-10-24 | 2010-10-24 | A10110, A10160 FF+3d | 16d |
| A10120 |  | columns for roof floor | 4d | 2010-10-27 | 2010-10-31 | A10270 FS+2d | 16d |
| A10130 |  | slab for roof floor | 6d | 2010-11-01 | 2010-11-07 | A10120 | 16d |
| A10141 |  | Brick works for 1st floor | 5d | 2010-11-06 | 2010-11-10 | A10270 FS+10d | 26d |
| A10280 |  | pouring for roof floor's slab | 1d | 2010-11-08 | 2010-11-08 | A10130, A10170 FF+2d | 16d |
| A10142 |  | Brick works for roof floor | 5d | 2010-11-23 | 2010-11-28 | A10280 FS+8d | 16d |
|  | 5 | **electro mechanical** |  | 2010-09-25 | 2010-11-30 |  |  |
| A10210 |  | plumbing connections under slab on grade | 2d | 2010-09-25 | 2010-09-26 | A10040 | 47d |
| A10150 |  | electrical conduits for ground floor's slab | 2d | 2010-09-29 | 2010-09-30 | A10090 SS+4d | 17d |
| A10160 |  | electrical conduits for 1st floor slab | 2d | 2010-10-18 | 2010-10-19 | A10110 SS+4d | 17d |
| A10171 |  | electrical conduits for ground floor walls | 2d | 2010-10-31 | 2010-11-01 | A10070 FS+1d | 28d |
| A10170 |  | electrical conduits for roof slab | 1d | 2010-11-04 | 2010-11-04 | A10130 SS+3d | 17d |
| A10172 |  | electrical conduits for 1st floor walls | 2d | 2010-11-11 | 2010-11-13 | A10141 | 26d |
| A10173 |  | electrical conduits for roof floor walls | 2d | 2010-11-29 | 2010-11-30 | A10142 | 19d |
|  | 6 | **finishing** |  | 2010-11-02 | 2010-12-09 |  |  |
| A10190 |  | Internal plastering for ground floor | 8d | 2010-11-02 | 2010-11-10 | A10171 | 24d |
| A10191 |  | Internal plastering for 1st floor | 8d | 2010-11-14 | 2010-11-22 | A10190, A10172 | 26d |
| A10200 |  | External plastering | 10d | 2010-11-29 | 2010-12-09 | A10142 | 16d |
| A10192 |  | Internal plastering for roof floor | 5d | 2010-12-01 | 2010-12-06 | A10191, A10173 | 19d |
|  | villa 102 | **Villa Number B102** |  | 2010-06-21 | 2010-12-08 |  |  |
|  | 1 | **general dates** |  | 2010-06-21 | 2010-12-08 |  |  |
| A12560 |  | IFC drawings | 0d | 2010-06-21 | 2010-06-21 |  | 17d |

| ID | WBS | Task | Duration | Start | Finish | Predecessors | Total float |
| --- | --- | --- | --- | --- | --- | --- | --- |
| A12540 |  | Start Villa construction | 0d | 2010-08-10 | 2010-08-10 | A12560 FS+43d | 17d |
| A12610 |  | Fence Drawings IFC | 1d | 2010-08-10 | 2010-08-10 | A12540 | 56d |
| A12550 |  | finish Villa construction | 0d | 2010-12-08 | 2010-12-08 | A12520, A12670, A12600 | 17d |
|  | 2 | **earth works** |  | 2010-08-12 | 2010-08-28 |  |  |
| A12310 |  | excavation | 2d | 2010-08-12 | 2010-08-14 | A12540 FS+2d | 17d |
| A12320 |  | soil replacement | 12d | 2010-08-15 | 2010-08-28 | A12310 | 17d |
|  | 3 | **foundation level** |  | 2010-08-29 | 2010-10-30 |  |  |
| A12330 |  | Plain Concrete Foundation | 2d | 2010-08-29 | 2010-08-30 | A12320 | 17d |
| A12620 |  | backfilling between P.C Foundation | 2d | 2010-09-01 | 2010-09-02 | A12330 FS+1d | 13d |
| A12340 |  | Reinforced Concrete Foundation | 7d | 2010-09-04 | 2010-09-11 | A12620 | 17d |
| A12350 |  | under ground brick works | 2d | 2010-09-19 | 2010-09-20 | A12410 | 17d |
| A12360 |  | under ground insulation for RC & Brick work | 2d | 2010-09-21 | 2010-09-22 | A12350 | 17d |
| A12370 |  | backfilling for under ground | 2d | 2010-09-23 | 2010-09-25 | A12360 | 17d |
| A12380 |  | P.C slab on grade 10CM | 1d | 2010-10-25 | 2010-10-25 | A12530, A12470 | 23d |
| A12390 |  | moisture insulation with membrane sheets | 2d | 2010-10-26 | 2010-10-27 | A12380 | 23d |
| A12400 |  | R.C slab on grade | 2d | 2010-10-28 | 2010-10-30 | A12390 | 23d |
|  | 4 | **skeleton & brick walls** |  | 2010-09-12 | 2010-12-08 |  |  |
| A12410 |  | columns for ground floor | 6d | 2010-09-12 | 2010-09-18 | A12340 | 17d |
| A12420 |  | slab for ground floor | 9d | 2010-09-26 | 2010-10-05 | A12410, A12370 | 17d |
| A12570 |  | pouring for ground floor's slab | 1d | 2010-10-06 | 2010-10-06 | A12420, A12480 FF+3d | 17d |
| A12430 |  | columns for 1st floor | 6d | 2010-10-07 | 2010-10-13 | A12570 | 17d |
| A12600 |  | Fence work | 50d | 2010-10-07 | 2010-12-08 | A12570, A12610 FS+10d | 17d |
| A12440 |  | slab for 1st floor | 9d | 2010-10-14 | 2010-10-24 | A12430 | 17d |
| A12470 |  | Brick works for ground floor | 5d | 2010-10-19 | 2010-10-24 | A12570 FS+10d | 23d |
| A12580 |  | pouring for 1st floor's slab | 1d | 2010-10-25 | 2010-10-25 | A12440, A12490 FF+3d | 17d |
| A12450 |  | columns for roof floor | 4d | 2010-10-28 | 2010-11-01 | A12580 FS+2d | 17d |
| A12460 |  | slab for roof floor | 6d | 2010-11-02 | 2010-11-08 | A12450 | 17d |
| A12640 |  | Brick works for 1st floor | 5d | 2010-11-07 | 2010-11-11 | A12580 FS+10d | 25d |
| A12590 |  | pouring for roof floor's slab | 1d | 2010-11-09 | 2010-11-09 | A12460, A12500 FF+2d | 17d |
| A12650 |  | Brick works for roof floor | 5d | 2010-11-24 | 2010-11-29 | A12590 FS+8d | 17d |
|  | 5 | **electro mechanical** |  | 2010-09-26 | 2010-12-01 |  |  |
| A12530 |  | plumbing connections under slab on grade | 2d | 2010-09-26 | 2010-09-27 | A12370 | 46d |
| A12480 |  | electrical conduits for ground floor's slab | 2d | 2010-09-30 | 2010-10-02 | A12420 SS+4d | 18d |
| A12490 |  | electrical conduits for 1st floor slab | 2d | 2010-10-19 | 2010-10-20 | A12440 SS+4d | 18d |
| A12680 |  | electrical conduits for ground floor walls | 2d | 2010-11-01 | 2010-11-02 | A12400 FS+1d | 27d |
| A12500 |  | electrical conduits for roof slab | 1d | 2010-11-06 | 2010-11-06 | A12460 SS+3d | 18d |
| A12690 |  | electrical conduits for 1st floor walls | 2d | 2010-11-13 | 2010-11-14 | A12640 | 25d |
| A12700 |  | electrical conduits for roof floor walls | 2d | 2010-11-30 | 2010-12-01 | A12650 | 18d |
|  | 6 | **finishing** |  | 2010-11-03 | 2010-12-08 |  |  |
| A12510 |  | Internal plastering for ground floor | 8d | 2010-11-03 | 2010-11-11 | A12680 | 23d |
| A12660 |  | Internal plastering for 1st floor | 8d | 2010-11-15 | 2010-11-23 | A12510, A12690 | 25d |
| A12520 |  | External plastering | 8d | 2010-11-30 | 2010-12-08 | A12650 | 17d |
| A12670 |  | Internal plastering for roof floor | 5d | 2010-12-02 | 2010-12-07 | A12660, A12700 | 18d |
|  | villa 107 | **Villa Number B107** |  | 2010-06-21 | 2010-12-08 |  |  |
|  | 1 | **general dates** |  | 2010-06-21 | 2010-12-08 |  |  |
| A12960 |  | IFC drawings | 0d | 2010-06-21 | 2010-06-21 |  | 17d |
| A12940 |  | Start Villa construction | 0d | 2010-08-10 | 2010-08-10 | A12960 FS+43d | 17d |
| A13010 |  | Fence Drawings IFC | 1d | 2010-08-10 | 2010-08-10 | A12940 | 56d |
| A12950 |  | finish Villa construction | 0d | 2010-12-08 | 2010-12-08 | A12920, A13070, A13000 | 17d |
|  | 2 | **earth works** |  | 2010-08-12 | 2010-08-28 |  |  |
| A12710 |  | excavation | 2d | 2010-08-12 | 2010-08-14 | A12940 FS+2d | 17d |
| A12720 |  | soil replacement | 12d | 2010-08-15 | 2010-08-28 | A12710 | 17d |
|  | 3 | **foundation level** |  | 2010-08-29 | 2010-10-30 |  |  |
| A12730 |  | Plain Concrete Foundation | 2d | 2010-08-29 | 2010-08-30 | A12720 | 17d |
| A13020 |  | backfilling between P.C Foundation | 2d | 2010-09-01 | 2010-09-02 | A12730 FS+1d | 13d |
| A12740 |  | Reinforced Concrete Foundation | 7d | 2010-09-04 | 2010-09-11 | A13020 | 17d |
| A12750 |  | under ground brick works | 2d | 2010-09-19 | 2010-09-20 | A12810 | 17d |
| A12760 |  | under ground insulation for RC & Brick work | 2d | 2010-09-21 | 2010-09-22 | A12750 | 17d |
| A12770 |  | backfilling for under ground | 2d | 2010-09-23 | 2010-09-25 | A12760 | 17d |
| A12780 |  | P.C slab on grade 10CM | 1d | 2010-10-25 | 2010-10-25 | A12930, A12870 | 23d |
| A12790 |  | moisture insulation with membrane sheets | 2d | 2010-10-26 | 2010-10-27 | A12780 | 23d |
| A12800 |  | R.C slab on grade | 2d | 2010-10-28 | 2010-10-30 | A12790 | 23d |
|  | 4 | **skeleton & brick walls** |  | 2010-09-12 | 2010-12-08 |  |  |
| A12810 |  | columns for ground floor | 6d | 2010-09-12 | 2010-09-18 | A12740 | 17d |
| A12820 |  | slab for ground floor | 9d | 2010-09-26 | 2010-10-05 | A12810, A12770 | 17d |
| A12970 |  | pouring for ground floor's slab | 1d | 2010-10-06 | 2010-10-06 | A12820, A12880 FF+3d | 17d |
| A12830 |  | columns for 1st floor | 6d | 2010-10-07 | 2010-10-13 | A12970 | 17d |
| A13000 |  | Fence work | 50d | 2010-10-07 | 2010-12-08 | A12970, A13010 FS+10d | 17d |
| A12840 |  | slab for 1st floor | 9d | 2010-10-14 | 2010-10-24 | A12830 | 17d |
| A12870 |  | Brick works for ground floor | 5d | 2010-10-19 | 2010-10-24 | A12970 FS+10d | 23d |

| ID | WBS | Task | Duration | Start | Finish | Predecessors | Total float |
| --- | --- | --- | --- | --- | --- | --- | --- |
| A12980 |  | pouring for 1st floor's slab | 1d | 2010-10-25 | 2010-10-25 | A12840, A12890 FF+3d | 17d |
| A12850 |  | columns for roof floor | 4d | 2010-10-28 | 2010-11-01 | A12980 FS+2d | 17d |
| A12860 |  | slab for roof floor | 6d | 2010-11-02 | 2010-11-08 | A12850 | 17d |
| A13040 |  | Brick works for 1st floor | 5d | 2010-11-07 | 2010-11-11 | A12980 FS+10d | 25d |
| A12990 |  | pouring for roof floor's slab | 1d | 2010-11-09 | 2010-11-09 | A12860, A12900 FF+2d | 17d |
| A13050 |  | Brick works for roof floor | 5d | 2010-11-24 | 2010-11-29 | A12990 FS+8d | 17d |
|  | 5 | **electro mechanical** |  | 2010-09-26 | 2010-12-01 |  |  |
| A12930 |  | plumbing connections under slab on grade | 2d | 2010-09-26 | 2010-09-27 | A12770 | 46d |
| A12880 |  | electrical conduits for ground floor's slab | 2d | 2010-09-30 | 2010-10-02 | A12820 SS+4d | 18d |
| A12890 |  | electrical conduits for 1st floor slab | 2d | 2010-10-19 | 2010-10-20 | A12840 SS+4d | 18d |
| A13080 |  | electrical conduits for ground floor walls | 2d | 2010-11-01 | 2010-11-02 | A12800 FS+1d | 27d |
| A12900 |  | electrical conduits for roof slab | 1d | 2010-11-06 | 2010-11-06 | A12860 SS+3d | 18d |
| A13090 |  | electrical conduits for 1st floor walls | 2d | 2010-11-13 | 2010-11-14 | A13040 | 25d |
| A13100 |  | electrical conduits for roof floor walls | 2d | 2010-11-30 | 2010-12-01 | A13050 | 18d |
|  | 6 | **finishing** |  | 2010-11-03 | 2010-12-08 |  |  |
| A12910 |  | Internal plastering for ground floor | 8d | 2010-11-03 | 2010-11-11 | A13080 | 23d |
| A13060 |  | Internal plastering for 1st floor | 8d | 2010-11-15 | 2010-11-23 | A12910, A13090 | 25d |
| A12920 |  | External plastering | 8d | 2010-11-30 | 2010-12-08 | A13050 | 17d |
| A13070 |  | Internal plastering for roof floor | 5d | 2010-12-02 | 2010-12-07 | A13060, A13100 | 18d |
|  | villa 52 | **Villa Number E08** |  | 2010-06-21 | 2010-12-14 |  |  |
|  | 1 | **general dates** |  | 2010-06-21 | 2010-12-14 |  |  |
| A16960 |  | IFC drawings | 0d | 2010-06-21 | 2010-06-21 |  | 12d |
| A16940 |  | Start Villa construction | 0d | 2010-08-14 | 2010-08-14 | A16960 FS+46d | 12d |
| A17010 |  | Fence Drawings IFC | 1d | 2010-08-14 | 2010-08-14 | A16940 | 53d |
| A16950 |  | finish Villa construction | 0d | 2010-12-14 | 2010-12-14 | A16920, A17070, A17000 | 12d |
|  | 2 | **earth works** |  | 2010-08-14 | 2010-08-29 |  |  |
| A16710 |  | excavation | 2d | 2010-08-14 | 2010-08-15 | A16940 | 12d |
| A16720 |  | soil replacement | 12d | 2010-08-16 | 2010-08-29 | A16710 | 12d |
|  | 3 | **foundation level** |  | 2010-08-30 | 2010-11-02 |  |  |
| A16730 |  | Plain Concrete Foundation | 2d | 2010-08-30 | 2010-08-31 | A16720 | 12d |
| A17020 |  | backfilling between P.C Foundation | 2d | 2010-09-02 | 2010-09-04 | A16730 FS+1d | 8d |
| A16740 |  | Reinforced Concrete Foundation | 7d | 2010-09-05 | 2010-09-12 | A17020 | 12d |
| A16750 |  | under ground brick works | 2d | 2010-09-20 | 2010-09-21 | A16810 | 12d |
| A16760 |  | under ground insulation for RC & Brick work | 2d | 2010-09-22 | 2010-09-23 | A16750 | 12d |
| A16770 |  | backfilling for under ground | 4d | 2010-09-25 | 2010-09-28 | A16760 | 12d |
| A16780 |  | P.C slab on grade 10CM | 1d | 2010-10-28 | 2010-10-28 | A16930, A16870 | 20d |
| A16790 |  | moisture insulation with membrane sheets | 2d | 2010-10-30 | 2010-10-31 | A16780 | 20d |
| A16800 |  | R.C slab on grade | 2d | 2010-11-01 | 2010-11-02 | A16790 | 20d |
|  | 4 | **skeleton & brick walls** |  | 2010-09-13 | 2010-12-12 |  |  |
| A16810 |  | columns for ground floor | 6d | 2010-09-13 | 2010-09-19 | A16740 | 12d |
| A16820 |  | slab for ground floor | 9d | 2010-09-29 | 2010-10-09 | A16810, A16770 | 12d |
| A16970 |  | pouring for ground floor's slab | 1d | 2010-10-10 | 2010-10-10 | A16820, A16880 FF+3d | 12d |
| A16830 |  | columns for 1st floor | 6d | 2010-10-11 | 2010-10-17 | A16970 | 12d |
| A17000 |  | Fence work | 50d | 2010-10-11 | 2010-12-12 | A16970, A17010 FS+10d | 14d |
| A16840 |  | slab for 1st floor | 9d | 2010-10-18 | 2010-10-27 | A16830 | 12d |
| A16870 |  | Brick works for ground floor | 5d | 2010-10-23 | 2010-10-27 | A16970 FS+10d | 20d |
| A16980 |  | pouring for 1st floor's slab | 1d | 2010-10-28 | 2010-10-28 | A16840, A16890 FF+3d | 12d |
| A16850 |  | columns for roof floor | 4d | 2010-11-01 | 2010-11-04 | A16980 FS+2d | 12d |
| A16860 |  | slab for roof floor | 6d | 2010-11-06 | 2010-11-11 | A16850 | 12d |
| A17040 |  | Brick works for 1st floor | 5d | 2010-11-10 | 2010-11-15 | A16980 FS+10d | 22d |
| A16990 |  | pouring for roof floor's slab | 1d | 2010-11-13 | 2010-11-13 | A16860, A16900 FF+2d | 12d |
| A17050 |  | Brick works for roof floor | 5d | 2010-11-28 | 2010-12-02 | A16990 FS+8d | 12d |
|  | 5 | **electro mechanical** |  | 2010-09-29 | 2010-12-05 |  |  |
| A16930 |  | plumbing connections under slab on grade | 2d | 2010-09-29 | 2010-09-30 | A16770 | 43d |
| A16880 |  | electrical conduits for ground floor's slab | 2d | 2010-10-04 | 2010-10-05 | A16820 SS+4d | 13d |
| A16890 |  | electrical conduits for 1st floor slab | 2d | 2010-10-23 | 2010-10-24 | A16840 SS+4d | 13d |
| A17080 |  | electrical conduits for ground floor walls | 2d | 2010-11-04 | 2010-11-06 | A16800 FS+1d | 24d |
| A16900 |  | electrical conduits for roof slab | 1d | 2010-11-09 | 2010-11-09 | A16860 SS+3d | 13d |
| A17090 |  | electrical conduits for 1st floor walls | 2d | 2010-11-16 | 2010-11-17 | A17040 | 22d |
| A17100 |  | electrical conduits for roof floor walls | 2d | 2010-12-04 | 2010-12-05 | A17050 | 15d |
|  | 6 | **finishing** |  | 2010-11-07 | 2010-12-14 |  |  |
| A16910 |  | Internal plastering for ground floor | 8d | 2010-11-07 | 2010-11-20 | A17080 | 20d |
| A17060 |  | Internal plastering for 1st floor | 8d | 2010-11-21 | 2010-11-29 | A16910, A17090 | 20d |
| A16920 |  | External plastering | 10d | 2010-12-04 | 2010-12-14 | A17050 | 12d |
| A17070 |  | Internal plastering for roof floor | 5d | 2010-12-06 | 2010-12-11 | A17060, A17100 | 15d |
|  | villa 111 | **Villa Number B106** |  | 2010-06-21 | 2010-12-13 |  |  |
|  | 1 | **general dates** |  | 2010-06-21 | 2010-12-13 |  |  |
| A18560 |  | IFC drawings | 0d | 2010-06-21 | 2010-06-21 |  | 13d |
| A18540 |  | Start Villa construction | 0d | 2010-08-12 | 2010-08-12 | A18560 FS+45d | 13d |
| A18610 |  | Fence Drawings IFC | 1d | 2010-08-12 | 2010-08-12 | A18540 | 54d |

| ID | WBS | Task | Duration | Start | Finish | Predecessors | Total float |
| --- | --- | --- | --- | --- | --- | --- | --- |
| A18550 |  | finish Villa construction | 0d | 2010-12-13 | 2010-12-13 | A18520, A18670, A18600 | 13d |
|  | 2 | **earth works** |  | 2010-08-12 | 2010-08-28 |  |  |
| A18310 |  | excavation | 2d | 2010-08-12 | 2010-08-14 | A18540 | 13d |
| A18320 |  | soil replacement | 12d | 2010-08-15 | 2010-08-28 | A18310 | 13d |
|  | 3 | **foundation level** |  | 2010-08-29 | 2010-11-01 |  |  |
| A18330 |  | Plain Concrete Foundation | 2d | 2010-08-29 | 2010-08-30 | A18320 | 13d |
| A18620 |  | backfilling between P.C Foundation | 2d | 2010-09-01 | 2010-09-02 | A18330 FS+1d | 9d |
| A18340 |  | Reinforced Concrete Foundation | 7d | 2010-09-04 | 2010-09-11 | A18620 | 13d |
| A18350 |  | under ground brick works | 2d | 2010-09-19 | 2010-09-20 | A18410 | 13d |
| A18360 |  | under ground insulation for RC & Brick work | 2d | 2010-09-21 | 2010-09-22 | A18350 | 13d |
| A18370 |  | backfilling for under ground | 4d | 2010-09-23 | 2010-09-27 | A18360 | 13d |
| A18380 |  | P.C slab on grade 10CM | 1d | 2010-10-27 | 2010-10-27 | A18530, A18470 | 21d |
| A18390 |  | moisture insulation with membrane sheets | 2d | 2010-10-28 | 2010-10-30 | A18380 | 21d |
| A18400 |  | R.C slab on grade | 2d | 2010-10-31 | 2010-11-01 | A18390 | 21d |
|  | 4 | **skeleton & brick walls** |  | 2010-09-12 | 2010-12-11 |  |  |
| A18410 |  | columns for ground floor | 6d | 2010-09-12 | 2010-09-18 | A18340 | 13d |
| A18420 |  | slab for ground floor | 9d | 2010-09-28 | 2010-10-07 | A18410, A18370 | 13d |
| A18570 |  | pouring for ground floor's slab | 1d | 2010-10-09 | 2010-10-09 | A18420, A18480 FF+3d | 13d |
| A18430 |  | columns for 1st floor | 6d | 2010-10-10 | 2010-10-16 | A18570 | 13d |
| A18600 |  | Fence work | 50d | 2010-10-10 | 2010-12-11 | A18570, A18610 FS+10d | 15d |
| A18440 |  | slab for 1st floor | 9d | 2010-10-17 | 2010-10-26 | A18430 | 13d |
| A18470 |  | Brick works for ground floor | 5d | 2010-10-21 | 2010-10-26 | A18570 FS+10d | 21d |
| A18580 |  | pouring for 1st floor's slab | 1d | 2010-10-27 | 2010-10-27 | A18440, A18490 FF+3d | 13d |
| A18450 |  | columns for roof floor | 4d | 2010-10-31 | 2010-11-03 | A18580 FS+2d | 13d |
| A18460 |  | slab for roof floor | 6d | 2010-11-04 | 2010-11-10 | A18450 | 13d |
| A18640 |  | Brick works for 1st floor | 5d | 2010-11-09 | 2010-11-14 | A18580 FS+10d | 23d |
| A18590 |  | pouring for roof floor's slab | 1d | 2010-11-11 | 2010-11-11 | A18460, A18500 FF+2d | 13d |
| A18650 |  | Brick works for roof floor | 5d | 2010-11-27 | 2010-12-01 | A18590 FS+8d | 13d |
|  | 5 | **electro mechanical** |  | 2010-09-28 | 2010-12-04 |  |  |
| A18530 |  | plumbing connections under slab on grade | 2d | 2010-09-28 | 2010-09-29 | A18370 | 44d |
| A18480 |  | electrical conduits for ground floor's slab | 2d | 2010-10-03 | 2010-10-04 | A18420 SS+4d | 14d |
| A18490 |  | electrical conduits for 1st floor slab | 2d | 2010-10-21 | 2010-10-23 | A18440 SS+4d | 14d |
| A18680 |  | electrical conduits for ground floor walls | 2d | 2010-11-03 | 2010-11-04 | A18400 FS+1d | 25d |
| A18500 |  | electrical conduits for roof slab | 1d | 2010-11-08 | 2010-11-08 | A18460 SS+3d | 14d |
| A18690 |  | electrical conduits for 1st floor walls | 2d | 2010-11-15 | 2010-11-16 | A18640 | 23d |
| A18700 |  | electrical conduits for roof floor walls | 2d | 2010-12-02 | 2010-12-04 | A18650 | 16d |
|  | 6 | **finishing** |  | 2010-11-06 | 2010-12-13 |  |  |
| A18510 |  | Internal plastering for ground floor | 8d | 2010-11-06 | 2010-11-14 | A18680 | 21d |
| A18660 |  | Internal plastering for 1st floor | 8d | 2010-11-17 | 2010-11-25 | A18510, A18690 | 23d |
| A18520 |  | External plastering | 10d | 2010-12-02 | 2010-12-13 | A18650 | 13d |
| A18670 |  | Internal plastering for roof floor | 5d | 2010-12-05 | 2010-12-09 | A18660, A18700 | 16d |
|  | villa 112 | **Villa Number B105** |  | 2010-06-21 | 2010-12-13 |  |  |
|  | 1 | **general dates** |  | 2010-06-21 | 2010-12-13 |  |  |
| A18960 |  | IFC drawings | 0d | 2010-06-21 | 2010-06-21 |  | 13d |
| A18940 |  | Start Villa construction | 0d | 2010-08-12 | 2010-08-12 | A18960 FS+45d | 13d |
| A19010 |  | Fence Drawings IFC | 1d | 2010-08-12 | 2010-08-12 | A18940 | 54d |
| A18950 |  | finish Villa construction | 0d | 2010-12-13 | 2010-12-13 | A18920, A19070, A19000 | 13d |
|  | 2 | **earth works** |  | 2010-08-12 | 2010-08-28 |  |  |
| A18710 |  | excavation | 2d | 2010-08-12 | 2010-08-14 | A18940 | 13d |
| A18720 |  | soil replacement | 12d | 2010-08-15 | 2010-08-28 | A18710 | 13d |
|  | 3 | **foundation level** |  | 2010-08-29 | 2010-11-01 |  |  |
| A18730 |  | Plain Concrete Foundation | 2d | 2010-08-29 | 2010-08-30 | A18720 | 13d |
| A19020 |  | backfilling between P.C Foundation | 2d | 2010-09-01 | 2010-09-02 | A18730 FS+1d | 9d |
| A18740 |  | Reinforced Concrete Foundation | 7d | 2010-09-04 | 2010-09-11 | A19020 | 13d |
| A18750 |  | under ground brick works | 2d | 2010-09-19 | 2010-09-20 | A18810 | 13d |
| A18760 |  | under ground insulation for RC & Brick work | 2d | 2010-09-21 | 2010-09-22 | A18750 | 13d |
| A18770 |  | backfilling for under ground | 4d | 2010-09-23 | 2010-09-27 | A18760 | 13d |
| A18780 |  | P.C slab on grade 10CM | 1d | 2010-10-27 | 2010-10-27 | A18930, A18870 | 21d |
| A18790 |  | moisture insulation with membrane sheets | 2d | 2010-10-28 | 2010-10-30 | A18780 | 21d |
| A18800 |  | R.C slab on grade | 2d | 2010-10-31 | 2010-11-01 | A18790 | 21d |
|  | 4 | **skeleton & brick walls** |  | 2010-09-12 | 2010-12-11 |  |  |
| A18810 |  | columns for ground floor | 6d | 2010-09-12 | 2010-09-18 | A18740 | 13d |
| A18820 |  | slab for ground floor | 9d | 2010-09-28 | 2010-10-07 | A18810, A18770 | 13d |
| A18970 |  | pouring for ground floor's slab | 1d | 2010-10-09 | 2010-10-09 | A18820, A18880 FF+3d | 13d |
| A18830 |  | columns for 1st floor | 6d | 2010-10-10 | 2010-10-16 | A18970 | 13d |
| A19000 |  | Fence work | 50d | 2010-10-10 | 2010-12-11 | A18970, A19010 FS+10d | 15d |
| A18840 |  | slab for 1st floor | 9d | 2010-10-17 | 2010-10-26 | A18830 | 13d |
| A18870 |  | Brick works for ground floor | 5d | 2010-10-21 | 2010-10-26 | A18970 FS+10d | 21d |
| A18980 |  | pouring for 1st floor's slab | 1d | 2010-10-27 | 2010-10-27 | A18840, A18890 FF+3d | 13d |
| A18850 |  | columns for roof floor | 4d | 2010-10-31 | 2010-11-03 | A18980 FS+2d | 13d |

| ID | WBS | Task | Duration | Start | Finish | Predecessors | Total float |
| --- | --- | --- | --- | --- | --- | --- | --- |
| A18860 |  | slab for roof floor | 6d | 2010-11-04 | 2010-11-10 | A18850 | 13d |
| A19040 |  | Brick works for 1st floor | 5d | 2010-11-09 | 2010-11-14 | A18980 FS+10d | 23d |
| A18990 |  | pouring for roof floor's slab | 1d | 2010-11-11 | 2010-11-11 | A18860, A18900 FF+2d | 13d |
| A19050 |  | Brick works for roof floor | 5d | 2010-11-27 | 2010-12-01 | A18990 FS+8d | 13d |
|  | 5 | **electro mechanical** |  | 2010-09-28 | 2010-12-04 |  |  |
| A18930 |  | plumbing connections under slab on grade | 2d | 2010-09-28 | 2010-09-29 | A18770 | 44d |
| A18880 |  | electrical conduits for ground floor's slab | 2d | 2010-10-03 | 2010-10-04 | A18820 SS+4d | 14d |
| A18890 |  | electrical conduits for 1st floor slab | 2d | 2010-10-21 | 2010-10-23 | A18840 SS+4d | 14d |
| A19080 |  | electrical conduits for ground floor walls | 2d | 2010-11-03 | 2010-11-04 | A18800 FS+1d | 25d |
| A18900 |  | electrical conduits for roof slab | 1d | 2010-11-08 | 2010-11-08 | A18860 SS+3d | 14d |
| A19090 |  | electrical conduits for 1st floor walls | 2d | 2010-11-15 | 2010-11-16 | A19040 | 23d |
| A19100 |  | electrical conduits for roof floor walls | 2d | 2010-12-02 | 2010-12-04 | A19050 | 16d |
|  | 6 | **finishing** |  | 2010-11-06 | 2010-12-13 |  |  |
| A18910 |  | Internal plastering for ground floor | 8d | 2010-11-06 | 2010-11-14 | A19080 | 21d |
| A19060 |  | Internal plastering for 1st floor | 8d | 2010-11-17 | 2010-11-25 | A18910, A19090 | 23d |
| A18920 |  | External plastering | 10d | 2010-12-02 | 2010-12-13 | A19050 | 13d |
| A19070 |  | Internal plastering for roof floor | 5d | 2010-12-05 | 2010-12-09 | A19060, A19100 | 16d |
|  | ] | **Zone.No 4 (Hold)** |  | 2010-06-21 | 2010-12-28 |  |  |
|  | villa 55 | **Villa Number A55** |  | 2010-06-21 | 2010-12-28 |  |  |
|  | 1 | **general dates** |  | 2010-06-21 | 2010-12-28 |  |  |
| A17360 |  | IFC drawings | 0d | 2010-06-21 | 2010-06-21 |  | 0d |
| A17340 |  | Start Villa construction | 0d | 2010-08-18 | 2010-08-18 | A17360 FS+50d | 0d |
| A17410 |  | Fence Drawings IFC | 1d | 2010-08-18 | 2010-08-18 | A17340 | 49d |
| A17350 |  | finish Villa construction | 0d | 2010-12-28 | 2010-12-28 | A17320, A17470, A17400 | 0d |
|  | 2 | **earth works** |  | 2010-08-18 | 2010-09-12 |  |  |
| A17110 |  | excavation | 10d | 2010-08-18 | 2010-08-29 | A17340 | 0d |
| A17120 |  | soil replacement | 12d | 2010-08-30 | 2010-09-12 | A17110 | 0d |
|  | 3 | **foundation level** |  | 2010-09-13 | 2010-11-21 |  |  |
| A17130 |  | Plain Concrete Foundation | 2d | 2010-09-13 | 2010-09-14 | A17120 | 0d |
| A17420 |  | backfilling between P.C Foundation | 2d | 2010-09-16 | 2010-09-18 | A17130 FS+1d | 0d |
| A17140 |  | Reinforced Concrete Foundation | 7d | 2010-09-19 | 2010-09-26 | A17420 | 0d |
| A17150 |  | under ground brick works | 2d | 2010-10-04 | 2010-10-05 | A17210 | 0d |
| A17160 |  | under ground insulation for RC & Brick work | 2d | 2010-10-06 | 2010-10-07 | A17150 | 0d |
| A17170 |  | backfilling for under ground | 4d | 2010-10-09 | 2010-10-12 | A17160 | 0d |
| A17180 |  | P.C slab on grade 10CM | 1d | 2010-11-11 | 2010-11-11 | A17330, A17270 | 8d |
| A17190 |  | moisture insulation with membrane sheets | 2d | 2010-11-13 | 2010-11-14 | A17180 | 8d |
| A17200 |  | R.C slab on grade | 2d | 2010-11-20 | 2010-11-21 | A17190 | 8d |
|  | 4 | **skeleton & brick walls** |  | 2010-09-27 | 2010-12-26 |  |  |
| A17210 |  | columns for ground floor | 6d | 2010-09-27 | 2010-10-03 | A17140 | 0d |
| A17220 |  | slab for ground floor | 9d | 2010-10-13 | 2010-10-23 | A17210, A17170 | 0d |
| A17370 |  | pouring for ground floor's slab | 1d | 2010-10-24 | 2010-10-24 | A17220, A17280 FF+3d | 0d |
| A17230 |  | columns for 1st floor | 6d | 2010-10-25 | 2010-10-31 | A17370 | 0d |
| A17400 |  | Fence work | 50d | 2010-10-25 | 2010-12-26 | A17370, A17410 FS+10d | 2d |
| A17240 |  | slab for 1st floor | 9d | 2010-11-01 | 2010-11-10 | A17230 | 0d |
| A17270 |  | Brick works for ground floor | 5d | 2010-11-06 | 2010-11-10 | A17370 FS+10d | 8d |
| A17380 |  | pouring for 1st floor's slab | 1d | 2010-11-11 | 2010-11-11 | A17240, A17290 FF+3d | 0d |
| A17250 |  | columns for roof floor | 4d | 2010-11-20 | 2010-11-23 | A17380 FS+2d | 0d |
| A17260 |  | slab for roof floor | 6d | 2010-11-24 | 2010-11-30 | A17250 | 0d |
| A17440 |  | Brick works for 1st floor | 5d | 2010-11-29 | 2010-12-04 | A17380 FS+10d | 6d |
| A17390 |  | pouring for roof floor's slab | 1d | 2010-12-01 | 2010-12-01 | A17260, A17300 FF+2d | 0d |
| A17450 |  | Brick works for roof floor | 5d | 2010-12-12 | 2010-12-16 | A17390 FS+8d | 0d |
|  | 5 | **electro mechanical** |  | 2010-10-13 | 2010-12-19 |  |  |
| A17330 |  | plumbing connections under slab on grade | 2d | 2010-10-13 | 2010-10-14 | A17170 | 31d |
| A17280 |  | electrical conduits for ground floor's slab | 2d | 2010-10-18 | 2010-10-19 | A17220 SS+4d | 1d |
| A17290 |  | electrical conduits for 1st floor slab | 2d | 2010-11-06 | 2010-11-07 | A17240 SS+4d | 1d |
| A17480 |  | electrical conduits for ground floor walls | 2d | 2010-11-23 | 2010-11-24 | A17200 FS+1d | 8d |
| A17300 |  | electrical conduits for roof slab | 1d | 2010-11-28 | 2010-11-28 | A17260 SS+3d | 1d |
| A17490 |  | electrical conduits for 1st floor walls | 2d | 2010-12-05 | 2010-12-06 | A17440 | 6d |
| A17500 |  | electrical conduits for roof floor walls | 2d | 2010-12-18 | 2010-12-19 | A17450 | 3d |
|  | 6 | **finishing** |  | 2010-11-25 | 2010-12-28 |  |  |
| A17310 |  | Internal plastering for ground floor | 8d | 2010-11-25 | 2010-12-04 | A17480 | 8d |
| A17460 |  | Internal plastering for 1st floor | 8d | 2010-12-07 | 2010-12-15 | A17310, A17490 | 6d |
| A17320 |  | External plastering | 10d | 2010-12-18 | 2010-12-28 | A17450 | 0d |
| A17470 |  | Internal plastering for roof floor | 5d | 2010-12-20 | 2010-12-25 | A17460, A17500 | 3d |
|  | villa 86 | **Villa Number A86** |  | 2010-06-21 | 2010-12-28 |  |  |
|  | 1 | **general dates** |  | 2010-06-21 | 2010-12-28 |  |  |
| A17760 |  | IFC drawings | 0d | 2010-06-21 | 2010-06-21 |  | 0d |
| A17740 |  | Start Villa construction | 0d | 2010-08-18 | 2010-08-18 | A17760 FS+50d | 0d |
| A17810 |  | Fence Drawings IFC | 1d | 2010-08-18 | 2010-08-18 | A17740 | 49d |
| A17750 |  | finish Villa construction | 0d | 2010-12-28 | 2010-12-28 | A17720, A17870, A17800 | 0d |

| ID | WBS | Task | Duration | Start | Finish | Predecessors | Total float |
| --- | --- | --- | --- | --- | --- | --- | --- |
|  | 2 | **earth works** |  | 2010-08-18 | 2010-09-12 |  |  |
| A17510 |  | excavation | 10d | 2010-08-18 | 2010-08-29 | A17740 | 0d |
| A17520 |  | soil replacement | 12d | 2010-08-30 | 2010-09-12 | A17510 | 0d |
|  | 3 | **foundation level** |  | 2010-09-13 | 2010-11-21 |  |  |
| A17530 |  | Plain Concrete Foundation | 2d | 2010-09-13 | 2010-09-14 | A17520 | 0d |
| A17820 |  | backfilling between P.C Foundation | 2d | 2010-09-16 | 2010-09-18 | A17530 FS+1d | 0d |
| A17540 |  | Reinforced Concrete Foundation | 7d | 2010-09-19 | 2010-09-26 | A17820 | 0d |
| A17550 |  | under ground brick works | 2d | 2010-10-04 | 2010-10-05 | A17610 | 0d |
| A17560 |  | under ground insulation for RC & Brick work | 2d | 2010-10-06 | 2010-10-07 | A17550 | 0d |
| A17570 |  | backfilling for under ground | 4d | 2010-10-09 | 2010-10-12 | A17560 | 0d |
| A17580 |  | P.C slab on grade 10CM | 1d | 2010-11-11 | 2010-11-11 | A17730, A17670 | 8d |
| A17590 |  | moisture insulation with membrane sheets | 2d | 2010-11-13 | 2010-11-14 | A17580 | 8d |
| A17600 |  | R.C slab on grade | 2d | 2010-11-20 | 2010-11-21 | A17590 | 8d |
|  | 4 | **skeleton & brick walls** |  | 2010-09-27 | 2010-12-26 |  |  |
| A17610 |  | columns for ground floor | 6d | 2010-09-27 | 2010-10-03 | A17540 | 0d |
| A17620 |  | slab for ground floor | 9d | 2010-10-13 | 2010-10-23 | A17610, A17570 | 0d |
| A17770 |  | pouring for ground floor's slab | 1d | 2010-10-24 | 2010-10-24 | A17620, A17680 FF+3d | 0d |
| A17630 |  | columns for 1st floor | 6d | 2010-10-25 | 2010-10-31 | A17770 | 0d |
| A17800 |  | Fence work | 50d | 2010-10-25 | 2010-12-26 | A17770, A17810 FS+10d | 2d |
| A17640 |  | slab for 1st floor | 9d | 2010-11-01 | 2010-11-10 | A17630 | 0d |
| A17670 |  | Brick works for ground floor | 5d | 2010-11-06 | 2010-11-10 | A17770 FS+10d | 8d |
| A17780 |  | pouring for 1st floor's slab | 1d | 2010-11-11 | 2010-11-11 | A17640, A17690 FF+3d | 0d |
| A17650 |  | columns for roof floor | 4d | 2010-11-20 | 2010-11-23 | A17780 FS+2d | 0d |
| A17660 |  | slab for roof floor | 6d | 2010-11-24 | 2010-11-30 | A17650 | 0d |
| A17840 |  | Brick works for 1st floor | 5d | 2010-11-29 | 2010-12-04 | A17780 FS+10d | 6d |
| A17790 |  | pouring for roof floor's slab | 1d | 2010-12-01 | 2010-12-01 | A17660, A17700 FF+2d | 0d |
| A17850 |  | Brick works for roof floor | 5d | 2010-12-12 | 2010-12-16 | A17790 FS+8d | 0d |
|  | 5 | **electro mechanical** |  | 2010-10-13 | 2010-12-19 |  |  |
| A17730 |  | plumbing connections under slab on grade | 2d | 2010-10-13 | 2010-10-14 | A17570 | 31d |
| A17680 |  | electrical conduits for ground floor's slab | 2d | 2010-10-18 | 2010-10-19 | A17620 SS+4d | 1d |
| A17690 |  | electrical conduits for 1st floor slab | 2d | 2010-11-06 | 2010-11-07 | A17640 SS+4d | 1d |
| A17880 |  | electrical conduits for ground floor walls | 2d | 2010-11-23 | 2010-11-24 | A17600 FS+1d | 8d |
| A17700 |  | electrical conduits for roof slab | 1d | 2010-11-28 | 2010-11-28 | A17660 SS+3d | 1d |
| A17890 |  | electrical conduits for 1st floor walls | 2d | 2010-12-05 | 2010-12-06 | A17840 | 6d |
| A17900 |  | electrical conduits for roof floor walls | 2d | 2010-12-18 | 2010-12-19 | A17850 | 3d |
|  | 6 | **finishing** |  | 2010-11-25 | 2010-12-28 |  |  |
| A17710 |  | Internal plastering for ground floor | 8d | 2010-11-25 | 2010-12-04 | A17880 | 8d |
| A17860 |  | Internal plastering for 1st floor | 8d | 2010-12-07 | 2010-12-15 | A17710, A17890 | 6d |
| A17720 |  | External plastering | 10d | 2010-12-18 | 2010-12-28 | A17850 | 0d |
| A17870 |  | Internal plastering for roof floor | 5d | 2010-12-20 | 2010-12-25 | A17860, A17900 | 3d |
|  | villa 87 | **Villa Number A87** |  | 2010-06-21 | 2010-12-28 |  |  |
|  | 1 | **general dates** |  | 2010-06-21 | 2010-12-28 |  |  |
| A18160 |  | IFC drawings | 0d | 2010-06-21 | 2010-06-21 |  | 0d |
| A18140 |  | Start Villa construction | 0d | 2010-08-18 | 2010-08-18 | A18160 FS+50d | 0d |
| A18210 |  | Fence Drawings IFC | 1d | 2010-08-18 | 2010-08-18 | A18140 | 49d |
| A18150 |  | finish Villa construction | 0d | 2010-12-28 | 2010-12-28 | A18120, A18270, A18200 | 0d |
|  | 2 | **earth works** |  | 2010-08-18 | 2010-09-12 |  |  |
| A17910 |  | excavation | 10d | 2010-08-18 | 2010-08-29 | A18140 | 0d |
| A17920 |  | soil replacement | 12d | 2010-08-30 | 2010-09-12 | A17910 | 0d |
|  | 3 | **foundation level** |  | 2010-09-13 | 2010-11-21 |  |  |
| A17930 |  | Plain Concrete Foundation | 2d | 2010-09-13 | 2010-09-14 | A17920 | 0d |
| A18220 |  | backfilling between P.C Foundation | 2d | 2010-09-16 | 2010-09-18 | A17930 FS+1d | 0d |
| A17940 |  | Reinforced Concrete Foundation | 7d | 2010-09-19 | 2010-09-26 | A18220 | 0d |
| A17950 |  | under ground brick works | 2d | 2010-10-04 | 2010-10-05 | A18010 | 0d |
| A17960 |  | under ground insulation for RC & Brick work | 2d | 2010-10-06 | 2010-10-07 | A17950 | 0d |
| A17970 |  | backfilling for under ground | 4d | 2010-10-09 | 2010-10-12 | A17960 | 0d |
| A17980 |  | P.C slab on grade 10CM | 1d | 2010-11-11 | 2010-11-11 | A18130, A18070 | 8d |
| A17990 |  | moisture insulation with membrane sheets | 2d | 2010-11-13 | 2010-11-14 | A17980 | 8d |
| A18000 |  | R.C slab on grade | 2d | 2010-11-20 | 2010-11-21 | A17990 | 8d |
|  | 4 | **skeleton & brick walls** |  | 2010-09-27 | 2010-12-26 |  |  |
| A18010 |  | columns for ground floor | 6d | 2010-09-27 | 2010-10-03 | A17940 | 0d |
| A18020 |  | slab for ground floor | 9d | 2010-10-13 | 2010-10-23 | A18010, A17970 | 0d |
| A18170 |  | pouring for ground floor's slab | 1d | 2010-10-24 | 2010-10-24 | A18020, A18080 FF+3d | 0d |
| A18030 |  | columns for 1st floor | 6d | 2010-10-25 | 2010-10-31 | A18170 | 0d |
| A18200 |  | Fence work | 50d | 2010-10-25 | 2010-12-26 | A18170, A18210 FS+10d | 2d |
| A18040 |  | slab for 1st floor | 9d | 2010-11-01 | 2010-11-10 | A18030 | 0d |
| A18070 |  | Brick works for ground floor | 5d | 2010-11-06 | 2010-11-10 | A18170 FS+10d | 8d |
| A18180 |  | pouring for 1st floor's slab | 1d | 2010-11-11 | 2010-11-11 | A18040, A18090 FF+3d | 0d |
| A18050 |  | columns for roof floor | 4d | 2010-11-20 | 2010-11-23 | A18180 FS+2d | 0d |
| A18060 |  | slab for roof floor | 6d | 2010-11-24 | 2010-11-30 | A18050 | 0d |

| ID | WBS | Task | Duration | Start | Finish | Predecessors | Total float |
| --- | --- | --- | --- | --- | --- | --- | --- |
| A18240 |  | Brick works for 1st floor | 5d | 2010-11-29 | 2010-12-04 | A18180 FS+10d | 6d |
| A18190 |  | pouring for roof floor's slab | 1d | 2010-12-01 | 2010-12-01 | A18060, A18100 FF+2d | 0d |
| A18250 |  | Brick works for roof floor | 5d | 2010-12-12 | 2010-12-16 | A18190 FS+8d | 0d |
|  | 5 | **electro mechanical** |  | 2010-10-13 | 2010-12-19 |  |  |
| A18130 |  | plumbing connections under slab on grade | 2d | 2010-10-13 | 2010-10-14 | A17970 | 31d |
| A18080 |  | electrical conduits for ground floor's slab | 2d | 2010-10-18 | 2010-10-19 | A18020 SS+4d | 1d |
| A18090 |  | electrical conduits for 1st floor slab | 2d | 2010-11-06 | 2010-11-07 | A18040 SS+4d | 1d |
| A18280 |  | electrical conduits for ground floor walls | 2d | 2010-11-23 | 2010-11-24 | A18000 FS+1d | 8d |
| A18100 |  | electrical conduits for roof slab | 1d | 2010-11-28 | 2010-11-28 | A18060 SS+3d | 1d |
| A18290 |  | electrical conduits for 1st floor walls | 2d | 2010-12-05 | 2010-12-06 | A18240 | 6d |
| A18300 |  | electrical conduits for roof floor walls | 2d | 2010-12-18 | 2010-12-19 | A18250 | 3d |
|  | 6 | **finishing** |  | 2010-11-25 | 2010-12-28 |  |  |
| A18110 |  | Internal plastering for ground floor | 8d | 2010-11-25 | 2010-12-04 | A18280 | 8d |
| A18260 |  | Internal plastering for 1st floor | 8d | 2010-12-07 | 2010-12-15 | A18110, A18290 | 6d |
| A18120 |  | External plastering | 10d | 2010-12-18 | 2010-12-28 | A18250 | 0d |
| A18270 |  | Internal plastering for roof floor | 5d | 2010-12-20 | 2010-12-25 | A18260, A18300 | 3d |
|  | Close | **Closing phase** |  | 2010-12-28 | 2010-12-28 |  |  |
| A1280 |  | end project | 0d | 2010-12-28 | 2010-12-28 | A10240, A10550, A10950, A11350, A11750, A12150, A12550, A12950, A13350, A13750, A14150, A14550, A14950, A15350, A15750, A16150, A16550, A16950, A17350, A17750, A18150, A18550, A18950 | 0d |

## Version 2 (data date 2010-07-20, saved 2010-07-26, file update of jungle 20-07-2010.xer)

Note of the change: Tertiary change

Last finish 2010-12-28 → 2010-11-30 (-28d). Complete tasks 0 → 74.

Added:

| ID | Task | Duration | Start | Finish | Predecessors |
| --- | --- | --- | --- | --- | --- |
| A10002 | P.C Under Smells | 1d | 2010-08-11 | 2010-08-11 | A10001 |
| A10630 | P.C Under Smells | 1d | 2010-07-20 | 2010-07-20 | A10620 |
| A11030 | P.C Under Smells | 1d | 2010-07-20 | 2010-07-20 | A11020 |
| A11430 | P.C Under Smells | 1d | 2010-07-20 | 2010-07-20 | A11420 |
| A11830 | P.C Under Smells | 1d | 2010-07-20 | 2010-07-20 | A11820 |
| A12230 | P.C Under Smells | 1d | 2010-07-20 | 2010-07-20 | A12220 |
| A12630 | P.C Under Smells | 1d | 2010-08-14 | 2010-08-14 | A12620 |
| A13030 | P.C Under Smells | 1d | 2010-08-14 | 2010-08-14 | A13020 |
| A13430 | P.C Under Smells | 1d | 2010-07-26 | 2010-07-26 | A13420 |
| A13830 | P.C Under Smells | 1d | 2010-07-26 | 2010-07-26 | A13820 |
| A14230 | P.C Under Smells | 1d | 2010-07-26 | 2010-07-26 | A14220 |
| A14630 | P.C Under Smells | 1d | 2010-07-26 | 2010-07-26 | A14620 |
| A15030 | P.C Under Smells | 1d | 2010-07-27 | 2010-07-28 | A15020 |
| A15430 | P.C Under Smells | 1d | 2010-07-27 | 2010-07-28 | A15420 |
| A15830 | P.C Under Smells | 1d | 2010-07-27 | 2010-07-28 | A15820 |
| A16230 | P.C Under Smells | 1d | 2010-07-27 | 2010-07-28 | A16220 |
| A16630 | P.C Under Smells | 1d | 2010-07-27 | 2010-07-28 | A16620 |
| A17030 | P.C Under Smells | 1d | 2010-08-11 | 2010-08-11 | A17020 |
| A17430 | P.C Under Smells | 1d | 2010-08-21 | 2010-08-21 | A17420 |
| A17830 | P.C Under Smells | 1d | 2010-08-21 | 2010-08-21 | A17820 |
| A18230 | P.C Under Smells | 1d | 2010-08-21 | 2010-08-21 | A18220 |
| A18630 | P.C Under Smells | 1d | 2010-08-11 | 2010-08-11 | A18620 |
| A19030 | P.C Under Smells | 1d | 2010-08-11 | 2010-08-11 | A19020 |

Removed: Zone.No 4 (Hold)

Changed:

| ID | Task | Start | Finish | Duration | Complete | Total float | Predecessors |
| --- | --- | --- | --- | --- | --- | --- | --- |
| Startup | **Startup Phase** | 2010-06-21 → 2010-07-20 (+29d) | 2010-06-21 → 2010-07-20 (+29d) |  |  |  |  |
| A1000 | Project Start | 2010-06-21 → 2010-07-20 (+29d) | 2010-06-21 → 2010-07-20 (+29d) |  |  | 16d → 10d |  |
| A1020 | Site Taking Over | 2010-06-21 → 2010-07-20 (+29d) | 2010-06-21 → 2010-07-20 (+29d) |  |  | 16d → 10d |  |
| Const. | **Construction Phase** |  | 2010-12-28 → 2010-11-30 (-28d) |  |  |  |  |
| zone 1 | **Zone.No 1** |  | 2010-11-02 → 2010-11-23 (+21d) |  |  |  |  |
| villa 9 | **Villa Number D9** | 2010-06-21 → 2010-07-20 (+29d) | 2010-12-09 → 2010-11-21 (-18d) |  |  |  |  |
| 1 | **general dates** | 2010-06-21 → 2010-07-20 (+29d) | 2010-10-31 → 2010-11-21 (+21d) |  |  |  |  |
| A10230 | Start Villa construction | 2010-08-11 → 2010-07-20 (-22d) | 2010-08-11 → 2010-07-20 (-22d) |  |  | 16d → 10d | A10250, A1000 FS+44d → A10250, A1000 |
| A10250 | IFC drawings | 2010-06-21 → 2010-07-20 (+29d) | 2010-06-21 → 2010-07-20 (+29d) |  |  | 60d → 10d |  |
| A10300 | Fence Drawings IFC | 2010-08-11 → 2010-07-20 (-22d) | 2010-08-11 → 2010-07-20 (-22d) |  |  | 55d → 50d |  |
| A10240 | finish Villa construction | 2010-12-09 → 2010-11-21 (-18d) | 2010-12-09 → 2010-11-21 (-18d) |  |  | 16d → 8d |  |
| 2 | **earth works** | 2010-07-03 → 2010-07-20 (+17d) | 2010-07-04 → 2010-08-04 (+31d) |  |  |  |  |
| A9980 | excavation | 2010-08-11 → 2010-07-20 (-22d) | 2010-08-12 → 2010-07-21 (-22d) |  |  | 16d → 10d |  |
| A9990 | soil replacement | 2010-08-14 → 2010-07-22 (-23d) | 2010-08-26 → 2010-08-04 (-22d) |  |  | 16d → 10d |  |
| 3 | **foundation level** | 2010-07-05 → 2010-08-05 (+31d) | 2010-09-23 → 2010-10-10 (+17d) |  |  |  |  |
| A10000 | Plain Concrete Foundation | 2010-08-28 → 2010-08-05 (-23d) | 2010-08-29 → 2010-08-07 (-22d) |  |  | 16d → 10d |  |
| A10001 | backfilling between P.C Foundation | 2010-08-31 → 2010-08-09 (-22d) | 2010-09-01 → 2010-08-10 (-22d) |  |  | 12d → 10d |  |
| A10010 | Reinforced Concrete Foundation | 2010-09-02 → 2010-08-12 (-21d) | 2010-09-09 → 2010-08-19 (-21d) |  |  | 16d → 10d | A10001 → A10002 |
| A10020 | under ground brick works | 2010-09-18 → 2010-08-28 (-21d) | 2010-09-19 → 2010-08-29 (-21d) |  |  | 16d → 10d |  |
| A10030 | under ground insulation for RC & Brick work | 2010-09-20 → 2010-08-30 (-21d) | 2010-09-21 → 2010-08-31 (-21d) |  |  | 16d → 10d |  |
| A10040 | backfilling for under ground | 2010-09-22 → 2010-09-01 (-21d) | 2010-09-23 → 2010-09-05 (-18d) | 2d → 4d |  | 16d → 10d |  |
| A10050 | P.C slab on grade 10CM | 2010-10-24 → 2010-10-05 (-19d) | 2010-10-24 → 2010-10-05 (-19d) |  |  | 24d → 19d |  |
| A10060 | moisture insulation with membrane sheets | 2010-10-25 → 2010-10-06 (-19d) | 2010-10-26 → 2010-10-07 (-19d) |  |  | 24d → 19d |  |
| A10070 | R.C slab on grade | 2010-10-27 → 2010-10-09 (-18d) | 2010-10-28 → 2010-10-10 (-18d) |  |  | 24d → 19d |  |
| 4 | **skeleton & brick walls** | 2010-08-04 → 2010-08-21 (+17d) | 2010-10-28 → 2010-11-14 (+17d) |  |  |  |  |
| A10080 | columns for ground floor | 2010-09-11 → 2010-08-21 (-21d) | 2010-09-16 → 2010-08-26 (-21d) |  |  | 16d → 10d |  |
| A10090 | slab for ground floor | 2010-09-25 → 2010-09-06 (-19d) | 2010-10-04 → 2010-09-15 (-19d) |  |  | 16d → 10d |  |
| A10260 | pouring for ground floor's slab | 2010-10-05 → 2010-09-16 (-19d) | 2010-10-05 → 2010-09-16 (-19d) |  |  | 16d → 10d |  |
| A10100 | columns for 1st floor | 2010-10-06 → 2010-09-18 (-18d) | 2010-10-12 → 2010-09-23 (-19d) |  |  | 16d → 12d |  |
| A10290 | Fence work | 2010-10-06 → 2010-09-18 (-18d) | 2010-12-07 → 2010-11-14 (-23d) |  |  | 18d → 10d |  |
| A10110 | slab for 1st floor | 2010-10-13 → 2010-09-25 (-18d) | 2010-10-23 → 2010-10-04 (-19d) |  |  | 16d → 12d |  |
| A10140 | Brick works for ground floor | 2010-10-18 → 2010-09-29 (-19d) | 2010-10-23 → 2010-10-04 (-19d) |  |  | 24d → 19d |  |
| A10270 | pouring for 1st floor's slab | 2010-10-24 → 2010-10-05 (-19d) | 2010-10-24 → 2010-10-05 (-19d) |  |  | 16d → 12d |  |
| A10120 | columns for roof floor | 2010-10-27 → 2010-10-09 (-18d) | 2010-10-31 → 2010-10-12 (-19d) |  |  | 16d → 12d |  |
| A10130 | slab for roof floor | 2010-11-01 → 2010-10-13 (-19d) | 2010-11-07 → 2010-10-19 (-19d) |  |  | 16d → 12d |  |
| A10141 | Brick works for 1st floor | 2010-11-06 → 2010-10-18 (-19d) | 2010-11-10 → 2010-10-23 (-18d) |  |  | 26d → 18d |  |
| A10280 | pouring for roof floor's slab | 2010-11-08 → 2010-10-20 (-19d) | 2010-11-08 → 2010-10-20 (-19d) |  |  | 16d → 12d |  |
| A10142 | Brick works for roof floor | 2010-11-23 → 2010-10-31 (-23d) | 2010-11-28 → 2010-11-04 (-24d) |  |  | 16d → 12d |  |
| 5 | **electro mechanical** | 2010-08-21 → 2010-09-06 (+16d) | 2010-10-21 → 2010-11-07 (+17d) |  |  |  |  |
| A10210 | plumbing connections under slab on grade | 2010-09-25 → 2010-09-06 (-19d) | 2010-09-26 → 2010-09-07 (-19d) |  |  | 47d → 42d |  |
| A10150 | electrical conduits for ground floor's slab | 2010-09-29 → 2010-09-11 (-18d) | 2010-09-30 → 2010-09-12 (-18d) |  |  | 17d → 11d |  |
| A10160 | electrical conduits for 1st floor slab | 2010-10-18 → 2010-09-29 (-19d) | 2010-10-19 → 2010-09-30 (-19d) |  |  | 17d → 13d |  |
| A10171 | electrical conduits for ground floor walls | 2010-10-31 → 2010-10-12 (-19d) | 2010-11-01 → 2010-10-13 (-19d) |  |  | 28d → 19d |  |
| A10170 | electrical conduits for roof slab | 2010-11-04 → 2010-10-17 (-18d) | 2010-11-04 → 2010-10-17 (-18d) |  |  | 17d → 13d |  |
| A10172 | electrical conduits for 1st floor walls | 2010-11-11 → 2010-10-24 (-18d) | 2010-11-13 → 2010-10-25 (-19d) |  |  | 26d → 18d |  |
| A10173 | electrical conduits for roof floor walls | 2010-11-29 → 2010-11-06 (-23d) | 2010-11-30 → 2010-11-07 (-23d) |  |  | 19d → 15d |  |
| 6 | **finishing** | 2010-09-28 → 2010-10-14 (+16d) | 2010-10-31 → 2010-11-21 (+21d) |  |  |  |  |
| A10190 | Internal plastering for ground floor | 2010-11-02 → 2010-10-14 (-19d) | 2010-11-10 → 2010-10-23 (-18d) |  |  | 24d → 19d |  |
| A10191 | Internal plastering for 1st floor | 2010-11-14 → 2010-10-26 (-19d) | 2010-11-22 → 2010-11-03 (-19d) |  |  | 26d → 18d |  |
| A10200 | External plastering | 2010-11-29 → 2010-11-06 (-23d) | 2010-12-09 → 2010-11-21 (-18d) |  |  | 16d → 8d |  |
| A10192 | Internal plastering for roof floor | 2010-12-01 → 2010-11-08 (-23d) | 2010-12-06 → 2010-11-13 (-23d) |  |  | 19d → 15d |  |
| villa 10 | **Villa Number D10** |  | 2010-10-31 → 2010-10-19 (-12d) |  |  |  |  |
| A10540 | Start Villa construction | 2010-07-03 → 2010-06-21 A (-12d) | 2010-07-03 → 2010-06-21 A (-12d) |  | 0% → 100% | 43d → none | A10560 FS+10d → A10560 |
| A10560 | IFC drawings | 2010-06-21 A | 2010-06-21 A |  | 0% → 100% | 43d → none |  |
| A10610 | Fence Drawings IFC | 2010-07-03 → 2010-07-20 (+17d) | 2010-07-03 → 2010-07-20 (+17d) |  |  | 89d → 50d |  |
| A10550 | finish Villa construction | 2010-10-31 → 2010-10-19 (-12d) | 2010-10-31 → 2010-10-19 (-12d) |  |  | 46d → 32.95d |  |
| 2 | **earth works** | 2010-06-23 → 2010-06-21 (-2d) | 2010-07-07 → 2010-07-03 (-4d) |  |  |  |  |
| A10310 | excavation | 2010-07-03 → 2010-06-21 A (-12d) | 2010-07-03 A |  | 0% → 100% | 43d → none |  |
| A10320 | soil replacement | 2010-07-04 → 2010-07-03 A (-1d) | 2010-07-04 → 2010-07-03 A (-1d) |  | 0% → 100% | 43d → none |  |
| 3 | **foundation level** | 2010-07-10 → 2010-07-04 (-6d) |  |  |  |  |  |
| A10330 | Plain Concrete Foundation | 2010-07-05 → 2010-07-04 A (-1d) | 2010-07-06 A |  | 0% → 100% | 43d → none | A10320 FS+1d → A10320 |
| A10620 | backfilling between P.C Foundation | 2010-07-12 → 2010-07-07 A (-5d) | 2010-07-15 → 2010-07-09 A (-6d) | 4d → 2d | 0% → 100% | 43d → none | A10330 FS+4d → A10330 FS+1d |
| A10340 | Reinforced Concrete Foundation | 2010-07-20 → 2010-07-10 A (-10d) | 2010-07-27 → 2010-07-22 (-5d) |  | 0% → 85% | 46d → 34.95d | A10620 FS+3d → A10630 |
| A10350 | under ground brick works | 2010-08-11 → 2010-07-29 (-13d) | 2010-08-12 → 2010-08-01 (-11d) |  |  | 46d → 34.95d |  |
| A10360 | under ground insulation for RC & Brick work | 2010-08-14 → 2010-08-01 (-13d) | 2010-08-15 → 2010-08-03 (-12d) |  |  | 46d → 34.95d |  |
| A10370 | backfilling for under ground | 2010-08-16 → 2010-08-03 (-13d) | 2010-08-19 → 2010-08-08 (-11d) |  |  | 46d → 34.95d |  |
| A10380 | P.C slab on grade 10CM | 2010-09-19 → 2010-09-06 (-13d) | 2010-09-19 → 2010-09-07 (-12d) |  |  | 54d → 43.95d |  |
| A10390 | moisture insulation with membrane sheets | 2010-09-20 → 2010-09-07 (-13d) | 2010-09-21 → 2010-09-09 (-12d) |  |  | 54d → 43.95d |  |
| A10400 | R.C slab on grade | 2010-09-22 → 2010-09-09 (-13d) | 2010-09-23 → 2010-09-12 (-11d) |  |  | 54d → 43.95d |  |
| 4 | **skeleton & brick walls** | 2010-07-24 → 2010-07-22 (-2d) |  |  |  |  |  |

| ID | Task | Start | Finish | Duration | Complete | Total float | Predecessors |
| --- | --- | --- | --- | --- | --- | --- | --- |
| A10410 | columns for ground floor | 2010-08-04 → 2010-07-22 (-13d) | 2010-08-10 → 2010-07-29 (-12d) |  |  | 46d → 34.95d | A10340 FS+6d → A10340 |
| A10420 | slab for ground floor | 2010-08-21 → 2010-08-08 (-13d) | 2010-08-30 → 2010-08-18 (-12d) |  |  | 46d → 34.95d |  |
| A10570 | pouring for ground floor's slab | 2010-08-31 → 2010-08-18 (-13d) | 2010-08-31 → 2010-08-19 (-12d) |  |  | 46d → 34.95d |  |
| A10430 | columns for 1st floor | 2010-09-01 → 2010-08-19 (-13d) | 2010-09-07 → 2010-08-26 (-12d) |  |  | 46d → 36.95d |  |
| A10600 | Fence work | 2010-09-01 → 2010-08-19 (-13d) | 2010-10-28 → 2010-10-17 (-11d) |  |  | 48d → 34.95d |  |
| A10440 | slab for 1st floor | 2010-09-08 → 2010-08-26 (-13d) | 2010-09-18 → 2010-09-06 (-12d) |  |  | 46d → 36.95d |  |
| A10470 | Brick works for ground floor | 2010-09-13 → 2010-08-31 (-13d) | 2010-09-18 → 2010-09-06 (-12d) |  |  | 54d → 43.95d |  |
| A10580 | pouring for 1st floor's slab | 2010-09-19 → 2010-09-06 (-13d) | 2010-09-19 → 2010-09-07 (-12d) |  |  | 46d → 36.95d |  |
| A10450 | columns for roof floor | 2010-09-22 → 2010-09-09 (-13d) | 2010-09-26 → 2010-09-14 (-12d) |  |  | 46d → 36.95d |  |
| A10460 | slab for roof floor | 2010-09-27 → 2010-09-14 (-13d) | 2010-10-03 → 2010-09-21 (-12d) |  |  | 46d → 36.95d |  |
| A10640 | Brick works for 1st floor | 2010-10-02 → 2010-09-19 (-13d) | 2010-10-06 → 2010-09-25 (-11d) |  |  | 56d → 42.95d |  |
| A10590 | pouring for roof floor's slab | 2010-10-04 → 2010-09-21 (-13d) | 2010-10-04 → 2010-09-22 (-12d) |  |  | 46d → 36.95d |  |
| A10650 | Brick works for roof floor | 2010-10-14 → 2010-10-02 (-12d) | 2010-10-19 → 2010-10-07 (-12d) |  |  | 50d → 36.95d |  |
| 5 | **electro mechanical** | 2010-08-09 → 2010-08-08 (-1d) |  |  |  |  |  |
| A10530 | plumbing connections under slab on grade | 2010-08-21 → 2010-08-08 (-13d) | 2010-08-22 → 2010-08-10 (-12d) |  |  | 77d → 66.95d |  |
| A10480 | electrical conduits for ground floor's slab | 2010-08-25 → 2010-08-12 (-13d) | 2010-08-26 → 2010-08-15 (-11d) |  |  | 47d → 35.95d |  |
| A10490 | electrical conduits for 1st floor slab | 2010-09-13 → 2010-08-31 (-13d) | 2010-09-14 → 2010-09-02 (-12d) |  |  | 47d → 37.95d |  |
| A10680 | electrical conduits for ground floor walls | 2010-09-26 → 2010-09-13 (-13d) | 2010-09-27 → 2010-09-15 (-12d) |  |  | 58d → 43.95d |  |
| A10500 | electrical conduits for roof slab | 2010-09-30 → 2010-09-18 (-12d) | 2010-09-30 → 2010-09-19 (-11d) |  |  | 47d → 37.95d |  |
| A10690 | electrical conduits for 1st floor walls | 2010-10-07 → 2010-09-25 (-12d) | 2010-10-09 → 2010-09-27 (-12d) |  |  | 56d → 42.95d |  |
| A10700 | electrical conduits for roof floor walls | 2010-10-20 → 2010-10-07 (-13d) | 2010-10-21 → 2010-10-10 (-11d) |  |  | 53d → 39.95d |  |
| 6 | **finishing** | 2010-09-16 → 2010-09-15 (-1d) |  |  |  |  |  |
| A10510 | Internal plastering for ground floor | 2010-09-28 → 2010-09-15 (-13d) | 2010-10-06 → 2010-09-25 (-11d) |  |  | 54d → 43.95d |  |
| A10660 | Internal plastering for 1st floor | 2010-10-10 → 2010-09-27 (-13d) | 2010-10-18 → 2010-10-06 (-12d) |  |  | 56d → 42.95d |  |
| A10520 | External plastering | 2010-10-20 → 2010-10-07 (-13d) | 2010-10-31 → 2010-10-19 (-12d) |  |  | 46d → 32.95d |  |
| A10670 | Internal plastering for roof floor | 2010-10-23 → 2010-10-10 (-13d) | 2010-10-27 → 2010-10-16 (-11d) |  |  | 53d → 39.95d |  |
| villa 11 | **Villa Number B11** |  | 2010-10-19 → 2010-10-25 (+6d) |  |  |  |  |
| 1 | **general dates** |  | 2010-10-18 → 2010-10-25 (+7d) |  |  |  |  |
| A10940 | Start Villa construction | 2010-06-23 → 2010-06-21 A (-2d) | 2010-06-23 → 2010-06-21 A (-2d) |  | 0% → 100% | 56d → none | A10960 FS+2d → A10960 |
| A10960 | IFC drawings | 2010-06-21 A | 2010-06-21 A |  | 0% → 100% | 56d → none |  |
| A11010 | Fence Drawings IFC | 2010-06-23 → 2010-07-20 (+27d) | 2010-06-23 → 2010-07-20 (+27d) |  |  | 97d → 50d |  |
| A10950 | finish Villa construction | 2010-10-19 → 2010-10-25 (+6d) | 2010-10-19 → 2010-10-25 (+6d) |  |  | 56d → 27d |  |
| 2 | **earth works** | 2010-06-23 → 2010-06-21 (-2d) |  |  |  |  |  |
| A10710 | excavation | 2010-06-23 → 2010-06-21 A (-2d) | 2010-06-23 A | 1d → 0d | 0% → 100% | 56d → none | A10940 → A10940 FS+1d |
| A10720 | soil replacement | 2010-06-24 A | 2010-07-07 → 2010-07-06 A (-1d) |  | 0% → 100% | 56d → none |  |
| 3 | **foundation level** | 2010-07-07 → 2010-07-09 (+2d) | 2010-09-11 → 2010-09-18 (+7d) |  |  |  |  |
| A10730 | Plain Concrete Foundation | 2010-07-10 → 2010-07-09 A (-1d) | 2010-07-11 A |  | 0% → 100% | 56d → none | A10720 FS+1d → A10720 |
| A11020 | backfilling between P.C Foundation | 2010-07-13 → 2010-07-12 A (-1d) | 2010-07-14 A |  | 0% → 100% | 52d → none |  |
| A10740 | Reinforced Concrete Foundation | 2010-07-15 → 2010-07-21 (+6d) | 2010-07-22 → 2010-07-28 (+6d) |  |  | 56d → 29d | A11020 → A11030 |
| A10750 | under ground brick works | 2010-07-31 → 2010-08-05 (+5d) | 2010-08-01 → 2010-08-07 (+6d) |  |  | 56d → 29d |  |
| A10760 | under ground insulation for RC & Brick work | 2010-08-02 → 2010-08-08 (+6d) | 2010-08-03 → 2010-08-09 (+6d) |  |  | 56d → 29d |  |
| A10770 | backfilling for under ground | 2010-08-04 → 2010-08-10 (+6d) | 2010-08-08 → 2010-08-14 (+6d) |  |  | 56d → 29d |  |
| A10780 | P.C slab on grade 10CM | 2010-09-07 → 2010-09-13 (+6d) | 2010-09-07 → 2010-09-13 (+6d) |  |  | 64d → 38d |  |
| A10790 | moisture insulation with membrane sheets | 2010-09-08 → 2010-09-14 (+6d) | 2010-09-09 → 2010-09-15 (+6d) |  |  | 64d → 38d |  |
| A10800 | R.C slab on grade | 2010-09-11 → 2010-09-16 (+5d) | 2010-09-12 → 2010-09-18 (+6d) |  |  | 64d → 38d |  |
| 4 | **skeleton & brick walls** | 2010-07-22 → 2010-07-29 (+7d) | 2010-10-16 → 2010-10-23 (+7d) |  |  |  |  |
| A10810 | columns for ground floor | 2010-07-24 → 2010-07-29 (+5d) | 2010-07-29 → 2010-08-04 (+6d) |  |  | 56d → 29d |  |
| A10820 | slab for ground floor | 2010-08-09 → 2010-08-15 (+6d) | 2010-08-18 → 2010-08-24 (+6d) |  |  | 56d → 29d |  |
| A10970 | pouring for ground floor's slab | 2010-08-19 → 2010-08-25 (+6d) | 2010-08-19 → 2010-08-25 (+6d) |  |  | 56d → 29d |  |
| A10830 | columns for 1st floor | 2010-08-21 → 2010-08-26 (+5d) | 2010-08-26 → 2010-09-01 (+6d) |  |  | 56d → 31d |  |
| A11000 | Fence work | 2010-08-21 → 2010-08-26 (+5d) | 2010-10-17 → 2010-10-23 (+6d) |  |  | 58d → 29d |  |
| A10840 | slab for 1st floor | 2010-08-28 → 2010-09-02 (+5d) | 2010-09-06 → 2010-09-12 (+6d) |  |  | 56d → 31d |  |
| A10870 | Brick works for ground floor | 2010-09-01 → 2010-09-07 (+6d) | 2010-09-06 → 2010-09-12 (+6d) |  |  | 64d → 38d |  |
| A10980 | pouring for 1st floor's slab | 2010-09-07 → 2010-09-13 (+6d) | 2010-09-07 → 2010-09-13 (+6d) |  |  | 56d → 31d |  |
| A10850 | columns for roof floor | 2010-09-11 → 2010-09-16 (+5d) | 2010-09-14 → 2010-09-20 (+6d) |  |  | 56d → 31d |  |
| A10860 | slab for roof floor | 2010-09-15 → 2010-09-21 (+6d) | 2010-09-21 → 2010-09-27 (+6d) |  |  | 56d → 31d |  |
| A11040 | Brick works for 1st floor | 2010-09-20 → 2010-09-26 (+6d) | 2010-09-25 → 2010-09-30 (+5d) |  |  | 66d → 37d |  |
| A10990 | pouring for roof floor's slab | 2010-09-22 → 2010-09-28 (+6d) | 2010-09-22 → 2010-09-28 (+6d) |  |  | 56d → 31d |  |
| A11050 | Brick works for roof floor | 2010-10-03 → 2010-10-09 (+6d) | 2010-10-07 → 2010-10-13 (+6d) |  |  | 60d → 31d |  |
| 5 | **electro mechanical** | 2010-08-08 → 2010-08-15 (+7d) | 2010-10-09 → 2010-10-16 (+7d) |  |  |  |  |
| A10930 | plumbing connections under slab on grade | 2010-08-09 → 2010-08-15 (+6d) | 2010-08-10 → 2010-08-16 (+6d) |  |  | 87d → 61d |  |
| A10880 | electrical conduits for ground floor's slab | 2010-08-14 → 2010-08-19 (+5d) | 2010-08-15 → 2010-08-21 (+6d) |  |  | 57d → 30d |  |
| A10890 | electrical conduits for 1st floor slab | 2010-09-01 → 2010-09-07 (+6d) | 2010-09-02 → 2010-09-08 (+6d) |  |  | 57d → 32d |  |
| A11080 | electrical conduits for ground floor walls | 2010-09-14 → 2010-09-20 (+6d) | 2010-09-15 → 2010-09-21 (+6d) |  |  | 68d → 38d |  |
| A10900 | electrical conduits for roof slab | 2010-09-19 → 2010-09-25 (+6d) | 2010-09-19 → 2010-09-25 (+6d) |  |  | 57d → 32d |  |
| A11090 | electrical conduits for 1st floor walls | 2010-09-26 → 2010-10-02 (+6d) | 2010-09-27 → 2010-10-03 (+6d) |  |  | 66d → 37d |  |
| A11100 | electrical conduits for roof floor walls | 2010-10-09 → 2010-10-14 (+5d) | 2010-10-10 → 2010-10-16 (+6d) |  |  | 63d → 34d |  |
| 6 | **finishing** | 2010-09-15 → 2010-09-22 (+7d) | 2010-10-18 → 2010-10-25 (+7d) |  |  |  |  |
| A10910 | Internal plastering for ground floor | 2010-09-16 → 2010-09-22 (+6d) | 2010-09-25 → 2010-09-30 (+5d) |  |  | 64d → 38d |  |
| A11060 | Internal plastering for 1st floor | 2010-09-28 → 2010-10-04 (+6d) | 2010-10-06 → 2010-10-12 (+6d) |  |  | 66d → 37d |  |

| ID | Task | Start | Finish | Duration | Complete | Total float | Predecessors |
| --- | --- | --- | --- | --- | --- | --- | --- |
| A10920 | External plastering | 2010-10-09 → 2010-10-14 (+5d) | 2010-10-19 → 2010-10-25 (+6d) |  |  | 56d → 27d |  |
| A11070 | Internal plastering for roof floor | 2010-10-11 → 2010-10-17 (+6d) | 2010-10-16 → 2010-10-21 (+5d) |  |  | 63d → 34d |  |
| villa 12 | **Villa Number B12** |  | 2010-10-18 → 2010-10-19 (+1d) |  |  |  |  |
| 1 | **general dates** |  | 2010-10-30 → 2010-10-19 (-11d) |  |  |  |  |
| A11340 | Start Villa construction | 2010-06-21 A | 2010-06-21 A |  | 0% → 100% | 57d → none |  |
| A11360 | IFC drawings | 2010-06-21 A | 2010-06-21 A |  | 0% → 100% | 57d → none |  |
| A11410 | Fence Drawings IFC | 2010-06-21 → 2010-07-20 (+29d) | 2010-06-21 → 2010-07-20 (+29d) |  |  | 99d → 50d |  |
| A11350 | finish Villa construction | 2010-10-18 → 2010-10-19 (+1d) | 2010-10-18 → 2010-10-19 (+1d) |  |  | 57d → 32.95d |  |
| 2 | **earth works** | 2010-06-29 → 2010-06-21 (-8d) | 2010-07-12 → 2010-07-05 (-7d) |  |  |  |  |
| A11110 | excavation | 2010-06-23 → 2010-06-21 A (-2d) | 2010-06-23 → 2010-06-22 A (-1d) |  | 0% → 100% | 57d → none | A11340 FS+2d → A11340 FS+1d |
| A11120 | soil replacement | 2010-06-23 A | 2010-07-06 → 2010-07-05 A (-1d) |  | 0% → 100% | 57d → none |  |
| 3 | **foundation level** | 2010-07-13 → 2010-07-06 (-7d) | 2010-09-22 → 2010-09-12 (-10d) |  |  |  |  |
| A11130 | Plain Concrete Foundation | 2010-07-07 → 2010-07-06 A (-1d) | 2010-07-08 A |  | 0% → 100% | 57d → none |  |
| A11420 | backfilling between P.C Foundation | 2010-07-11 → 2010-07-09 A (-2d) | 2010-07-12 → 2010-07-11 A (-1d) |  | 0% → 100% | 53d → none |  |
| A11140 | Reinforced Concrete Foundation | 2010-07-13 → 2010-07-12 A (-1d) | 2010-07-20 → 2010-07-22 (+2d) |  | 0% → 85% | 57d → 34.95d | A11420 → A11430 |
| A11150 | under ground brick works |  | 2010-07-31 → 2010-08-01 (+1d) |  |  | 57d → 34.95d |  |
| A11160 | under ground insulation for RC & Brick work |  | 2010-08-02 → 2010-08-03 (+1d) |  |  | 57d → 34.95d |  |
| A11170 | backfilling for under ground |  | 2010-08-07 → 2010-08-08 (+1d) |  |  | 57d → 34.95d |  |
| A11180 | P.C slab on grade 10CM |  | 2010-09-06 → 2010-09-07 (+1d) |  |  | 65d → 43.95d |  |
| A11190 | moisture insulation with membrane sheets |  | 2010-09-08 → 2010-09-09 (+1d) |  |  | 65d → 43.95d |  |
| A11200 | R.C slab on grade |  | 2010-09-11 → 2010-09-12 (+1d) |  |  | 65d → 43.95d |  |
| 4 | **skeleton & brick walls** | 2010-08-03 → 2010-07-22 (-12d) | 2010-10-27 → 2010-10-17 (-10d) |  |  |  |  |
| A11210 | columns for ground floor |  | 2010-07-28 → 2010-07-29 (+1d) |  |  | 57d → 34.95d | A11140 FS+1d → A11140 |
| A11220 | slab for ground floor |  | 2010-08-17 → 2010-08-18 (+1d) |  |  | 57d → 34.95d |  |
| A11370 | pouring for ground floor's slab |  | 2010-08-18 → 2010-08-19 (+1d) |  |  | 57d → 34.95d |  |
| A11230 | columns for 1st floor |  | 2010-08-25 → 2010-08-26 (+1d) |  |  | 57d → 36.95d |  |
| A11400 | Fence work |  | 2010-10-16 → 2010-10-17 (+1d) |  |  | 59d → 34.95d |  |
| A11240 | slab for 1st floor |  | 2010-09-05 → 2010-09-06 (+1d) |  |  | 57d → 36.95d |  |
| A11270 | Brick works for ground floor |  | 2010-09-05 → 2010-09-06 (+1d) |  |  | 65d → 43.95d |  |
| A11380 | pouring for 1st floor's slab |  | 2010-09-06 → 2010-09-07 (+1d) |  |  | 57d → 36.95d |  |
| A11250 | columns for roof floor |  | 2010-09-13 → 2010-09-14 (+1d) |  |  | 57d → 36.95d |  |
| A11260 | slab for roof floor |  | 2010-09-20 → 2010-09-21 (+1d) |  |  | 57d → 36.95d |  |
| A11440 | Brick works for 1st floor |  | 2010-09-23 → 2010-09-25 (+2d) |  |  | 67d → 42.95d |  |
| A11390 | pouring for roof floor's slab |  | 2010-09-21 → 2010-09-22 (+1d) |  |  | 57d → 36.95d |  |
| A11450 | Brick works for roof floor |  | 2010-10-06 → 2010-10-07 (+1d) |  |  | 61d → 36.95d |  |
| 5 | **electro mechanical** | 2010-08-19 → 2010-08-08 (-11d) | 2010-10-20 → 2010-10-10 (-10d) |  |  |  |  |
| A11330 | plumbing connections under slab on grade |  | 2010-08-09 → 2010-08-10 (+1d) |  |  | 88d → 66.95d |  |
| A11280 | electrical conduits for ground floor's slab |  | 2010-08-14 → 2010-08-15 (+1d) |  |  | 58d → 35.95d |  |
| A11290 | electrical conduits for 1st floor slab |  | 2010-09-01 → 2010-09-02 (+1d) |  |  | 58d → 37.95d |  |
| A11480 | electrical conduits for ground floor walls |  | 2010-09-14 → 2010-09-15 (+1d) |  |  | 69d → 43.95d |  |
| A11300 | electrical conduits for roof slab |  | 2010-09-18 → 2010-09-19 (+1d) |  |  | 58d → 37.95d |  |
| A11490 | electrical conduits for 1st floor walls |  | 2010-09-26 → 2010-09-27 (+1d) |  |  | 67d → 42.95d |  |
| A11500 | electrical conduits for roof floor walls |  | 2010-10-09 → 2010-10-10 (+1d) |  |  | 64d → 39.95d |  |
| 6 | **finishing** | 2010-09-27 → 2010-09-15 (-12d) | 2010-10-30 → 2010-10-19 (-11d) |  |  |  |  |
| A11310 | Internal plastering for ground floor |  | 2010-09-23 → 2010-09-25 (+2d) |  |  | 65d → 43.95d |  |
| A11460 | Internal plastering for 1st floor |  | 2010-10-05 → 2010-10-06 (+1d) |  |  | 67d → 42.95d |  |
| A11320 | External plastering |  | 2010-10-18 → 2010-10-19 (+1d) |  |  | 57d → 32.95d |  |
| A11470 | Internal plastering for roof floor |  | 2010-10-14 → 2010-10-16 (+2d) |  |  | 64d → 39.95d |  |
| villa 13 | **Villa Number B13** |  | 2010-10-30 → 2010-10-25 (-5d) |  |  |  |  |
| 1 | **general dates** |  | 2010-11-02 → 2010-10-25 (-8d) |  |  |  |  |
| A11740 | Start Villa construction | 2010-06-27 → 2010-06-21 A (-6d) | 2010-06-27 → 2010-06-21 A (-6d) |  | 0% → 100% | 44d → none | A11760 FS+5d → A11760 |
| A11760 | IFC drawings | 2010-06-21 A | 2010-06-21 A |  | 0% → 100% | 44d → none |  |
| A11810 | Fence Drawings IFC | 2010-06-27 → 2010-07-20 (+23d) | 2010-06-27 → 2010-07-20 (+23d) |  |  | 94d → 50d |  |
| A11750 | finish Villa construction | 2010-10-30 → 2010-10-25 (-5d) | 2010-10-30 → 2010-10-25 (-5d) |  |  | 47d → 27d |  |
| 2 | **earth works** | 2010-06-27 → 2010-06-21 (-6d) | 2010-07-11 → 2010-07-05 (-6d) |  |  |  |  |
| A11510 | excavation | 2010-06-29 → 2010-06-21 A (-8d) | 2010-06-29 → 2010-06-22 A (-7d) |  | 0% → 100% | 44d → none |  |
| A11520 | soil replacement | 2010-06-29 → 2010-06-23 A (-6d) | 2010-07-12 → 2010-07-05 A (-7d) |  | 0% → 100% | 44d → none |  |
| 3 | **foundation level** | 2010-07-17 → 2010-07-06 (-11d) | 2010-09-26 → 2010-09-18 (-8d) |  |  |  |  |
| A11530 | Plain Concrete Foundation | 2010-07-13 → 2010-07-06 A (-7d) | 2010-07-14 → 2010-07-08 A (-6d) |  | 0% → 100% | 44d → none |  |
| A11820 | backfilling between P.C Foundation | 2010-07-17 → 2010-07-09 A (-8d) | 2010-07-18 → 2010-07-11 A (-7d) |  | 0% → 100% | 44d → none |  |
| A11540 | Reinforced Concrete Foundation | 2010-07-19 → 2010-07-21 (+2d) | 2010-08-02 → 2010-07-28 (-5d) | 13d → 7d |  | 47d → 29d | A11820 → A11830 |
| A11550 | under ground brick works | 2010-08-10 → 2010-08-05 (-5d) | 2010-08-11 → 2010-08-07 (-4d) |  |  | 47d → 29d |  |
| A11560 | under ground insulation for RC & Brick work | 2010-08-12 → 2010-08-08 (-4d) | 2010-08-14 → 2010-08-09 (-5d) |  |  | 47d → 29d |  |
| A11570 | backfilling for under ground | 2010-08-15 → 2010-08-10 (-5d) | 2010-08-18 → 2010-08-14 (-4d) |  |  | 47d → 29d |  |
| A11580 | P.C slab on grade 10CM | 2010-09-18 → 2010-09-13 (-5d) | 2010-09-18 → 2010-09-13 (-5d) |  |  | 55d → 38d |  |
| A11590 | moisture insulation with membrane sheets | 2010-09-19 → 2010-09-14 (-5d) | 2010-09-20 → 2010-09-15 (-5d) |  |  | 55d → 38d |  |
| A11600 | R.C slab on grade | 2010-09-21 → 2010-09-16 (-5d) | 2010-09-22 → 2010-09-18 (-4d) |  |  | 55d → 38d |  |
| 4 | **skeleton & brick walls** | 2010-08-07 → 2010-07-29 (-9d) | 2010-10-31 → 2010-10-23 (-8d) |  |  |  |  |
| A11610 | columns for ground floor | 2010-08-03 → 2010-07-29 (-5d) | 2010-08-09 → 2010-08-04 (-5d) |  |  | 47d → 29d |  |
| A11620 | slab for ground floor | 2010-08-19 → 2010-08-15 (-4d) | 2010-08-29 → 2010-08-24 (-5d) |  |  | 47d → 29d |  |

| ID | Task | Start | Finish | Duration | Complete | Total float | Predecessors |
| --- | --- | --- | --- | --- | --- | --- | --- |
| A11770 | pouring for ground floor's slab | 2010-08-30 → 2010-08-25 (-5d) | 2010-08-30 → 2010-08-25 (-5d) |  |  | 47d → 29d |  |
| A11630 | columns for 1st floor | 2010-08-31 → 2010-08-26 (-5d) | 2010-09-06 → 2010-09-01 (-5d) |  |  | 47d → 31d |  |
| A11800 | Fence work | 2010-08-31 → 2010-08-26 (-5d) | 2010-10-27 → 2010-10-23 (-4d) |  |  | 49d → 29d |  |
| A11640 | slab for 1st floor | 2010-09-07 → 2010-09-02 (-5d) | 2010-09-16 → 2010-09-12 (-4d) |  |  | 47d → 31d |  |
| A11670 | Brick works for ground floor | 2010-09-12 → 2010-09-07 (-5d) | 2010-09-16 → 2010-09-12 (-4d) |  |  | 55d → 38d |  |
| A11780 | pouring for 1st floor's slab | 2010-09-18 → 2010-09-13 (-5d) | 2010-09-18 → 2010-09-13 (-5d) |  |  | 47d → 31d |  |
| A11650 | columns for roof floor | 2010-09-21 → 2010-09-16 (-5d) | 2010-09-25 → 2010-09-20 (-5d) |  |  | 47d → 31d |  |
| A11660 | slab for roof floor | 2010-09-26 → 2010-09-21 (-5d) | 2010-10-02 → 2010-09-27 (-5d) |  |  | 47d → 31d |  |
| A11840 | Brick works for 1st floor | 2010-09-30 → 2010-09-26 (-4d) | 2010-10-05 → 2010-09-30 (-5d) |  |  | 57d → 37d |  |
| A11790 | pouring for roof floor's slab | 2010-10-03 → 2010-09-28 (-5d) | 2010-10-03 → 2010-09-28 (-5d) |  |  | 47d → 31d |  |
| A11850 | Brick works for roof floor | 2010-10-13 → 2010-10-09 (-4d) | 2010-10-18 → 2010-10-13 (-5d) |  |  | 51d → 31d |  |
| 5 | **electro mechanical** | 2010-08-23 → 2010-08-15 (-8d) | 2010-10-24 → 2010-10-16 (-8d) |  |  |  |  |
| A11730 | plumbing connections under slab on grade | 2010-08-19 → 2010-08-15 (-4d) | 2010-08-21 → 2010-08-16 (-5d) |  |  | 78d → 61d |  |
| A11680 | electrical conduits for ground floor's slab | 2010-08-24 → 2010-08-19 (-5d) | 2010-08-25 → 2010-08-21 (-4d) |  |  | 48d → 30d |  |
| A11690 | electrical conduits for 1st floor slab | 2010-09-12 → 2010-09-07 (-5d) | 2010-09-13 → 2010-09-08 (-5d) |  |  | 48d → 32d |  |
| A11880 | electrical conduits for ground floor walls | 2010-09-25 → 2010-09-20 (-5d) | 2010-09-26 → 2010-09-21 (-5d) |  |  | 59d → 38d |  |
| A11700 | electrical conduits for roof slab | 2010-09-29 → 2010-09-25 (-4d) | 2010-09-29 → 2010-09-25 (-4d) |  |  | 48d → 32d |  |
| A11890 | electrical conduits for 1st floor walls | 2010-10-06 → 2010-10-02 (-4d) | 2010-10-07 → 2010-10-03 (-4d) |  |  | 57d → 37d |  |
| A11900 | electrical conduits for roof floor walls | 2010-10-19 → 2010-10-14 (-5d) | 2010-10-20 → 2010-10-16 (-4d) |  |  | 54d → 34d |  |
| 6 | **finishing** | 2010-09-30 → 2010-09-22 (-8d) | 2010-11-02 → 2010-10-25 (-8d) |  |  |  |  |
| A11710 | Internal plastering for ground floor | 2010-09-27 → 2010-09-22 (-5d) | 2010-10-05 → 2010-09-30 (-5d) |  |  | 55d → 38d |  |
| A11860 | Internal plastering for 1st floor | 2010-10-09 → 2010-10-04 (-5d) | 2010-10-17 → 2010-10-12 (-5d) |  |  | 57d → 37d |  |
| A11720 | External plastering | 2010-10-19 → 2010-10-14 (-5d) | 2010-10-30 → 2010-10-25 (-5d) |  |  | 47d → 27d |  |
| A11870 | Internal plastering for roof floor | 2010-10-21 → 2010-10-17 (-4d) | 2010-10-26 → 2010-10-21 (-5d) |  |  | 54d → 34d |  |
| villa 14 | **Villa Number B14** |  | 2010-11-02 → 2010-10-25 (-8d) |  |  |  |  |
| 1 | **general dates** |  | 2010-11-02 → 2010-10-25 (-8d) |  |  |  |  |
| A12140 | Start Villa construction | 2010-06-21 A | 2010-06-21 A |  | 0% → 100% | 41d → none | A12160 FS+5d → A12160 |
| A12160 | IFC drawings | 2010-06-21 A | 2010-06-21 A |  | 0% → 100% | 41d → none |  |
| A12210 | Fence Drawings IFC | 2010-06-21 → 2010-07-20 (+29d) | 2010-06-21 → 2010-07-20 (+29d) |  |  | 99d → 50d |  |
| A12150 | finish Villa construction | 2010-11-02 → 2010-10-25 (-8d) | 2010-11-02 → 2010-10-25 (-8d) |  |  | 44d → 27d |  |
| 2 | **earth works** | 2010-07-07 → 2010-06-21 (-16d) | 2010-07-22 → 2010-07-10 (-12d) |  |  |  |  |
| A11910 | excavation | 2010-06-27 → 2010-06-21 A (-6d) | 2010-06-27 A |  | 0% → 100% | 41d → none | A12140 → A12140 FS+2d |
| A11920 | soil replacement | 2010-06-28 A | 2010-07-11 → 2010-07-10 A (-1d) |  | 0% → 100% | 41d → none | A11910 FS+1d → A11910 |
| 3 | **foundation level** | 2010-07-24 → 2010-07-11 (-13d) | 2010-09-26 → 2010-09-18 (-8d) |  |  |  |  |
| A11930 | Plain Concrete Foundation | 2010-07-17 → 2010-07-11 A (-6d) | 2010-07-18 A |  | 0% → 100% | 41d → none | A11920 FS+4d → A11920 |
| A12220 | backfilling between P.C Foundation | 2010-07-20 → 2010-07-19 A (-1d) | 2010-07-21 A |  | 0% → 100% | 41d → none |  |
| A11940 | Reinforced Concrete Foundation | 2010-07-22 → 2010-07-21 (-1d) | 2010-08-05 → 2010-07-28 (-8d) | 13d → 7d |  | 44d → 29d | A12220 → A12230 |
| A11950 | under ground brick works | 2010-08-14 → 2010-08-05 (-9d) | 2010-08-15 → 2010-08-07 (-8d) |  |  | 44d → 29d |  |
| A11960 | under ground insulation for RC & Brick work | 2010-08-16 → 2010-08-08 (-8d) | 2010-08-17 → 2010-08-09 (-8d) |  |  | 44d → 29d |  |
| A11970 | backfilling for under ground | 2010-08-18 → 2010-08-10 (-8d) | 2010-08-22 → 2010-08-14 (-8d) |  |  | 44d → 29d |  |
| A11980 | P.C slab on grade 10CM | 2010-09-21 → 2010-09-13 (-8d) | 2010-09-21 → 2010-09-13 (-8d) |  |  | 52d → 38d |  |
| A11990 | moisture insulation with membrane sheets | 2010-09-22 → 2010-09-14 (-8d) | 2010-09-23 → 2010-09-15 (-8d) |  |  | 52d → 38d |  |
| A12000 | R.C slab on grade | 2010-09-25 → 2010-09-16 (-9d) | 2010-09-26 → 2010-09-18 (-8d) |  |  | 52d → 38d |  |
| 4 | **skeleton & brick walls** | 2010-08-07 → 2010-07-29 (-9d) | 2010-10-31 → 2010-10-23 (-8d) |  |  |  |  |
| A12010 | columns for ground floor | 2010-08-07 → 2010-07-29 (-9d) | 2010-08-12 → 2010-08-04 (-8d) |  |  | 44d → 29d |  |
| A12020 | slab for ground floor | 2010-08-23 → 2010-08-15 (-8d) | 2010-09-01 → 2010-08-24 (-8d) |  |  | 44d → 29d |  |
| A12170 | pouring for ground floor's slab | 2010-09-02 → 2010-08-25 (-8d) | 2010-09-02 → 2010-08-25 (-8d) |  |  | 44d → 29d |  |
| A12030 | columns for 1st floor | 2010-09-04 → 2010-08-26 (-9d) | 2010-09-09 → 2010-09-01 (-8d) |  |  | 44d → 31d |  |
| A12200 | Fence work | 2010-09-04 → 2010-08-26 (-9d) | 2010-10-31 → 2010-10-23 (-8d) |  |  | 46d → 29d |  |
| A12040 | slab for 1st floor | 2010-09-11 → 2010-09-02 (-9d) | 2010-09-20 → 2010-09-12 (-8d) |  |  | 44d → 31d |  |
| A12070 | Brick works for ground floor | 2010-09-15 → 2010-09-07 (-8d) | 2010-09-20 → 2010-09-12 (-8d) |  |  | 52d → 38d |  |
| A12180 | pouring for 1st floor's slab | 2010-09-21 → 2010-09-13 (-8d) | 2010-09-21 → 2010-09-13 (-8d) |  |  | 44d → 31d |  |
| A12050 | columns for roof floor | 2010-09-25 → 2010-09-16 (-9d) | 2010-09-28 → 2010-09-20 (-8d) |  |  | 44d → 31d |  |
| A12060 | slab for roof floor | 2010-09-29 → 2010-09-21 (-8d) | 2010-10-05 → 2010-09-27 (-8d) |  |  | 44d → 31d |  |
| A12240 | Brick works for 1st floor | 2010-10-04 → 2010-09-26 (-8d) | 2010-10-09 → 2010-09-30 (-9d) |  |  | 54d → 37d |  |
| A12190 | pouring for roof floor's slab | 2010-10-06 → 2010-09-28 (-8d) | 2010-10-06 → 2010-09-28 (-8d) |  |  | 44d → 31d |  |
| A12250 | Brick works for roof floor | 2010-10-17 → 2010-10-09 (-8d) | 2010-10-21 → 2010-10-13 (-8d) |  |  | 48d → 31d |  |
| 5 | **electro mechanical** | 2010-08-23 → 2010-08-15 (-8d) | 2010-10-24 → 2010-10-16 (-8d) |  |  |  |  |
| A12130 | plumbing connections under slab on grade | 2010-08-23 → 2010-08-15 (-8d) | 2010-08-24 → 2010-08-16 (-8d) |  |  | 75d → 61d |  |
| A12080 | electrical conduits for ground floor's slab | 2010-08-28 → 2010-08-19 (-9d) | 2010-08-29 → 2010-08-21 (-8d) |  |  | 45d → 30d |  |
| A12090 | electrical conduits for 1st floor slab | 2010-09-15 → 2010-09-07 (-8d) | 2010-09-16 → 2010-09-08 (-8d) |  |  | 45d → 32d |  |
| A12280 | electrical conduits for ground floor walls | 2010-09-28 → 2010-09-20 (-8d) | 2010-09-29 → 2010-09-21 (-8d) |  |  | 56d → 38d |  |
| A12100 | electrical conduits for roof slab | 2010-10-03 → 2010-09-25 (-8d) | 2010-10-03 → 2010-09-25 (-8d) |  |  | 45d → 32d |  |
| A12290 | electrical conduits for 1st floor walls | 2010-10-10 → 2010-10-02 (-8d) | 2010-10-11 → 2010-10-03 (-8d) |  |  | 54d → 37d |  |
| A12300 | electrical conduits for roof floor walls | 2010-10-23 → 2010-10-14 (-9d) | 2010-10-24 → 2010-10-16 (-8d) |  |  | 51d → 34d |  |
| 6 | **finishing** | 2010-09-30 → 2010-09-22 (-8d) | 2010-11-02 → 2010-10-25 (-8d) |  |  |  |  |
| A12110 | Internal plastering for ground floor | 2010-09-30 → 2010-09-22 (-8d) | 2010-10-09 → 2010-09-30 (-9d) |  |  | 52d → 38d |  |
| A12260 | Internal plastering for 1st floor | 2010-10-12 → 2010-10-04 (-8d) | 2010-10-20 → 2010-10-12 (-8d) |  |  | 54d → 37d |  |
| A12120 | External plastering | 2010-10-23 → 2010-10-14 (-9d) | 2010-11-02 → 2010-10-25 (-8d) |  |  | 44d → 27d |  |
| A12270 | Internal plastering for roof floor | 2010-10-25 → 2010-10-17 (-8d) | 2010-10-30 → 2010-10-21 (-9d) |  |  | 51d → 34d |  |

| ID | Task | Start | Finish | Duration | Total float | Predecessors |
| --- | --- | --- | --- | --- | --- | --- |
| villa 102 | **Villa Number B102** | 2010-06-21 → 2010-07-20 (+29d) | 2010-12-08 → 2010-11-23 (-15d) |  |  |  |
| 1 | **general dates** | 2010-06-21 → 2010-07-20 (+29d) | 2010-09-29 → 2010-11-23 (+55d) |  |  |  |
| A12540 | Start Villa construction | 2010-08-10 → 2010-07-20 (-21d) | 2010-08-10 → 2010-07-20 (-21d) |  | 17d → 8d | A12560 FS+43d → A12560 |
| A12560 | IFC drawings | 2010-06-21 → 2010-07-20 (+29d) | 2010-06-21 → 2010-07-20 (+29d) |  | 17d → 8d |  |
| A12610 | Fence Drawings IFC | 2010-08-10 → 2010-07-20 (-21d) | 2010-08-10 → 2010-07-20 (-21d) |  | 56d → 50d |  |
| A12550 | finish Villa construction | 2010-12-08 → 2010-11-23 (-15d) | 2010-12-08 → 2010-11-23 (-15d) |  | 17d → 6d |  |
| 2 | **earth works** | 2010-07-08 → 2010-07-22 (+14d) | 2010-07-24 → 2010-08-07 (+14d) |  |  |  |
| A12310 | excavation | 2010-08-12 → 2010-07-22 (-21d) | 2010-08-14 → 2010-07-24 (-21d) |  | 17d → 8d |  |
| A12320 | soil replacement | 2010-08-15 → 2010-07-25 (-21d) | 2010-08-28 → 2010-08-07 (-21d) |  | 17d → 8d |  |
| 3 | **foundation level** | 2010-06-21 → 2010-08-08 (+48d) | 2010-08-18 → 2010-10-12 (+55d) |  |  |  |
| A12330 | Plain Concrete Foundation | 2010-08-29 → 2010-08-08 (-21d) | 2010-08-30 → 2010-08-09 (-21d) |  | 17d → 8d |  |
| A12620 | backfilling between P.C Foundation | 2010-09-01 → 2010-08-11 (-21d) | 2010-09-02 → 2010-08-12 (-21d) |  | 13d → 8d |  |
| A12340 | Reinforced Concrete Foundation | 2010-09-04 → 2010-08-15 (-20d) | 2010-09-11 → 2010-08-22 (-20d) |  | 17d → 8d | A12620 → A12630 |
| A12350 | under ground brick works | 2010-09-19 → 2010-08-30 (-20d) | 2010-09-20 → 2010-08-31 (-20d) |  | 17d → 8d |  |
| A12360 | under ground insulation for RC & Brick work | 2010-09-21 → 2010-09-01 (-20d) | 2010-09-22 → 2010-09-02 (-20d) |  | 17d → 8d |  |
| A12370 | backfilling for under ground | 2010-09-23 → 2010-09-04 (-19d) | 2010-09-25 → 2010-09-07 (-18d) | 2d → 4d | 17d → 8d |  |
| A12380 | P.C slab on grade 10CM | 2010-10-25 → 2010-10-07 (-18d) | 2010-10-25 → 2010-10-07 (-18d) |  | 23d → 17d |  |
| A12390 | moisture insulation with membrane sheets | 2010-10-26 → 2010-10-09 (-17d) | 2010-10-27 → 2010-10-10 (-17d) |  | 23d → 17d |  |
| A12400 | R.C slab on grade | 2010-10-28 → 2010-10-11 (-17d) | 2010-10-30 → 2010-10-12 (-18d) |  | 23d → 17d |  |
| 4 | **skeleton & brick walls** | 2010-06-29 → 2010-08-23 (+55d) | 2010-09-22 → 2010-11-21 (+60d) |  |  |  |
| A12410 | columns for ground floor | 2010-09-12 → 2010-08-23 (-20d) | 2010-09-18 → 2010-08-29 (-20d) |  | 17d → 8d |  |
| A12420 | slab for ground floor | 2010-09-26 → 2010-09-08 (-18d) | 2010-10-05 → 2010-09-18 (-17d) |  | 17d → 8d |  |
| A12570 | pouring for ground floor's slab | 2010-10-06 → 2010-09-19 (-17d) | 2010-10-06 → 2010-09-19 (-17d) |  | 17d → 8d |  |
| A12430 | columns for 1st floor | 2010-10-07 → 2010-09-20 (-17d) | 2010-10-13 → 2010-09-26 (-17d) |  | 17d → 10d |  |
| A12600 | Fence work | 2010-10-07 → 2010-09-20 (-17d) | 2010-12-08 → 2010-11-21 (-17d) |  | 17d → 8d |  |
| A12440 | slab for 1st floor | 2010-10-14 → 2010-09-27 (-17d) | 2010-10-24 → 2010-10-06 (-18d) |  | 17d → 10d |  |
| A12470 | Brick works for ground floor | 2010-10-19 → 2010-10-02 (-17d) | 2010-10-24 → 2010-10-06 (-18d) |  | 23d → 17d |  |
| A12580 | pouring for 1st floor's slab | 2010-10-25 → 2010-10-07 (-18d) | 2010-10-25 → 2010-10-07 (-18d) |  | 17d → 10d |  |
| A12450 | columns for roof floor | 2010-10-28 → 2010-10-11 (-17d) | 2010-11-01 → 2010-10-14 (-18d) |  | 17d → 10d |  |
| A12460 | slab for roof floor | 2010-11-02 → 2010-10-16 (-17d) | 2010-11-08 → 2010-10-21 (-18d) |  | 17d → 10d |  |
| A12640 | Brick works for 1st floor | 2010-11-07 → 2010-10-20 (-18d) | 2010-11-11 → 2010-10-25 (-17d) |  | 25d → 16d |  |
| A12590 | pouring for roof floor's slab | 2010-11-09 → 2010-10-23 (-17d) | 2010-11-09 → 2010-10-23 (-17d) |  | 17d → 10d |  |
| A12650 | Brick works for roof floor | 2010-11-24 → 2010-11-02 (-22d) | 2010-11-29 → 2010-11-07 (-22d) |  | 17d → 10d |  |
| 5 | **electro mechanical** | 2010-07-15 → 2010-09-08 (+55d) | 2010-09-20 → 2010-11-09 (+50d) |  |  |  |
| A12530 | plumbing connections under slab on grade | 2010-09-26 → 2010-09-08 (-18d) | 2010-09-27 → 2010-09-09 (-18d) |  | 46d → 40d |  |
| A12480 | electrical conduits for ground floor's slab | 2010-09-30 → 2010-09-13 (-17d) | 2010-10-02 → 2010-09-14 (-18d) |  | 18d → 9d |  |
| A12490 | electrical conduits for 1st floor slab | 2010-10-19 → 2010-10-02 (-17d) | 2010-10-20 → 2010-10-03 (-17d) |  | 18d → 11d |  |
| A12680 | electrical conduits for ground floor walls | 2010-11-01 → 2010-10-14 (-18d) | 2010-11-02 → 2010-10-16 (-17d) |  | 27d → 17d |  |
| A12500 | electrical conduits for roof slab | 2010-11-06 → 2010-10-19 (-18d) | 2010-11-06 → 2010-10-19 (-18d) |  | 18d → 11d |  |
| A12690 | electrical conduits for 1st floor walls | 2010-11-13 → 2010-10-26 (-18d) | 2010-11-14 → 2010-10-27 (-18d) |  | 25d → 16d |  |
| A12700 | electrical conduits for roof floor walls | 2010-11-30 → 2010-11-08 (-22d) | 2010-12-01 → 2010-11-09 (-22d) |  | 18d → 13d |  |
| 6 | **finishing** | 2010-08-23 → 2010-10-17 (+55d) | 2010-09-29 → 2010-11-23 (+55d) |  |  |  |
| A12510 | Internal plastering for ground floor | 2010-11-03 → 2010-10-17 (-17d) | 2010-11-11 → 2010-10-25 (-17d) |  | 23d → 17d |  |
| A12660 | Internal plastering for 1st floor | 2010-11-15 → 2010-10-28 (-18d) | 2010-11-23 → 2010-11-06 (-17d) |  | 25d → 16d |  |
| A12520 | External plastering | 2010-11-30 → 2010-11-08 (-22d) | 2010-12-08 → 2010-11-23 (-15d) | 8d → 10d | 17d → 6d |  |
| A12670 | Internal plastering for roof floor | 2010-12-02 → 2010-11-10 (-22d) | 2010-12-07 → 2010-11-15 (-22d) |  | 18d → 13d |  |
| villa 107 | **Villa Number B107** | 2010-06-21 → 2010-07-20 (+29d) | 2010-12-08 → 2010-11-23 (-15d) |  |  |  |
| 1 | **general dates** | 2010-06-21 → 2010-07-20 (+29d) | 2010-11-04 → 2010-11-23 (+19d) |  |  |  |
| A12940 | Start Villa construction | 2010-08-10 → 2010-07-20 (-21d) | 2010-08-10 → 2010-07-20 (-21d) |  | 17d → 8d | A12960 FS+43d → A12960 |
| A12960 | IFC drawings | 2010-06-21 → 2010-07-20 (+29d) | 2010-06-21 → 2010-07-20 (+29d) |  | 17d → 8d |  |
| A13010 | Fence Drawings IFC | 2010-08-10 → 2010-07-20 (-21d) | 2010-08-10 → 2010-07-20 (-21d) |  | 56d → 50d |  |
| A12950 | finish Villa construction | 2010-12-08 → 2010-11-23 (-15d) | 2010-12-08 → 2010-11-23 (-15d) |  | 17d → 6d |  |
| 2 | **earth works** | 2010-07-10 → 2010-07-22 (+12d) | 2010-07-25 → 2010-08-07 (+13d) |  |  |  |
| A12710 | excavation | 2010-08-12 → 2010-07-22 (-21d) | 2010-08-14 → 2010-07-24 (-21d) |  | 17d → 8d |  |
| A12720 | soil replacement | 2010-08-15 → 2010-07-25 (-21d) | 2010-08-28 → 2010-08-07 (-21d) |  | 17d → 8d |  |
| 3 | **foundation level** | 2010-07-26 → 2010-08-08 (+13d) | 2010-09-28 → 2010-10-12 (+14d) |  |  |  |
| A12730 | Plain Concrete Foundation | 2010-08-29 → 2010-08-08 (-21d) | 2010-08-30 → 2010-08-09 (-21d) |  | 17d → 8d |  |
| A13020 | backfilling between P.C Foundation | 2010-09-01 → 2010-08-11 (-21d) | 2010-09-02 → 2010-08-12 (-21d) |  | 13d → 8d |  |
| A12740 | Reinforced Concrete Foundation | 2010-09-04 → 2010-08-15 (-20d) | 2010-09-11 → 2010-08-22 (-20d) |  | 17d → 8d | A13020 → A13030 |
| A12750 | under ground brick works | 2010-09-19 → 2010-08-30 (-20d) | 2010-09-20 → 2010-08-31 (-20d) |  | 17d → 8d |  |
| A12760 | under ground insulation for RC & Brick work | 2010-09-21 → 2010-09-01 (-20d) | 2010-09-22 → 2010-09-02 (-20d) |  | 17d → 8d |  |
| A12770 | backfilling for under ground | 2010-09-23 → 2010-09-04 (-19d) | 2010-09-25 → 2010-09-07 (-18d) | 2d → 4d | 17d → 8d |  |
| A12780 | P.C slab on grade 10CM | 2010-10-25 → 2010-10-07 (-18d) | 2010-10-25 → 2010-10-07 (-18d) |  | 23d → 17d |  |
| A12790 | moisture insulation with membrane sheets | 2010-10-26 → 2010-10-09 (-17d) | 2010-10-27 → 2010-10-10 (-17d) |  | 23d → 17d |  |
| A12800 | R.C slab on grade | 2010-10-28 → 2010-10-11 (-17d) | 2010-10-30 → 2010-10-12 (-18d) |  | 23d → 17d |  |
| 4 | **skeleton & brick walls** | 2010-08-09 → 2010-08-23 (+14d) | 2010-11-02 → 2010-11-21 (+19d) |  |  |  |
| A12810 | columns for ground floor | 2010-09-12 → 2010-08-23 (-20d) | 2010-09-18 → 2010-08-29 (-20d) |  | 17d → 8d |  |
| A12820 | slab for ground floor | 2010-09-26 → 2010-09-08 (-18d) | 2010-10-05 → 2010-09-18 (-17d) |  | 17d → 8d |  |
| A12970 | pouring for ground floor's slab | 2010-10-06 → 2010-09-19 (-17d) | 2010-10-06 → 2010-09-19 (-17d) |  | 17d → 8d |  |
| A12830 | columns for 1st floor | 2010-10-07 → 2010-09-20 (-17d) | 2010-10-13 → 2010-09-26 (-17d) |  | 17d → 10d |  |

| ID | Task | Start | Finish | Duration | Complete | Total float | Predecessors |
| --- | --- | --- | --- | --- | --- | --- | --- |
| A13000 | Fence work | 2010-10-07 → 2010-09-20 (-17d) | 2010-12-08 → 2010-11-21 (-17d) |  |  | 17d → 8d |  |
| A12840 | slab for 1st floor | 2010-10-14 → 2010-09-27 (-17d) | 2010-10-24 → 2010-10-06 (-18d) |  |  | 17d → 10d |  |
| A12870 | Brick works for ground floor | 2010-10-19 → 2010-10-02 (-17d) | 2010-10-24 → 2010-10-06 (-18d) |  |  | 23d → 17d |  |
| A12980 | pouring for 1st floor's slab | 2010-10-25 → 2010-10-07 (-18d) | 2010-10-25 → 2010-10-07 (-18d) |  |  | 17d → 10d |  |
| A12850 | columns for roof floor | 2010-10-28 → 2010-10-11 (-17d) | 2010-11-01 → 2010-10-14 (-18d) |  |  | 17d → 10d |  |
| A12860 | slab for roof floor | 2010-11-02 → 2010-10-16 (-17d) | 2010-11-08 → 2010-10-21 (-18d) |  |  | 17d → 10d |  |
| A13040 | Brick works for 1st floor | 2010-11-07 → 2010-10-20 (-18d) | 2010-11-11 → 2010-10-25 (-17d) |  |  | 25d → 16d |  |
| A12990 | pouring for roof floor's slab | 2010-11-09 → 2010-10-23 (-17d) | 2010-11-09 → 2010-10-23 (-17d) |  |  | 17d → 10d |  |
| A13050 | Brick works for roof floor | 2010-11-24 → 2010-11-02 (-22d) | 2010-11-29 → 2010-11-07 (-22d) |  |  | 17d → 10d |  |
| 5 | **electro mechanical** | 2010-08-25 → 2010-09-08 (+14d) | 2010-10-26 → 2010-11-09 (+14d) |  |  |  |  |
| A12930 | plumbing connections under slab on grade | 2010-09-26 → 2010-09-08 (-18d) | 2010-09-27 → 2010-09-09 (-18d) |  |  | 46d → 40d |  |
| A12880 | electrical conduits for ground floor's slab | 2010-09-30 → 2010-09-13 (-17d) | 2010-10-02 → 2010-09-14 (-18d) |  |  | 18d → 9d |  |
| A12890 | electrical conduits for 1st floor slab | 2010-10-19 → 2010-10-02 (-17d) | 2010-10-20 → 2010-10-03 (-17d) |  |  | 18d → 11d |  |
| A13080 | electrical conduits for ground floor walls | 2010-11-01 → 2010-10-14 (-18d) | 2010-11-02 → 2010-10-16 (-17d) |  |  | 27d → 17d |  |
| A12900 | electrical conduits for roof slab | 2010-11-06 → 2010-10-19 (-18d) | 2010-11-06 → 2010-10-19 (-18d) |  |  | 18d → 11d |  |
| A13090 | electrical conduits for 1st floor walls | 2010-11-13 → 2010-10-26 (-18d) | 2010-11-14 → 2010-10-27 (-18d) |  |  | 25d → 16d |  |
| A13100 | electrical conduits for roof floor walls | 2010-11-30 → 2010-11-08 (-22d) | 2010-12-01 → 2010-11-09 (-22d) |  |  | 18d → 13d |  |
| 6 | **finishing** | 2010-10-03 → 2010-10-17 (+14d) | 2010-11-04 → 2010-11-23 (+19d) |  |  |  |  |
| A12910 | Internal plastering for ground floor | 2010-11-03 → 2010-10-17 (-17d) | 2010-11-11 → 2010-10-25 (-17d) |  |  | 23d → 17d |  |
| A13060 | Internal plastering for 1st floor | 2010-11-15 → 2010-10-28 (-18d) | 2010-11-23 → 2010-11-06 (-17d) |  |  | 25d → 16d |  |
| A12920 | External plastering | 2010-11-30 → 2010-11-08 (-22d) | 2010-12-08 → 2010-11-23 (-15d) | 8d → 10d |  | 17d → 6d |  |
| A13070 | Internal plastering for roof floor | 2010-12-02 → 2010-11-10 (-22d) | 2010-12-07 → 2010-11-15 (-22d) |  |  | 18d → 13d |  |
| zone 2 | **Zone.No 2** | 2010-06-21 → 2010-06-28 (+7d) | 2010-11-13 → 2010-11-02 (-11d) |  |  |  |  |
| villa 89 | **Villa Number D89** | 2010-06-21 → 2010-06-29 (+8d) | 2010-11-02 → 2010-10-31 (-2d) |  |  |  |  |
| 1 | **general dates** | 2010-06-21 → 2010-06-29 (+8d) | 2010-11-06 → 2010-10-31 (-6d) |  |  |  |  |
| A13340 | Start Villa construction | 2010-06-21 → 2010-06-29 A (+8d) | 2010-06-21 → 2010-06-29 A (+8d) |  | 0% → 100% | 44d → none | A13360 FS+14d → A13360 |
| A13360 | IFC drawings | 2010-06-21 → 2010-06-29 A (+8d) | 2010-06-21 → 2010-06-29 A (+8d) |  | 0% → 100% | 44d → none |  |
| A13410 | Fence Drawings IFC | 2010-06-21 → 2010-07-20 (+29d) | 2010-06-21 → 2010-07-20 (+29d) |  |  | 99d → 50d |  |
| A13350 | finish Villa construction | 2010-11-02 → 2010-10-31 (-2d) | 2010-11-02 → 2010-10-31 (-2d) |  |  | 44d → 22d |  |
| 2 | **earth works** | 2010-07-11 → 2010-06-30 (-11d) | 2010-07-26 → 2010-07-20 (-6d) |  |  |  |  |
| A13110 | excavation | 2010-07-07 → 2010-06-30 A (-7d) | 2010-07-08 → 2010-07-01 A (-7d) |  | 0% → 100% | 44d → none | A13340 → A13340 FS+14d |
| A13120 | soil replacement | 2010-07-10 → 2010-07-02 A (-8d) | 2010-07-22 → 2010-07-20 A (-2d) |  | 0% → 100% | 44d → none |  |
| 3 | **foundation level** | 2010-07-27 → 2010-07-20 (-7d) | 2010-09-29 → 2010-09-23 (-6d) |  |  |  |  |
| A13130 | Plain Concrete Foundation | 2010-07-24 → 2010-07-20 (-4d) | 2010-07-25 → 2010-07-21 (-4d) |  |  | 44d → 24d |  |
| A13420 | backfilling between P.C Foundation | 2010-07-27 → 2010-07-24 (-3d) | 2010-07-28 → 2010-07-25 (-3d) |  |  | 40d → 24d |  |
| A13140 | Reinforced Concrete Foundation | 2010-07-29 → 2010-07-27 (-2d) | 2010-08-05 → 2010-08-03 (-2d) |  |  | 44d → 24d | A13420 → A13430 |
| A13150 | under ground brick works | 2010-08-14 → 2010-08-11 (-3d) | 2010-08-15 → 2010-08-12 (-3d) |  |  | 44d → 24d |  |
| A13160 | under ground insulation for RC & Brick work | 2010-08-16 → 2010-08-14 (-2d) | 2010-08-17 → 2010-08-15 (-2d) |  |  | 44d → 24d |  |
| A13170 | backfilling for under ground | 2010-08-18 → 2010-08-16 (-2d) | 2010-08-22 → 2010-08-19 (-3d) |  |  | 44d → 24d |  |
| A13180 | P.C slab on grade 10CM | 2010-09-21 → 2010-09-19 (-2d) | 2010-09-21 → 2010-09-19 (-2d) |  |  | 52d → 33d |  |
| A13190 | moisture insulation with membrane sheets | 2010-09-22 → 2010-09-20 (-2d) | 2010-09-23 → 2010-09-21 (-2d) |  |  | 52d → 33d |  |
| A13200 | R.C slab on grade | 2010-09-25 → 2010-09-22 (-3d) | 2010-09-26 → 2010-09-23 (-3d) |  |  | 52d → 33d |  |
| 4 | **skeleton & brick walls** | 2010-08-10 → 2010-08-04 (-6d) | 2010-11-03 → 2010-10-28 (-6d) |  |  |  |  |
| A13210 | columns for ground floor | 2010-08-07 → 2010-08-04 (-3d) | 2010-08-12 → 2010-08-10 (-2d) |  |  | 44d → 24d |  |
| A13220 | slab for ground floor | 2010-08-23 → 2010-08-21 (-2d) | 2010-09-01 → 2010-08-30 (-2d) |  |  | 44d → 24d |  |
| A13370 | pouring for ground floor's slab | 2010-09-02 → 2010-08-31 (-2d) | 2010-09-02 → 2010-08-31 (-2d) |  |  | 44d → 24d |  |
| A13230 | columns for 1st floor | 2010-09-04 → 2010-09-01 (-3d) | 2010-09-09 → 2010-09-07 (-2d) |  |  | 44d → 26d |  |
| A13400 | Fence work | 2010-09-04 → 2010-09-01 (-3d) | 2010-10-31 → 2010-10-28 (-3d) |  |  | 46d → 24d |  |
| A13240 | slab for 1st floor | 2010-09-11 → 2010-09-08 (-3d) | 2010-09-20 → 2010-09-18 (-2d) |  |  | 44d → 26d |  |
| A13270 | Brick works for ground floor | 2010-09-15 → 2010-09-13 (-2d) | 2010-09-20 → 2010-09-18 (-2d) |  |  | 52d → 33d |  |
| A13380 | pouring for 1st floor's slab | 2010-09-21 → 2010-09-19 (-2d) | 2010-09-21 → 2010-09-19 (-2d) |  |  | 44d → 26d |  |
| A13250 | columns for roof floor | 2010-09-25 → 2010-09-22 (-3d) | 2010-09-28 → 2010-09-26 (-2d) |  |  | 44d → 26d |  |
| A13260 | slab for roof floor | 2010-09-29 → 2010-09-27 (-2d) | 2010-10-05 → 2010-10-03 (-2d) |  |  | 44d → 26d |  |
| A13440 | Brick works for 1st floor | 2010-10-04 → 2010-10-02 (-2d) | 2010-10-09 → 2010-10-06 (-3d) |  |  | 54d → 32d |  |
| A13390 | pouring for roof floor's slab | 2010-10-06 → 2010-10-04 (-2d) | 2010-10-06 → 2010-10-04 (-2d) |  |  | 44d → 26d |  |
| A13450 | Brick works for roof floor | 2010-10-17 → 2010-10-14 (-3d) | 2010-10-21 → 2010-10-19 (-2d) |  |  | 48d → 26d |  |
| 5 | **electro mechanical** | 2010-08-26 → 2010-08-21 (-5d) | 2010-10-27 → 2010-10-21 (-6d) |  |  |  |  |
| A13330 | plumbing connections under slab on grade | 2010-08-23 → 2010-08-21 (-2d) | 2010-08-24 → 2010-08-22 (-2d) |  |  | 75d → 56d |  |
| A13280 | electrical conduits for ground floor's slab | 2010-08-28 → 2010-08-25 (-3d) | 2010-08-29 → 2010-08-26 (-3d) |  |  | 45d → 25d |  |
| A13290 | electrical conduits for 1st floor slab | 2010-09-15 → 2010-09-13 (-2d) | 2010-09-16 → 2010-09-14 (-2d) |  |  | 45d → 27d |  |
| A13480 | electrical conduits for ground floor walls | 2010-09-28 → 2010-09-26 (-2d) | 2010-09-29 → 2010-09-27 (-2d) |  |  | 56d → 33d |  |
| A13300 | electrical conduits for roof slab | 2010-10-03 → 2010-09-30 (-3d) | 2010-10-03 → 2010-09-30 (-3d) |  |  | 45d → 27d |  |
| A13490 | electrical conduits for 1st floor walls | 2010-10-10 → 2010-10-07 (-3d) | 2010-10-11 → 2010-10-09 (-2d) |  |  | 54d → 32d |  |
| A13500 | electrical conduits for roof floor walls | 2010-10-23 → 2010-10-20 (-3d) | 2010-10-24 → 2010-10-21 (-3d) |  |  | 51d → 29d |  |
| 6 | **finishing** | 2010-10-04 → 2010-09-28 (-6d) | 2010-11-06 → 2010-10-31 (-6d) |  |  |  |  |
| A13310 | Internal plastering for ground floor | 2010-09-30 → 2010-09-28 (-2d) | 2010-10-09 → 2010-10-06 (-3d) |  |  | 52d → 33d |  |
| A13460 | Internal plastering for 1st floor | 2010-10-12 → 2010-10-10 (-2d) | 2010-10-20 → 2010-10-18 (-2d) |  |  | 54d → 32d |  |
| A13320 | External plastering | 2010-10-23 → 2010-10-20 (-3d) | 2010-11-02 → 2010-10-31 (-2d) |  |  | 44d → 22d |  |
| A13470 | Internal plastering for roof floor | 2010-10-25 → 2010-10-23 (-2d) | 2010-10-30 → 2010-10-27 (-3d) |  |  | 51d → 29d |  |
| villa 90 | **Villa Number D90** | 2010-06-21 → 2010-06-29 (+8d) | 2010-09-29 → 2010-10-31 (+32d) |  |  |  |  |

| ID | Task | Start | Finish | Complete | Total float | Predecessors |
| --- | --- | --- | --- | --- | --- | --- |
| 1 | **general dates** | 2010-06-21 → 2010-06-29 (+8d) | 2010-11-07 → 2010-10-31 (-7d) |  |  |  |
| A13740 | Start Villa construction | 2010-07-08 → 2010-06-29 A (-9d) | 2010-07-08 → 2010-06-29 A (-9d) | 0% → 100% | 84d → none | A13760 FS+15d → A13760 |
| A13760 | IFC drawings | 2010-06-21 → 2010-06-29 A (+8d) | 2010-06-21 → 2010-06-29 A (+8d) | 0% → 100% | 84d → none |  |
| A13810 | Fence Drawings IFC | 2010-07-08 → 2010-07-20 (+12d) | 2010-07-08 → 2010-07-20 (+12d) |  | 84d → 50d |  |
| A13750 | finish Villa construction | 2010-09-29 → 2010-10-31 (+32d) | 2010-09-29 → 2010-10-31 (+32d) |  | 73d → 22d |  |
| 2 | **earth works** | 2010-07-12 → 2010-06-30 (-12d) | 2010-07-27 → 2010-07-20 (-7d) |  |  |  |
| A13510 | excavation | 2010-07-08 → 2010-06-30 A (-8d) | 2010-07-08 → 2010-07-01 A (-7d) | 0% → 100% | 126d → none | A13740 → A13740 FS+15d |
| A13520 | soil replacement | 2010-07-08 → 2010-07-02 A (-6d) | 2010-07-24 → 2010-07-20 A (-4d) | 0% → 100% | 126d → none |  |
| 3 | **foundation level** | 2010-07-28 → 2010-07-20 (-8d) | 2010-09-30 → 2010-09-23 (-7d) |  |  |  |
| A13530 | Plain Concrete Foundation | 2010-07-25 → 2010-07-20 (-5d) | 2010-07-26 → 2010-07-21 (-5d) |  | 126d → 24d |  |
| A13820 | backfilling between P.C Foundation | 2010-07-28 → 2010-07-24 (-4d) | 2010-07-29 → 2010-07-25 (-4d) |  | 126d → 24d |  |
| A13540 | Reinforced Concrete Foundation | 2010-06-21 → 2010-07-27 (+36d) | 2010-06-28 → 2010-08-03 (+36d) |  | 77d → 24d | none → A13830 |
| A13550 | under ground brick works | 2010-07-06 → 2010-08-11 (+36d) | 2010-07-07 → 2010-08-12 (+36d) |  | 77d → 24d |  |
| A13560 | under ground insulation for RC & Brick work | 2010-07-08 → 2010-08-14 (+37d) | 2010-07-10 → 2010-08-15 (+36d) |  | 77d → 24d |  |
| A13570 | backfilling for under ground | 2010-07-11 → 2010-08-16 (+36d) | 2010-07-14 → 2010-08-19 (+36d) |  | 77d → 24d |  |
| A13580 | P.C slab on grade 10CM | 2010-08-14 → 2010-09-19 (+36d) | 2010-08-14 → 2010-09-19 (+36d) |  | 85d → 33d |  |
| A13590 | moisture insulation with membrane sheets | 2010-08-15 → 2010-09-20 (+36d) | 2010-08-16 → 2010-09-21 (+36d) |  | 85d → 33d |  |
| A13600 | R.C slab on grade | 2010-08-17 → 2010-09-22 (+36d) | 2010-08-18 → 2010-09-23 (+36d) |  | 85d → 33d |  |
| 4 | **skeleton & brick walls** | 2010-08-11 → 2010-08-04 (-7d) | 2010-11-04 → 2010-10-28 (-7d) |  |  |  |
| A13610 | columns for ground floor | 2010-06-29 → 2010-08-04 (+36d) | 2010-07-05 → 2010-08-10 (+36d) |  | 77d → 24d |  |
| A13620 | slab for ground floor | 2010-07-15 → 2010-08-21 (+37d) | 2010-07-25 → 2010-08-30 (+36d) |  | 77d → 24d |  |
| A13770 | pouring for ground floor's slab | 2010-07-26 → 2010-08-31 (+36d) | 2010-07-26 → 2010-08-31 (+36d) |  | 77d → 24d |  |
| A13630 | columns for 1st floor | 2010-07-27 → 2010-09-01 (+36d) | 2010-08-02 → 2010-09-07 (+36d) |  | 77d → 26d |  |
| A13800 | Fence work | 2010-07-27 → 2010-09-01 (+36d) | 2010-09-22 → 2010-10-28 (+36d) |  | 79d → 24d |  |
| A13640 | slab for 1st floor | 2010-08-03 → 2010-09-08 (+36d) | 2010-08-12 → 2010-09-18 (+37d) |  | 77d → 26d |  |
| A13670 | Brick works for ground floor | 2010-08-08 → 2010-09-13 (+36d) | 2010-08-12 → 2010-09-18 (+37d) |  | 85d → 33d |  |
| A13780 | pouring for 1st floor's slab | 2010-08-14 → 2010-09-19 (+36d) | 2010-08-14 → 2010-09-19 (+36d) |  | 77d → 26d |  |
| A13650 | columns for roof floor | 2010-08-17 → 2010-09-22 (+36d) | 2010-08-21 → 2010-09-26 (+36d) |  | 77d → 26d |  |
| A13660 | slab for roof floor | 2010-08-22 → 2010-09-27 (+36d) | 2010-08-28 → 2010-10-03 (+36d) |  | 77d → 26d |  |
| A13840 | Brick works for 1st floor | 2010-08-26 → 2010-10-02 (+37d) | 2010-08-31 → 2010-10-06 (+36d) |  | 83d → 32d |  |
| A13790 | pouring for roof floor's slab | 2010-08-29 → 2010-10-04 (+36d) | 2010-08-29 → 2010-10-04 (+36d) |  | 77d → 26d |  |
| A13850 | Brick works for roof floor | 2010-09-13 → 2010-10-14 (+31d) | 2010-09-18 → 2010-10-19 (+31d) |  | 77d → 26d |  |
| 5 | **electro mechanical** | 2010-08-28 → 2010-08-21 (-7d) | 2010-10-28 → 2010-10-21 (-7d) |  |  |  |
| A13730 | plumbing connections under slab on grade | 2010-07-15 → 2010-08-21 (+37d) | 2010-07-17 → 2010-08-22 (+36d) |  | 108d → 56d |  |
| A13680 | electrical conduits for ground floor's slab | 2010-07-20 → 2010-08-25 (+36d) | 2010-07-21 → 2010-08-26 (+36d) |  | 78d → 25d |  |
| A13690 | electrical conduits for 1st floor slab | 2010-08-08 → 2010-09-13 (+36d) | 2010-08-09 → 2010-09-14 (+36d) |  | 78d → 27d |  |
| A13880 | electrical conduits for ground floor walls | 2010-08-21 → 2010-09-26 (+36d) | 2010-08-22 → 2010-09-27 (+36d) |  | 85d → 33d |  |
| A13700 | electrical conduits for roof slab | 2010-08-25 → 2010-09-30 (+36d) | 2010-08-25 → 2010-09-30 (+36d) |  | 78d → 27d |  |
| A13890 | electrical conduits for 1st floor walls | 2010-09-01 → 2010-10-07 (+36d) | 2010-09-02 → 2010-10-09 (+37d) |  | 83d → 32d |  |
| A13900 | electrical conduits for roof floor walls | 2010-09-19 → 2010-10-20 (+31d) | 2010-09-20 → 2010-10-21 (+31d) |  | 80d → 29d |  |
| 6 | **finishing** | 2010-10-05 → 2010-09-28 (-7d) | 2010-11-07 → 2010-10-31 (-7d) |  |  |  |
| A13710 | Internal plastering for ground floor | 2010-08-23 → 2010-09-28 (+36d) | 2010-08-31 → 2010-10-06 (+36d) |  | 85d → 33d |  |
| A13860 | Internal plastering for 1st floor | 2010-09-04 → 2010-10-10 (+36d) | 2010-09-16 → 2010-10-18 (+32d) |  | 83d → 32d |  |
| A13720 | External plastering | 2010-09-19 → 2010-10-20 (+31d) | 2010-09-29 → 2010-10-31 (+32d) |  | 73d → 22d |  |
| A13870 | Internal plastering for roof floor | 2010-09-21 → 2010-10-23 (+32d) | 2010-09-26 → 2010-10-27 (+31d) |  | 80d → 29d |  |
| villa 91 | **Villa Number D91** | 2010-06-21 → 2010-06-29 (+8d) | 2010-11-04 → 2010-10-31 (-4d) |  |  |  |
| 1 | **general dates** | 2010-06-21 → 2010-06-29 (+8d) | 2010-11-08 → 2010-10-31 (-8d) |  |  |  |
| A14140 | Start Villa construction | 2010-07-10 → 2010-06-29 A (-11d) | 2010-07-10 → 2010-06-29 A (-11d) | 0% → 100% | 42d → none | A14160 FS+16d → A14160 |
| A14210 | Fence Drawings IFC | 2010-07-10 → 2010-07-20 (+10d) | 2010-07-10 → 2010-07-20 (+10d) |  | 83d → 50d |  |
| A14160 | IFC drawings | 2010-06-21 → 2010-07-29 A (+38d) | 2010-06-21 → 2010-07-29 A (+38d) | 0% → 100% | 42d → none |  |
| A14150 | finish Villa construction | 2010-11-04 → 2010-10-31 (-4d) | 2010-11-04 → 2010-10-31 (-4d) |  | 42d → 22d |  |
| 2 | **earth works** | 2010-07-13 → 2010-06-30 (-13d) | 2010-07-28 → 2010-07-20 (-8d) |  |  |  |
| A13910 | excavation | 2010-07-10 → 2010-06-30 A (-10d) | 2010-07-11 → 2010-07-01 A (-10d) | 0% → 100% | 42d → none | A14140 → A14140 FS+16d |
| A13920 | soil replacement | 2010-07-12 → 2010-07-02 A (-10d) | 2010-07-25 → 2010-07-20 A (-5d) | 0% → 100% | 42d → none |  |
| 3 | **foundation level** | 2010-07-29 → 2010-07-20 (-9d) | 2010-10-02 → 2010-09-23 (-9d) |  |  |  |
| A13930 | Plain Concrete Foundation | 2010-07-26 → 2010-07-20 (-6d) | 2010-07-27 → 2010-07-21 (-6d) |  | 42d → 24d |  |
| A14220 | backfilling between P.C Foundation | 2010-07-29 → 2010-07-24 (-5d) | 2010-07-31 → 2010-07-25 (-6d) |  | 38d → 24d |  |
| A13940 | Reinforced Concrete Foundation | 2010-08-01 → 2010-07-27 (-5d) | 2010-08-08 → 2010-08-03 (-5d) |  | 42d → 24d | A14220 → A14230 |
| A13950 | under ground brick works | 2010-08-16 → 2010-08-11 (-5d) | 2010-08-17 → 2010-08-12 (-5d) |  | 42d → 24d |  |
| A13960 | under ground insulation for RC & Brick work | 2010-08-18 → 2010-08-14 (-4d) | 2010-08-19 → 2010-08-15 (-4d) |  | 42d → 24d |  |
| A13970 | backfilling for under ground | 2010-08-21 → 2010-08-16 (-5d) | 2010-08-24 → 2010-08-19 (-5d) |  | 42d → 24d |  |
| A13980 | P.C slab on grade 10CM | 2010-09-23 → 2010-09-19 (-4d) | 2010-09-23 → 2010-09-19 (-4d) |  | 50d → 33d |  |
| A13990 | moisture insulation with membrane sheets | 2010-09-25 → 2010-09-20 (-5d) | 2010-09-26 → 2010-09-21 (-5d) |  | 50d → 33d |  |
| A14000 | R.C slab on grade | 2010-09-27 → 2010-09-22 (-5d) | 2010-09-28 → 2010-09-23 (-5d) |  | 50d → 33d |  |
| 4 | **skeleton & brick walls** | 2010-08-12 → 2010-08-04 (-8d) | 2010-11-06 → 2010-10-28 (-9d) |  |  |  |
| A14010 | columns for ground floor | 2010-08-09 → 2010-08-04 (-5d) | 2010-08-15 → 2010-08-10 (-5d) |  | 42d → 24d |  |
| A14020 | slab for ground floor | 2010-08-25 → 2010-08-21 (-4d) | 2010-09-04 → 2010-08-30 (-5d) |  | 42d → 24d |  |
| A14170 | pouring for ground floor's slab | 2010-09-05 → 2010-08-31 (-5d) | 2010-09-05 → 2010-08-31 (-5d) |  | 42d → 24d |  |
| A14030 | columns for 1st floor | 2010-09-06 → 2010-09-01 (-5d) | 2010-09-12 → 2010-09-07 (-5d) |  | 42d → 26d |  |
| A14200 | Fence work | 2010-09-06 → 2010-09-01 (-5d) | 2010-11-02 → 2010-10-28 (-5d) |  | 44d → 24d |  |

| ID | Task | Start | Finish | Complete | Total float | Predecessors |
| --- | --- | --- | --- | --- | --- | --- |
| A14040 | slab for 1st floor | 2010-09-13 → 2010-09-08 (-5d) | 2010-09-22 → 2010-09-18 (-4d) |  | 42d → 26d |  |
| A14070 | Brick works for ground floor | 2010-09-18 → 2010-09-13 (-5d) | 2010-09-22 → 2010-09-18 (-4d) |  | 50d → 33d |  |
| A14180 | pouring for 1st floor's slab | 2010-09-23 → 2010-09-19 (-4d) | 2010-09-23 → 2010-09-19 (-4d) |  | 42d → 26d |  |
| A14050 | columns for roof floor | 2010-09-27 → 2010-09-22 (-5d) | 2010-09-30 → 2010-09-26 (-4d) |  | 42d → 26d |  |
| A14060 | slab for roof floor | 2010-10-02 → 2010-09-27 (-5d) | 2010-10-07 → 2010-10-03 (-4d) |  | 42d → 26d |  |
| A14240 | Brick works for 1st floor | 2010-10-06 → 2010-10-02 (-4d) | 2010-10-11 → 2010-10-06 (-5d) |  | 52d → 32d |  |
| A14190 | pouring for roof floor's slab | 2010-10-09 → 2010-10-04 (-5d) | 2010-10-09 → 2010-10-04 (-5d) |  | 42d → 26d |  |
| A14250 | Brick works for roof floor | 2010-10-19 → 2010-10-14 (-5d) | 2010-10-24 → 2010-10-19 (-5d) |  | 46d → 26d |  |
| 5 | **electro mechanical** | 2010-08-29 → 2010-08-21 (-8d) | 2010-10-30 → 2010-10-21 (-9d) |  |  |  |
| A14130 | plumbing connections under slab on grade | 2010-08-25 → 2010-08-21 (-4d) | 2010-08-26 → 2010-08-22 (-4d) |  | 73d → 56d |  |
| A14080 | electrical conduits for ground floor's slab | 2010-08-30 → 2010-08-25 (-5d) | 2010-08-31 → 2010-08-26 (-5d) |  | 43d → 25d |  |
| A14090 | electrical conduits for 1st floor slab | 2010-09-18 → 2010-09-13 (-5d) | 2010-09-19 → 2010-09-14 (-5d) |  | 43d → 27d |  |
| A14280 | electrical conduits for ground floor walls | 2010-09-30 → 2010-09-26 (-4d) | 2010-10-02 → 2010-09-27 (-5d) |  | 54d → 33d |  |
| A14100 | electrical conduits for roof slab | 2010-10-05 → 2010-09-30 (-5d) | 2010-10-05 → 2010-09-30 (-5d) |  | 43d → 27d |  |
| A14290 | electrical conduits for 1st floor walls | 2010-10-12 → 2010-10-07 (-5d) | 2010-10-13 → 2010-10-09 (-4d) |  | 52d → 32d |  |
| A14300 | electrical conduits for roof floor walls | 2010-10-25 → 2010-10-20 (-5d) | 2010-10-26 → 2010-10-21 (-5d) |  | 49d → 29d |  |
| 6 | **finishing** | 2010-10-06 → 2010-09-28 (-8d) | 2010-11-08 → 2010-10-31 (-8d) |  |  |  |
| A14110 | Internal plastering for ground floor | 2010-10-03 → 2010-09-28 (-5d) | 2010-10-11 → 2010-10-06 (-5d) |  | 50d → 33d |  |
| A14260 | Internal plastering for 1st floor | 2010-10-14 → 2010-10-10 (-4d) | 2010-10-23 → 2010-10-18 (-5d) |  | 52d → 32d |  |
| A14120 | External plastering | 2010-10-25 → 2010-10-20 (-5d) | 2010-11-04 → 2010-10-31 (-4d) |  | 42d → 22d |  |
| A14270 | Internal plastering for roof floor | 2010-10-27 → 2010-10-23 (-4d) | 2010-11-01 → 2010-10-27 (-5d) |  | 49d → 29d |  |
| villa 92 | **Villa Number A92** | 2010-06-21 → 2010-06-29 (+8d) | 2010-11-06 → 2010-10-31 (-6d) |  |  |  |
| 1 | **general dates** | 2010-06-21 → 2010-06-29 (+8d) | 2010-11-07 → 2010-10-31 (-7d) |  |  |  |
| A14540 | Start Villa construction | 2010-07-11 → 2010-06-29 A (-12d) | 2010-07-11 → 2010-06-29 A (-12d) | 0% → 100% | 41d → none | A14560 FS+17d → A14560 |
| A14560 | IFC drawings | 2010-06-21 → 2010-06-29 A (+8d) | 2010-06-21 → 2010-06-29 A (+8d) | 0% → 100% | 41d → none |  |
| A14610 | Fence Drawings IFC | 2010-07-11 → 2010-07-20 (+9d) | 2010-07-11 → 2010-07-20 (+9d) |  | 82d → 50d |  |
| A14550 | finish Villa construction | 2010-11-06 → 2010-10-31 (-6d) | 2010-11-06 → 2010-10-31 (-6d) |  | 41d → 22d |  |
| 2 | **earth works** | 2010-07-12 → 2010-06-30 (-12d) | 2010-07-27 → 2010-07-20 (-7d) |  |  |  |
| A14310 | excavation | 2010-07-11 → 2010-06-30 A (-11d) | 2010-07-12 → 2010-07-01 A (-11d) | 0% → 100% | 41d → none | A14540 → A14540 FS+17d |
| A14320 | soil replacement | 2010-07-13 → 2010-07-02 A (-11d) | 2010-07-26 → 2010-07-20 A (-6d) | 0% → 100% | 41d → none |  |
| 3 | **foundation level** | 2010-07-28 → 2010-07-20 (-8d) | 2010-09-30 → 2010-09-23 (-7d) |  |  |  |
| A14330 | Plain Concrete Foundation | 2010-07-27 → 2010-07-20 (-7d) | 2010-07-28 → 2010-07-21 (-7d) |  | 41d → 24d |  |
| A14620 | backfilling between P.C Foundation | 2010-07-31 → 2010-07-24 (-7d) | 2010-08-01 → 2010-07-25 (-7d) |  | 37d → 24d |  |
| A14340 | Reinforced Concrete Foundation | 2010-08-02 → 2010-07-27 (-6d) | 2010-08-09 → 2010-08-03 (-6d) |  | 41d → 24d | A14620 → A14630 |
| A14350 | under ground brick works | 2010-08-17 → 2010-08-11 (-6d) | 2010-08-18 → 2010-08-12 (-6d) |  | 41d → 24d |  |
| A14360 | under ground insulation for RC & Brick work | 2010-08-19 → 2010-08-14 (-5d) | 2010-08-21 → 2010-08-15 (-6d) |  | 41d → 24d |  |
| A14370 | backfilling for under ground | 2010-08-22 → 2010-08-16 (-6d) | 2010-08-25 → 2010-08-19 (-6d) |  | 41d → 24d |  |
| A14380 | P.C slab on grade 10CM | 2010-09-25 → 2010-09-19 (-6d) | 2010-09-25 → 2010-09-19 (-6d) |  | 49d → 33d |  |
| A14390 | moisture insulation with membrane sheets | 2010-09-26 → 2010-09-20 (-6d) | 2010-09-27 → 2010-09-21 (-6d) |  | 49d → 33d |  |
| A14400 | R.C slab on grade | 2010-09-28 → 2010-09-22 (-6d) | 2010-09-29 → 2010-09-23 (-6d) |  | 49d → 33d |  |
| 4 | **skeleton & brick walls** | 2010-08-11 → 2010-08-04 (-7d) | 2010-11-04 → 2010-10-28 (-7d) |  |  |  |
| A14410 | columns for ground floor | 2010-08-10 → 2010-08-04 (-6d) | 2010-08-16 → 2010-08-10 (-6d) |  | 41d → 24d |  |
| A14420 | slab for ground floor | 2010-08-26 → 2010-08-21 (-5d) | 2010-09-05 → 2010-08-30 (-6d) |  | 41d → 24d |  |
| A14570 | pouring for ground floor's slab | 2010-09-06 → 2010-08-31 (-6d) | 2010-09-06 → 2010-08-31 (-6d) |  | 41d → 24d |  |
| A14430 | columns for 1st floor | 2010-09-07 → 2010-09-01 (-6d) | 2010-09-13 → 2010-09-07 (-6d) |  | 41d → 26d |  |
| A14600 | Fence work | 2010-09-07 → 2010-09-01 (-6d) | 2010-11-03 → 2010-10-28 (-6d) |  | 43d → 24d |  |
| A14440 | slab for 1st floor | 2010-09-14 → 2010-09-08 (-6d) | 2010-09-23 → 2010-09-18 (-5d) |  | 41d → 26d |  |
| A14470 | Brick works for ground floor | 2010-09-19 → 2010-09-13 (-6d) | 2010-09-23 → 2010-09-18 (-5d) |  | 49d → 33d |  |
| A14580 | pouring for 1st floor's slab | 2010-09-25 → 2010-09-19 (-6d) | 2010-09-25 → 2010-09-19 (-6d) |  | 41d → 26d |  |
| A14450 | columns for roof floor | 2010-09-28 → 2010-09-22 (-6d) | 2010-10-02 → 2010-09-26 (-6d) |  | 41d → 26d |  |
| A14460 | slab for roof floor | 2010-10-03 → 2010-09-27 (-6d) | 2010-10-09 → 2010-10-03 (-6d) |  | 41d → 26d |  |
| A14640 | Brick works for 1st floor | 2010-10-07 → 2010-10-02 (-5d) | 2010-10-12 → 2010-10-06 (-6d) |  | 51d → 32d |  |
| A14590 | pouring for roof floor's slab | 2010-10-10 → 2010-10-04 (-6d) | 2010-10-10 → 2010-10-04 (-6d) |  | 41d → 26d |  |
| A14650 | Brick works for roof floor | 2010-10-20 → 2010-10-14 (-6d) | 2010-10-25 → 2010-10-19 (-6d) |  | 45d → 26d |  |
| 5 | **electro mechanical** | 2010-08-28 → 2010-08-21 (-7d) | 2010-10-28 → 2010-10-21 (-7d) |  |  |  |
| A14530 | plumbing connections under slab on grade | 2010-08-26 → 2010-08-21 (-5d) | 2010-08-28 → 2010-08-22 (-6d) |  | 72d → 56d |  |
| A14480 | electrical conduits for ground floor's slab | 2010-08-31 → 2010-08-25 (-6d) | 2010-09-01 → 2010-08-26 (-6d) |  | 42d → 25d |  |
| A14490 | electrical conduits for 1st floor slab | 2010-09-19 → 2010-09-13 (-6d) | 2010-09-20 → 2010-09-14 (-6d) |  | 42d → 27d |  |
| A14680 | electrical conduits for ground floor walls | 2010-10-02 → 2010-09-26 (-6d) | 2010-10-03 → 2010-09-27 (-6d) |  | 53d → 33d |  |
| A14500 | electrical conduits for roof slab | 2010-10-06 → 2010-09-30 (-6d) | 2010-10-06 → 2010-09-30 (-6d) |  | 42d → 27d |  |
| A14690 | electrical conduits for 1st floor walls | 2010-10-13 → 2010-10-07 (-6d) | 2010-10-14 → 2010-10-09 (-5d) |  | 51d → 32d |  |
| A14700 | electrical conduits for roof floor walls | 2010-10-26 → 2010-10-20 (-6d) | 2010-10-27 → 2010-10-21 (-6d) |  | 48d → 29d |  |
| 6 | **finishing** | 2010-10-05 → 2010-09-28 (-7d) | 2010-11-07 → 2010-10-31 (-7d) |  |  |  |
| A14510 | Internal plastering for ground floor | 2010-10-04 → 2010-09-28 (-6d) | 2010-10-12 → 2010-10-06 (-6d) |  | 49d → 33d |  |
| A14660 | Internal plastering for 1st floor | 2010-10-16 → 2010-10-10 (-6d) | 2010-10-24 → 2010-10-18 (-6d) |  | 51d → 32d |  |
| A14520 | External plastering | 2010-10-26 → 2010-10-20 (-6d) | 2010-11-06 → 2010-10-31 (-6d) |  | 41d → 22d |  |
| A14670 | Internal plastering for roof floor | 2010-10-28 → 2010-10-23 (-5d) | 2010-11-02 → 2010-10-27 (-6d) |  | 48d → 29d |  |
| villa 93 | **Villa Number F93** | 2010-06-21 → 2010-06-28 (+7d) | 2010-11-07 → 2010-11-02 (-5d) |  |  |  |
| 1 | **general dates** | 2010-06-21 → 2010-06-28 (+7d) | 2010-11-13 → 2010-11-02 (-11d) |  |  |  |
| A14940 | Start Villa construction | 2010-07-12 → 2010-06-28 A (-14d) | 2010-07-12 → 2010-06-28 A (-14d) | 0% → 100% | 40d → none | A14960 FS+18d → A14960 |

| ID | Task | Start | Finish | Complete | Total float | Predecessors |
| --- | --- | --- | --- | --- | --- | --- |
| A14960 | IFC drawings | 2010-06-21 → 2010-06-28 A (+7d) | 2010-06-21 → 2010-06-28 A (+7d) | 0% → 100% | 40d → none |  |
| A15010 | Fence Drawings IFC | 2010-07-12 → 2010-07-20 (+8d) | 2010-07-12 → 2010-07-20 (+8d) |  | 81d → 50d |  |
| A14950 | finish Villa construction | 2010-11-07 → 2010-11-02 (-5d) | 2010-11-07 → 2010-11-02 (-5d) |  | 40d → 20.6d |  |
| 2 | **earth works** | 2010-07-18 → 2010-06-29 (-19d) | 2010-08-02 → 2010-07-21 (-12d) |  |  |  |
| A14710 | excavation | 2010-07-12 → 2010-06-29 A (-13d) | 2010-07-12 → 2010-07-01 A (-11d) | 0% → 100% | 40d → none | A14940 → A14940 FS+18d |
| A14720 | soil replacement | 2010-07-12 → 2010-07-02 A (-10d) | 2010-07-27 → 2010-07-21 (-6d) | 0% → 90% | 40d → 22.6d |  |
| 3 | **foundation level** | 2010-08-03 → 2010-07-21 (-13d) | 2010-10-06 → 2010-09-26 (-10d) |  |  |  |
| A14730 | Plain Concrete Foundation | 2010-07-28 → 2010-07-21 (-7d) | 2010-07-29 → 2010-07-24 (-5d) |  | 40d → 22.6d |  |
| A15020 | backfilling between P.C Foundation | 2010-08-01 → 2010-07-25 (-7d) | 2010-08-02 → 2010-07-27 (-6d) |  | 36d → 22.6d |  |
| A14740 | Reinforced Concrete Foundation | 2010-08-03 → 2010-07-28 (-6d) | 2010-08-10 → 2010-08-05 (-5d) |  | 40d → 22.6d | A15020 → A15030 |
| A14750 | under ground brick works | 2010-08-18 → 2010-08-12 (-6d) | 2010-08-19 → 2010-08-15 (-4d) |  | 40d → 22.6d |  |
| A14760 | under ground insulation for RC & Brick work | 2010-08-21 → 2010-08-15 (-6d) | 2010-08-22 → 2010-08-17 (-5d) |  | 40d → 22.6d |  |
| A14770 | backfilling for under ground | 2010-08-23 → 2010-08-17 (-6d) | 2010-08-26 → 2010-08-22 (-4d) |  | 40d → 22.6d |  |
| A14780 | P.C slab on grade 10CM | 2010-09-26 → 2010-09-20 (-6d) | 2010-09-26 → 2010-09-21 (-5d) |  | 48d → 31.6d |  |
| A14790 | moisture insulation with membrane sheets | 2010-09-27 → 2010-09-21 (-6d) | 2010-09-28 → 2010-09-23 (-5d) |  | 48d → 31.6d |  |
| A14800 | R.C slab on grade | 2010-09-29 → 2010-09-23 (-6d) | 2010-09-30 → 2010-09-26 (-4d) |  | 48d → 31.6d |  |
| 4 | **skeleton & brick walls** | 2010-08-17 → 2010-08-05 (-12d) | 2010-11-10 → 2010-10-31 (-10d) |  |  |  |
| A14810 | columns for ground floor | 2010-08-11 → 2010-08-05 (-6d) | 2010-08-17 → 2010-08-12 (-5d) |  | 40d → 22.6d |  |
| A14820 | slab for ground floor | 2010-08-28 → 2010-08-22 (-6d) | 2010-09-06 → 2010-09-01 (-5d) |  | 40d → 22.6d |  |
| A14970 | pouring for ground floor's slab | 2010-09-07 → 2010-09-01 (-6d) | 2010-09-07 → 2010-09-02 (-5d) |  | 40d → 22.6d |  |
| A14830 | columns for 1st floor | 2010-09-08 → 2010-09-02 (-6d) | 2010-09-14 → 2010-09-09 (-5d) |  | 40d → 24.6d |  |
| A15000 | Fence work | 2010-09-08 → 2010-09-02 (-6d) | 2010-11-04 → 2010-10-31 (-4d) |  | 42d → 22.6d |  |
| A14840 | slab for 1st floor | 2010-09-15 → 2010-09-09 (-6d) | 2010-09-25 → 2010-09-20 (-5d) |  | 40d → 24.6d |  |
| A14870 | Brick works for ground floor | 2010-09-20 → 2010-09-14 (-6d) | 2010-09-25 → 2010-09-20 (-5d) |  | 48d → 31.6d |  |
| A14980 | pouring for 1st floor's slab | 2010-09-26 → 2010-09-20 (-6d) | 2010-09-26 → 2010-09-21 (-5d) |  | 40d → 24.6d |  |
| A14850 | columns for roof floor | 2010-09-29 → 2010-09-23 (-6d) | 2010-10-03 → 2010-09-28 (-5d) |  | 40d → 24.6d |  |
| A14860 | slab for roof floor | 2010-10-04 → 2010-09-28 (-6d) | 2010-10-10 → 2010-10-05 (-5d) |  | 40d → 24.6d |  |
| A15040 | Brick works for 1st floor | 2010-10-09 → 2010-10-03 (-6d) | 2010-10-13 → 2010-10-09 (-4d) |  | 50d → 30.6d |  |
| A14990 | pouring for roof floor's slab | 2010-10-11 → 2010-10-05 (-6d) | 2010-10-11 → 2010-10-06 (-5d) |  | 40d → 24.6d |  |
| A15050 | Brick works for roof floor | 2010-10-21 → 2010-10-16 (-5d) | 2010-10-26 → 2010-10-21 (-5d) |  | 44d → 24.6d |  |
| 5 | **electro mechanical** | 2010-09-02 → 2010-08-22 (-11d) | 2010-11-03 → 2010-10-24 (-10d) |  |  |  |
| A14930 | plumbing connections under slab on grade | 2010-08-28 → 2010-08-22 (-6d) | 2010-08-29 → 2010-08-24 (-5d) |  | 71d → 54.6d |  |
| A14880 | electrical conduits for ground floor's slab | 2010-09-01 → 2010-08-26 (-6d) | 2010-09-02 → 2010-08-29 (-4d) |  | 41d → 23.6d |  |
| A14890 | electrical conduits for 1st floor slab | 2010-09-20 → 2010-09-14 (-6d) | 2010-09-21 → 2010-09-16 (-5d) |  | 41d → 25.6d |  |
| A15080 | electrical conduits for ground floor walls | 2010-10-03 → 2010-09-27 (-6d) | 2010-10-04 → 2010-09-29 (-5d) |  | 52d → 31.6d |  |
| A14900 | electrical conduits for roof slab | 2010-10-07 → 2010-10-02 (-5d) | 2010-10-07 → 2010-10-03 (-4d) |  | 41d → 25.6d |  |
| A15090 | electrical conduits for 1st floor walls | 2010-10-14 → 2010-10-09 (-5d) | 2010-10-16 → 2010-10-11 (-5d) |  | 50d → 30.6d |  |
| A15100 | electrical conduits for roof floor walls | 2010-10-27 → 2010-10-21 (-6d) | 2010-10-28 → 2010-10-24 (-4d) |  | 47d → 27.6d |  |
| 6 | **finishing** | 2010-10-11 → 2010-09-29 (-12d) | 2010-11-13 → 2010-11-02 (-11d) |  |  |  |
| A14910 | Internal plastering for ground floor | 2010-10-05 → 2010-09-29 (-6d) | 2010-10-13 → 2010-10-09 (-4d) |  | 48d → 31.6d |  |
| A15060 | Internal plastering for 1st floor | 2010-10-17 → 2010-10-11 (-6d) | 2010-10-25 → 2010-10-20 (-5d) |  | 50d → 30.6d |  |
| A14920 | External plastering | 2010-10-27 → 2010-10-21 (-6d) | 2010-11-07 → 2010-11-02 (-5d) |  | 40d → 20.6d |  |
| A15070 | Internal plastering for roof floor | 2010-10-30 → 2010-10-24 (-6d) | 2010-11-03 → 2010-10-30 (-4d) |  | 47d → 27.6d |  |
| villa 94 | **Villa Number F94** | 2010-06-21 → 2010-06-29 (+8d) | 2010-11-08 → 2010-11-02 (-6d) |  |  |  |
| 1 | **general dates** | 2010-06-21 → 2010-06-29 (+8d) | 2010-11-11 → 2010-11-02 (-9d) |  |  |  |
| A15340 | Start Villa construction | 2010-07-13 → 2010-06-29 A (-14d) | 2010-07-13 → 2010-06-29 A (-14d) | 0% → 100% | 39d → none | A15360 FS+19d → A15360 |
| A15360 | IFC drawings | 2010-06-21 → 2010-06-29 A (+8d) | 2010-06-21 → 2010-06-29 A (+8d) | 0% → 100% | 39d → none |  |
| A15410 | Fence Drawings IFC | 2010-07-13 → 2010-07-20 (+7d) | 2010-07-13 → 2010-07-20 (+7d) |  | 80d → 50d |  |
| A15350 | finish Villa construction | 2010-11-08 → 2010-11-02 (-6d) | 2010-11-08 → 2010-11-02 (-6d) |  | 39d → 20.6d |  |
| 2 | **earth works** | 2010-07-17 → 2010-06-30 (-17d) | 2010-08-01 → 2010-07-21 (-11d) |  |  |  |
| A15110 | excavation | 2010-07-13 → 2010-06-30 A (-13d) | 2010-07-13 → 2010-07-01 A (-12d) | 0% → 100% | 39d → none | A15340 → A15340 FS+19d |
| A15120 | soil replacement | 2010-07-13 → 2010-07-02 A (-11d) | 2010-07-28 → 2010-07-21 (-7d) | 0% → 90% | 39d → 22.6d |  |
| 3 | **foundation level** | 2010-08-02 → 2010-07-21 (-12d) | 2010-10-05 → 2010-09-26 (-9d) |  |  |  |
| A15130 | Plain Concrete Foundation | 2010-07-29 → 2010-07-21 (-8d) | 2010-07-31 → 2010-07-24 (-7d) |  | 39d → 22.6d |  |
| A15420 | backfilling between P.C Foundation | 2010-08-02 → 2010-07-25 (-8d) | 2010-08-03 → 2010-07-27 (-7d) |  | 35d → 22.6d |  |
| A15140 | Reinforced Concrete Foundation | 2010-08-04 → 2010-07-28 (-7d) | 2010-08-11 → 2010-08-05 (-6d) |  | 39d → 22.6d | A15420 → A15430 |
| A15150 | under ground brick works | 2010-08-19 → 2010-08-12 (-7d) | 2010-08-21 → 2010-08-15 (-6d) |  | 39d → 22.6d |  |
| A15160 | under ground insulation for RC & Brick work | 2010-08-22 → 2010-08-15 (-7d) | 2010-08-23 → 2010-08-17 (-6d) |  | 39d → 22.6d |  |
| A15170 | backfilling for under ground | 2010-08-24 → 2010-08-17 (-7d) | 2010-08-28 → 2010-08-22 (-6d) |  | 39d → 22.6d |  |
| A15180 | P.C slab on grade 10CM | 2010-09-27 → 2010-09-20 (-7d) | 2010-09-27 → 2010-09-21 (-6d) |  | 47d → 31.6d |  |
| A15190 | moisture insulation with membrane sheets | 2010-09-28 → 2010-09-21 (-7d) | 2010-09-29 → 2010-09-23 (-6d) |  | 47d → 31.6d |  |
| A15200 | R.C slab on grade | 2010-09-30 → 2010-09-23 (-7d) | 2010-10-02 → 2010-09-26 (-6d) |  | 47d → 31.6d |  |
| 4 | **skeleton & brick walls** | 2010-08-16 → 2010-08-05 (-11d) | 2010-11-09 → 2010-10-31 (-9d) |  |  |  |
| A15210 | columns for ground floor | 2010-08-12 → 2010-08-05 (-7d) | 2010-08-18 → 2010-08-12 (-6d) |  | 39d → 22.6d |  |
| A15220 | slab for ground floor | 2010-08-29 → 2010-08-22 (-7d) | 2010-09-07 → 2010-09-01 (-6d) |  | 39d → 22.6d |  |
| A15370 | pouring for ground floor's slab | 2010-09-08 → 2010-09-01 (-7d) | 2010-09-08 → 2010-09-02 (-6d) |  | 39d → 22.6d |  |
| A15230 | columns for 1st floor | 2010-09-09 → 2010-09-02 (-7d) | 2010-09-15 → 2010-09-09 (-6d) |  | 39d → 24.6d |  |
| A15400 | Fence work | 2010-09-09 → 2010-09-02 (-7d) | 2010-11-06 → 2010-10-31 (-6d) |  | 41d → 22.6d |  |
| A15240 | slab for 1st floor | 2010-09-16 → 2010-09-09 (-7d) | 2010-09-26 → 2010-09-20 (-6d) |  | 39d → 24.6d |  |
| A15270 | Brick works for ground floor | 2010-09-21 → 2010-09-14 (-7d) | 2010-09-26 → 2010-09-20 (-6d) |  | 47d → 31.6d |  |

| ID | Task | Start | Finish | Complete | Total float | Predecessors |
| --- | --- | --- | --- | --- | --- | --- |
| A15380 | pouring for 1st floor's slab | 2010-09-27 → 2010-09-20 (-7d) | 2010-09-27 → 2010-09-21 (-6d) |  | 39d → 24.6d |  |
| A15250 | columns for roof floor | 2010-09-30 → 2010-09-23 (-7d) | 2010-10-04 → 2010-09-28 (-6d) |  | 39d → 24.6d |  |
| A15260 | slab for roof floor | 2010-10-05 → 2010-09-28 (-7d) | 2010-10-11 → 2010-10-05 (-6d) |  | 39d → 24.6d |  |
| A15440 | Brick works for 1st floor | 2010-10-10 → 2010-10-03 (-7d) | 2010-10-14 → 2010-10-09 (-5d) |  | 49d → 30.6d |  |
| A15390 | pouring for roof floor's slab | 2010-10-12 → 2010-10-05 (-7d) | 2010-10-12 → 2010-10-06 (-6d) |  | 39d → 24.6d |  |
| A15450 | Brick works for roof floor | 2010-10-23 → 2010-10-16 (-7d) | 2010-10-27 → 2010-10-21 (-6d) |  | 43d → 24.6d |  |
| 5 | **electro mechanical** | 2010-09-01 → 2010-08-22 (-10d) | 2010-11-02 → 2010-10-24 (-9d) |  |  |  |
| A15330 | plumbing connections under slab on grade | 2010-08-29 → 2010-08-22 (-7d) | 2010-08-30 → 2010-08-24 (-6d) |  | 70d → 54.6d |  |
| A15280 | electrical conduits for ground floor's slab | 2010-09-02 → 2010-08-26 (-7d) | 2010-09-04 → 2010-08-29 (-6d) |  | 40d → 23.6d |  |
| A15290 | electrical conduits for 1st floor slab | 2010-09-21 → 2010-09-14 (-7d) | 2010-09-22 → 2010-09-16 (-6d) |  | 40d → 25.6d |  |
| A15480 | electrical conduits for ground floor walls | 2010-10-04 → 2010-09-27 (-7d) | 2010-10-05 → 2010-09-29 (-6d) |  | 51d → 31.6d |  |
| A15300 | electrical conduits for roof slab | 2010-10-09 → 2010-10-02 (-7d) | 2010-10-09 → 2010-10-03 (-6d) |  | 40d → 25.6d |  |
| A15490 | electrical conduits for 1st floor walls | 2010-10-16 → 2010-10-09 (-7d) | 2010-10-17 → 2010-10-11 (-6d) |  | 49d → 30.6d |  |
| A15500 | electrical conduits for roof floor walls | 2010-10-28 → 2010-10-21 (-7d) | 2010-10-30 → 2010-10-24 (-6d) |  | 46d → 27.6d |  |
| 6 | **finishing** | 2010-10-10 → 2010-09-29 (-11d) | 2010-11-11 → 2010-11-02 (-9d) |  |  |  |
| A15310 | Internal plastering for ground floor | 2010-10-06 → 2010-09-29 (-7d) | 2010-10-14 → 2010-10-09 (-5d) |  | 47d → 31.6d |  |
| A15460 | Internal plastering for 1st floor | 2010-10-18 → 2010-10-11 (-7d) | 2010-10-26 → 2010-10-20 (-6d) |  | 49d → 30.6d |  |
| A15320 | External plastering | 2010-10-28 → 2010-10-21 (-7d) | 2010-11-08 → 2010-11-02 (-6d) |  | 39d → 20.6d |  |
| A15470 | Internal plastering for roof floor | 2010-10-31 → 2010-10-24 (-7d) | 2010-11-04 → 2010-10-30 (-5d) |  | 46d → 27.6d |  |
| villa 95 | **Villa Number A95** | 2010-06-21 → 2010-06-29 (+8d) | 2010-11-07 → 2010-11-02 (-5d) |  |  |  |
| 1 | **general dates** | 2010-06-21 → 2010-06-29 (+8d) | 2010-12-09 → 2010-11-02 (-37d) |  |  |  |
| A15740 | Start Villa construction | 2010-07-12 → 2010-06-29 A (-13d) | 2010-07-12 → 2010-06-29 A (-13d) | 0% → 100% | 40d → none | A15760 FS+18d → A15760 |
| A15760 | IFC drawings | 2010-06-21 → 2010-06-29 A (+8d) | 2010-06-21 → 2010-06-29 A (+8d) | 0% → 100% | 40d → none |  |
| A15810 | Fence Drawings IFC | 2010-07-12 → 2010-07-20 (+8d) | 2010-07-12 → 2010-07-20 (+8d) |  | 81d → 50d |  |
| A15750 | finish Villa construction | 2010-11-07 → 2010-11-02 (-5d) | 2010-11-07 → 2010-11-02 (-5d) |  | 40d → 20.8d |  |
| 2 | **earth works** | 2010-08-11 → 2010-06-30 (-42d) | 2010-08-26 → 2010-07-21 (-36d) |  |  |  |
| A15510 | excavation | 2010-07-12 → 2010-06-30 A (-12d) | 2010-07-13 → 2010-06-30 A (-13d) | 0% → 100% | 40d → none | A15740 → A15740 FS+18d |
| A15520 | soil replacement | 2010-07-14 → 2010-07-02 A (-12d) | 2010-07-27 → 2010-07-21 (-6d) | 0% → 90% | 40d → 22.8d |  |
| 3 | **foundation level** | 2010-08-28 → 2010-07-21 (-38d) | 2010-10-28 → 2010-09-26 (-32d) |  |  |  |
| A15530 | Plain Concrete Foundation | 2010-07-28 → 2010-07-21 (-7d) | 2010-07-29 → 2010-07-24 (-5d) |  | 40d → 22.8d |  |
| A15820 | backfilling between P.C Foundation | 2010-08-01 → 2010-07-25 (-7d) | 2010-08-02 → 2010-07-27 (-6d) |  | 36d → 22.8d |  |
| A15540 | Reinforced Concrete Foundation | 2010-08-03 → 2010-07-28 (-6d) | 2010-08-10 → 2010-08-05 (-5d) |  | 40d → 22.8d | A15820 → A15830 |
| A15550 | under ground brick works | 2010-08-18 → 2010-08-12 (-6d) | 2010-08-19 → 2010-08-15 (-4d) |  | 40d → 22.8d |  |
| A15560 | under ground insulation for RC & Brick work | 2010-08-21 → 2010-08-15 (-6d) | 2010-08-22 → 2010-08-17 (-5d) |  | 40d → 22.8d |  |
| A15570 | backfilling for under ground | 2010-08-23 → 2010-08-17 (-6d) | 2010-08-26 → 2010-08-22 (-4d) |  | 40d → 22.8d |  |
| A15580 | P.C slab on grade 10CM | 2010-09-26 → 2010-09-20 (-6d) | 2010-09-26 → 2010-09-21 (-5d) |  | 48d → 31.8d |  |
| A15590 | moisture insulation with membrane sheets | 2010-09-27 → 2010-09-21 (-6d) | 2010-09-28 → 2010-09-23 (-5d) |  | 48d → 31.8d |  |
| A15600 | R.C slab on grade | 2010-09-29 → 2010-09-23 (-6d) | 2010-09-30 → 2010-09-26 (-4d) |  | 48d → 31.8d |  |
| 4 | **skeleton & brick walls** | 2010-09-11 → 2010-08-05 (-37d) | 2010-12-07 → 2010-10-31 (-37d) |  |  |  |
| A15610 | columns for ground floor | 2010-08-11 → 2010-08-05 (-6d) | 2010-08-17 → 2010-08-12 (-5d) |  | 40d → 22.8d |  |
| A15620 | slab for ground floor | 2010-08-28 → 2010-08-22 (-6d) | 2010-09-06 → 2010-09-01 (-5d) |  | 40d → 22.8d |  |
| A15770 | pouring for ground floor's slab | 2010-09-07 → 2010-09-01 (-6d) | 2010-09-07 → 2010-09-02 (-5d) |  | 40d → 22.8d |  |
| A15630 | columns for 1st floor | 2010-09-08 → 2010-09-02 (-6d) | 2010-09-14 → 2010-09-09 (-5d) |  | 40d → 24.8d |  |
| A15800 | Fence work | 2010-09-08 → 2010-09-02 (-6d) | 2010-11-04 → 2010-10-31 (-4d) |  | 42d → 22.8d |  |
| A15640 | slab for 1st floor | 2010-09-15 → 2010-09-09 (-6d) | 2010-09-25 → 2010-09-20 (-5d) |  | 40d → 24.8d |  |
| A15670 | Brick works for ground floor | 2010-09-20 → 2010-09-14 (-6d) | 2010-09-25 → 2010-09-20 (-5d) |  | 48d → 31.8d |  |
| A15780 | pouring for 1st floor's slab | 2010-09-26 → 2010-09-20 (-6d) | 2010-09-26 → 2010-09-21 (-5d) |  | 40d → 24.8d |  |
| A15650 | columns for roof floor | 2010-09-29 → 2010-09-23 (-6d) | 2010-10-03 → 2010-09-28 (-5d) |  | 40d → 24.8d |  |
| A15660 | slab for roof floor | 2010-10-04 → 2010-09-28 (-6d) | 2010-10-10 → 2010-10-05 (-5d) |  | 40d → 24.8d |  |
| A15840 | Brick works for 1st floor | 2010-10-09 → 2010-10-03 (-6d) | 2010-10-13 → 2010-10-09 (-4d) |  | 50d → 30.8d |  |
| A15790 | pouring for roof floor's slab | 2010-10-11 → 2010-10-05 (-6d) | 2010-10-11 → 2010-10-06 (-5d) |  | 40d → 24.8d |  |
| A15850 | Brick works for roof floor | 2010-10-21 → 2010-10-16 (-5d) | 2010-10-26 → 2010-10-21 (-5d) |  | 44d → 24.8d |  |
| 5 | **electro mechanical** | 2010-09-25 → 2010-08-22 (-34d) | 2010-11-30 → 2010-10-24 (-37d) |  |  |  |
| A15730 | plumbing connections under slab on grade | 2010-08-28 → 2010-08-22 (-6d) | 2010-08-29 → 2010-08-24 (-5d) |  | 71d → 54.8d |  |
| A15680 | electrical conduits for ground floor's slab | 2010-09-01 → 2010-08-26 (-6d) | 2010-09-02 → 2010-08-29 (-4d) |  | 41d → 23.8d |  |
| A15690 | electrical conduits for 1st floor slab | 2010-09-20 → 2010-09-14 (-6d) | 2010-09-21 → 2010-09-16 (-5d) |  | 41d → 25.8d |  |
| A15880 | electrical conduits for ground floor walls | 2010-10-03 → 2010-09-27 (-6d) | 2010-10-04 → 2010-09-29 (-5d) |  | 52d → 31.8d |  |
| A15700 | electrical conduits for roof slab | 2010-10-07 → 2010-10-02 (-5d) | 2010-10-07 → 2010-10-03 (-4d) |  | 41d → 25.8d |  |
| A15890 | electrical conduits for 1st floor walls | 2010-10-14 → 2010-10-09 (-5d) | 2010-10-16 → 2010-10-11 (-5d) |  | 50d → 30.8d |  |
| A15900 | electrical conduits for roof floor walls | 2010-10-27 → 2010-10-21 (-6d) | 2010-10-28 → 2010-10-24 (-4d) |  | 47d → 27.8d |  |
| 6 | **finishing** | 2010-11-02 → 2010-09-29 (-34d) | 2010-12-09 → 2010-11-02 (-37d) |  |  |  |
| A15710 | Internal plastering for ground floor | 2010-10-05 → 2010-09-29 (-6d) | 2010-10-13 → 2010-10-09 (-4d) |  | 48d → 31.8d |  |
| A15860 | Internal plastering for 1st floor | 2010-10-17 → 2010-10-11 (-6d) | 2010-10-25 → 2010-10-20 (-5d) |  | 50d → 30.8d |  |
| A15720 | External plastering | 2010-10-27 → 2010-10-21 (-6d) | 2010-11-07 → 2010-11-02 (-5d) |  | 40d → 20.8d |  |
| A15870 | Internal plastering for roof floor | 2010-10-30 → 2010-10-24 (-6d) | 2010-11-03 → 2010-10-30 (-4d) |  | 47d → 27.8d |  |
| villa 96 | **Villa Number A96** | 2010-06-21 → 2010-06-29 (+8d) | 2010-11-13 → 2010-11-02 (-11d) |  |  |  |
| 1 | **general dates** | 2010-06-21 → 2010-06-29 (+8d) | 2010-12-08 → 2010-11-02 (-36d) |  |  |  |
| A16140 | Start Villa construction | 2010-07-18 → 2010-06-29 A (-19d) | 2010-07-18 → 2010-06-29 A (-19d) | 0% → 100% | 35d → none | A16160 FS+23d → A16160 |
| A16160 | IFC drawings | 2010-06-21 → 2010-06-29 A (+8d) | 2010-06-21 → 2010-06-29 A (+8d) | 0% → 100% | 35d → none |  |
| A16210 | Fence Drawings IFC | 2010-07-18 → 2010-07-20 (+2d) | 2010-07-18 → 2010-07-20 (+2d) |  | 76d → 50d |  |

| ID | Task | Start | Finish | Complete | Total float | Predecessors |
| --- | --- | --- | --- | --- | --- | --- |
| A16150 | finish Villa construction | 2010-11-13 → 2010-11-02 (-11d) | 2010-11-13 → 2010-11-02 (-11d) |  | 35d → 20.8d |  |
| 2 | **earth works** | 2010-08-12 → 2010-06-30 (-43d) | 2010-08-28 → 2010-07-21 (-38d) |  |  |  |
| A15910 | excavation | 2010-07-18 → 2010-06-30 A (-18d) | 2010-07-19 → 2010-06-30 A (-19d) | 0% → 100% | 35d → none | A16140 → A16140 FS+19d |
| A15920 | soil replacement | 2010-07-20 → 2010-07-02 A (-18d) | 2010-08-02 → 2010-07-21 (-12d) | 0% → 90% | 35d → 22.8d |  |
| 3 | **foundation level** | 2010-08-29 → 2010-07-21 (-39d) | 2010-10-30 → 2010-09-26 (-34d) |  |  |  |
| A15930 | Plain Concrete Foundation | 2010-08-03 → 2010-07-21 (-13d) | 2010-08-04 → 2010-07-24 (-11d) |  | 35d → 22.8d |  |
| A16220 | backfilling between P.C Foundation | 2010-08-07 → 2010-07-25 (-13d) | 2010-08-08 → 2010-07-27 (-12d) |  | 31d → 22.8d |  |
| A15940 | Reinforced Concrete Foundation | 2010-08-09 → 2010-07-28 (-12d) | 2010-08-16 → 2010-08-05 (-11d) |  | 35d → 22.8d | A16220 → A16230 |
| A15950 | under ground brick works | 2010-08-24 → 2010-08-12 (-12d) | 2010-08-25 → 2010-08-15 (-10d) |  | 35d → 22.8d |  |
| A15960 | under ground insulation for RC & Brick work | 2010-08-26 → 2010-08-15 (-11d) | 2010-08-28 → 2010-08-17 (-11d) |  | 35d → 22.8d |  |
| A15970 | backfilling for under ground | 2010-08-29 → 2010-08-17 (-12d) | 2010-09-01 → 2010-08-22 (-10d) |  | 35d → 22.8d |  |
| A15980 | P.C slab on grade 10CM | 2010-10-02 → 2010-09-20 (-12d) | 2010-10-02 → 2010-09-21 (-11d) |  | 43d → 31.8d |  |
| A15990 | moisture insulation with membrane sheets | 2010-10-03 → 2010-09-21 (-12d) | 2010-10-04 → 2010-09-23 (-11d) |  | 43d → 31.8d |  |
| A16000 | R.C slab on grade | 2010-10-05 → 2010-09-23 (-12d) | 2010-10-06 → 2010-09-26 (-10d) |  | 43d → 31.8d |  |
| 4 | **skeleton & brick walls** | 2010-09-12 → 2010-08-05 (-38d) | 2010-12-08 → 2010-10-31 (-38d) |  |  |  |
| A16010 | columns for ground floor | 2010-08-17 → 2010-08-05 (-12d) | 2010-08-23 → 2010-08-12 (-11d) |  | 35d → 22.8d |  |
| A16020 | slab for ground floor | 2010-09-02 → 2010-08-22 (-11d) | 2010-09-12 → 2010-09-01 (-11d) |  | 35d → 22.8d |  |
| A16170 | pouring for ground floor's slab | 2010-09-13 → 2010-09-01 (-12d) | 2010-09-13 → 2010-09-02 (-11d) |  | 35d → 22.8d |  |
| A16030 | columns for 1st floor | 2010-09-14 → 2010-09-02 (-12d) | 2010-09-20 → 2010-09-09 (-11d) |  | 35d → 24.8d |  |
| A16200 | Fence work | 2010-09-14 → 2010-09-02 (-12d) | 2010-11-10 → 2010-10-31 (-10d) |  | 37d → 22.8d |  |
| A16040 | slab for 1st floor | 2010-09-21 → 2010-09-09 (-12d) | 2010-09-30 → 2010-09-20 (-10d) |  | 35d → 24.8d |  |
| A16070 | Brick works for ground floor | 2010-09-26 → 2010-09-14 (-12d) | 2010-09-30 → 2010-09-20 (-10d) |  | 43d → 31.8d |  |
| A16180 | pouring for 1st floor's slab | 2010-10-02 → 2010-09-20 (-12d) | 2010-10-02 → 2010-09-21 (-11d) |  | 35d → 24.8d |  |
| A16050 | columns for roof floor | 2010-10-05 → 2010-09-23 (-12d) | 2010-10-09 → 2010-09-28 (-11d) |  | 35d → 24.8d |  |
| A16060 | slab for roof floor | 2010-10-10 → 2010-09-28 (-12d) | 2010-10-16 → 2010-10-05 (-11d) |  | 35d → 24.8d |  |
| A16240 | Brick works for 1st floor | 2010-10-14 → 2010-10-03 (-11d) | 2010-10-19 → 2010-10-09 (-10d) |  | 45d → 30.8d |  |
| A16190 | pouring for roof floor's slab | 2010-10-17 → 2010-10-05 (-12d) | 2010-10-17 → 2010-10-06 (-11d) |  | 35d → 24.8d |  |
| A16250 | Brick works for roof floor | 2010-10-27 → 2010-10-16 (-11d) | 2010-11-01 → 2010-10-21 (-11d) |  | 39d → 24.8d |  |
| 5 | **electro mechanical** | 2010-09-26 → 2010-08-22 (-35d) | 2010-12-01 → 2010-10-24 (-38d) |  |  |  |
| A16130 | plumbing connections under slab on grade | 2010-09-02 → 2010-08-22 (-11d) | 2010-09-04 → 2010-08-24 (-11d) |  | 66d → 54.8d |  |
| A16080 | electrical conduits for ground floor's slab | 2010-09-07 → 2010-08-26 (-12d) | 2010-09-08 → 2010-08-29 (-10d) |  | 36d → 23.8d |  |
| A16090 | electrical conduits for 1st floor slab | 2010-09-26 → 2010-09-14 (-12d) | 2010-09-27 → 2010-09-16 (-11d) |  | 36d → 25.8d |  |
| A16280 | electrical conduits for ground floor walls | 2010-10-09 → 2010-09-27 (-12d) | 2010-10-10 → 2010-09-29 (-11d) |  | 47d → 31.8d |  |
| A16100 | electrical conduits for roof slab | 2010-10-13 → 2010-10-02 (-11d) | 2010-10-13 → 2010-10-03 (-10d) |  | 36d → 25.8d |  |
| A16290 | electrical conduits for 1st floor walls | 2010-10-20 → 2010-10-09 (-11d) | 2010-10-21 → 2010-10-11 (-10d) |  | 45d → 30.8d |  |
| A16300 | electrical conduits for roof floor walls | 2010-11-02 → 2010-10-21 (-12d) | 2010-11-03 → 2010-10-24 (-10d) |  | 42d → 27.8d |  |
| 6 | **finishing** | 2010-11-03 → 2010-09-29 (-35d) | 2010-12-08 → 2010-11-02 (-36d) |  |  |  |
| A16110 | Internal plastering for ground floor | 2010-10-11 → 2010-09-29 (-12d) | 2010-10-19 → 2010-10-09 (-10d) |  | 43d → 31.8d |  |
| A16260 | Internal plastering for 1st floor | 2010-10-23 → 2010-10-11 (-12d) | 2010-10-31 → 2010-10-20 (-11d) |  | 45d → 30.8d |  |
| A16120 | External plastering | 2010-11-02 → 2010-10-21 (-12d) | 2010-11-13 → 2010-11-02 (-11d) |  | 35d → 20.8d |  |
| A16270 | Internal plastering for roof floor | 2010-11-04 → 2010-10-24 (-11d) | 2010-11-09 → 2010-10-30 (-10d) |  | 42d → 27.8d |  |
| villa 97 | **Villa Number A97** | 2010-06-21 → 2010-06-29 (+8d) | 2010-11-11 → 2010-11-02 (-9d) |  |  |  |
| 1 | **general dates** | 2010-06-21 → 2010-06-29 (+8d) | 2010-12-08 → 2010-11-02 (-36d) |  |  |  |
| A16540 | Start Villa construction | 2010-07-17 → 2010-06-29 A (-18d) | 2010-07-17 → 2010-06-29 A (-18d) | 0% → 100% | 36d → none | A16560 FS+22d → A16560 |
| A16560 | IFC drawings | 2010-06-21 → 2010-06-29 A (+8d) | 2010-06-21 → 2010-06-29 A (+8d) | 0% → 100% | 36d → none |  |
| A16610 | Fence Drawings IFC | 2010-07-17 → 2010-07-20 (+3d) | 2010-07-17 → 2010-07-20 (+3d) |  | 77d → 50d |  |
| A16550 | finish Villa construction | 2010-11-11 → 2010-11-02 (-9d) | 2010-11-11 → 2010-11-02 (-9d) |  | 36d → 20.8d |  |
| 2 | **earth works** | 2010-08-12 → 2010-06-30 (-43d) | 2010-08-28 → 2010-07-21 (-38d) |  |  |  |
| A16310 | excavation | 2010-07-17 → 2010-06-30 A (-17d) | 2010-07-18 → 2010-07-01 A (-17d) | 0% → 100% | 36d → none | A16540 → A16540 FS+20d |
| A16320 | soil replacement | 2010-07-19 → 2010-07-02 A (-17d) | 2010-08-01 → 2010-07-21 (-11d) | 0% → 100% | 36d → 22.8d |  |
| 3 | **foundation level** | 2010-08-29 → 2010-07-21 (-39d) | 2010-10-30 → 2010-09-26 (-34d) |  |  |  |
| A16330 | Plain Concrete Foundation | 2010-08-02 → 2010-07-21 (-12d) | 2010-08-03 → 2010-07-24 (-10d) |  | 36d → 22.8d |  |
| A16620 | backfilling between P.C Foundation | 2010-08-05 → 2010-07-25 (-11d) | 2010-08-07 → 2010-07-27 (-11d) |  | 32d → 22.8d |  |
| A16340 | Reinforced Concrete Foundation | 2010-08-08 → 2010-07-28 (-11d) | 2010-08-15 → 2010-08-05 (-10d) |  | 36d → 22.8d | A16620 → A16630 |
| A16350 | under ground brick works | 2010-08-23 → 2010-08-12 (-11d) | 2010-08-24 → 2010-08-15 (-9d) |  | 36d → 22.8d |  |
| A16360 | under ground insulation for RC & Brick work | 2010-08-25 → 2010-08-15 (-10d) | 2010-08-26 → 2010-08-17 (-9d) |  | 36d → 22.8d |  |
| A16370 | backfilling for under ground | 2010-08-28 → 2010-08-17 (-11d) | 2010-08-31 → 2010-08-22 (-9d) |  | 36d → 22.8d |  |
| A16380 | P.C slab on grade 10CM | 2010-09-30 → 2010-09-20 (-10d) | 2010-09-30 → 2010-09-21 (-9d) |  | 44d → 31.8d |  |
| A16390 | moisture insulation with membrane sheets | 2010-10-02 → 2010-09-21 (-11d) | 2010-10-03 → 2010-09-23 (-10d) |  | 44d → 31.8d |  |
| A16400 | R.C slab on grade | 2010-10-04 → 2010-09-23 (-11d) | 2010-10-05 → 2010-09-26 (-9d) |  | 44d → 31.8d |  |
| 4 | **skeleton & brick walls** | 2010-09-12 → 2010-08-05 (-38d) | 2010-12-08 → 2010-10-31 (-38d) |  |  |  |
| A16410 | columns for ground floor | 2010-08-16 → 2010-08-05 (-11d) | 2010-08-22 → 2010-08-12 (-10d) |  | 36d → 22.8d |  |
| A16420 | slab for ground floor | 2010-09-01 → 2010-08-22 (-10d) | 2010-09-11 → 2010-09-01 (-10d) |  | 36d → 22.8d |  |
| A16570 | pouring for ground floor's slab | 2010-09-12 → 2010-09-01 (-11d) | 2010-09-12 → 2010-09-02 (-10d) |  | 36d → 22.8d |  |
| A16430 | columns for 1st floor | 2010-09-13 → 2010-09-02 (-11d) | 2010-09-19 → 2010-09-09 (-10d) |  | 36d → 24.8d |  |
| A16600 | Fence work | 2010-09-13 → 2010-09-02 (-11d) | 2010-11-09 → 2010-10-31 (-9d) |  | 38d → 22.8d |  |
| A16440 | slab for 1st floor | 2010-09-20 → 2010-09-09 (-11d) | 2010-09-29 → 2010-09-20 (-9d) |  | 36d → 24.8d |  |
| A16470 | Brick works for ground floor | 2010-09-25 → 2010-09-14 (-11d) | 2010-09-29 → 2010-09-20 (-9d) |  | 44d → 31.8d |  |
| A16580 | pouring for 1st floor's slab | 2010-09-30 → 2010-09-20 (-10d) | 2010-09-30 → 2010-09-21 (-9d) |  | 36d → 24.8d |  |
| A16450 | columns for roof floor | 2010-10-04 → 2010-09-23 (-11d) | 2010-10-07 → 2010-09-28 (-9d) |  | 36d → 24.8d |  |

| ID | Task | Start | Finish | Complete | Total float | Predecessors |
| --- | --- | --- | --- | --- | --- | --- |
| A16460 | slab for roof floor | 2010-10-09 → 2010-09-28 (-11d) | 2010-10-14 → 2010-10-05 (-9d) |  | 36d → 24.8d |  |
| A16640 | Brick works for 1st floor | 2010-10-13 → 2010-10-03 (-10d) | 2010-10-18 → 2010-10-09 (-9d) |  | 46d → 30.8d |  |
| A16590 | pouring for roof floor's slab | 2010-10-16 → 2010-10-05 (-11d) | 2010-10-16 → 2010-10-06 (-10d) |  | 36d → 24.8d |  |
| A16650 | Brick works for roof floor | 2010-10-26 → 2010-10-16 (-10d) | 2010-10-31 → 2010-10-21 (-10d) |  | 40d → 24.8d |  |
| 5 | **electro mechanical** | 2010-09-26 → 2010-08-22 (-35d) | 2010-12-01 → 2010-10-24 (-38d) |  |  |  |
| A16530 | plumbing connections under slab on grade | 2010-09-01 → 2010-08-22 (-10d) | 2010-09-02 → 2010-08-24 (-9d) |  | 67d → 54.8d |  |
| A16480 | electrical conduits for ground floor's slab | 2010-09-06 → 2010-08-26 (-11d) | 2010-09-07 → 2010-08-29 (-9d) |  | 37d → 23.8d |  |
| A16490 | electrical conduits for 1st floor slab | 2010-09-25 → 2010-09-14 (-11d) | 2010-09-26 → 2010-09-16 (-10d) |  | 37d → 25.8d |  |
| A16680 | electrical conduits for ground floor walls | 2010-10-07 → 2010-09-27 (-10d) | 2010-10-09 → 2010-09-29 (-10d) |  | 48d → 31.8d |  |
| A16500 | electrical conduits for roof slab | 2010-10-12 → 2010-10-02 (-10d) | 2010-10-12 → 2010-10-03 (-9d) |  | 37d → 25.8d |  |
| A16690 | electrical conduits for 1st floor walls | 2010-10-19 → 2010-10-09 (-10d) | 2010-10-20 → 2010-10-11 (-9d) |  | 46d → 30.8d |  |
| A16700 | electrical conduits for roof floor walls | 2010-11-01 → 2010-10-21 (-11d) | 2010-11-02 → 2010-10-24 (-9d) |  | 43d → 27.8d |  |
| 6 | **finishing** | 2010-11-03 → 2010-09-29 (-35d) | 2010-12-08 → 2010-11-02 (-36d) |  |  |  |
| A16510 | Internal plastering for ground floor | 2010-10-10 → 2010-09-29 (-11d) | 2010-10-18 → 2010-10-09 (-9d) |  | 44d → 31.8d |  |
| A16660 | Internal plastering for 1st floor | 2010-10-21 → 2010-10-11 (-10d) | 2010-10-30 → 2010-10-20 (-10d) |  | 46d → 30.8d |  |
| A16520 | External plastering | 2010-11-01 → 2010-10-21 (-11d) | 2010-11-11 → 2010-11-02 (-9d) |  | 36d → 20.8d |  |
| A16670 | Internal plastering for roof floor | 2010-11-03 → 2010-10-24 (-10d) | 2010-11-08 → 2010-10-30 (-9d) |  | 43d → 27.8d |  |
| zone 3 | **Zone.No 3** |  | 2010-12-14 → 2010-11-30 (-14d) |  |  |  |
| villa 52 | **Villa Number E08** |  | 2010-12-14 → 2010-11-21 (-23d) |  |  |  |
| 1 | **general dates** |  | 2010-12-14 → 2010-11-21 (-23d) |  |  |  |
| A16940 | Start Villa construction | 2010-08-14 → 2010-06-21 A (-54d) | 2010-08-14 → 2010-06-21 A (-54d) | 0% → 100% | 12d → none | A16960 FS+46d → A16960 |
| A16960 | IFC drawings | 2010-06-21 A | 2010-06-21 A | 0% → 100% | 12d → none |  |
| A17010 | Fence Drawings IFC | 2010-08-14 → 2010-07-20 (-25d) | 2010-08-14 → 2010-07-20 (-25d) |  | 53d → 50d |  |
| A16950 | finish Villa construction | 2010-12-14 → 2010-11-21 (-23d) | 2010-12-14 → 2010-11-21 (-23d) |  | 12d → 8d |  |
| 2 | **earth works** | 2010-08-14 → 2010-07-20 (-25d) | 2010-08-29 → 2010-08-04 (-25d) |  |  |  |
| A16710 | excavation | 2010-08-14 → 2010-07-20 (-25d) | 2010-08-15 → 2010-07-21 (-25d) |  | 12d → 10d | A16940 → A16940 FS+24d |
| A16720 | soil replacement | 2010-08-16 → 2010-07-22 (-25d) | 2010-08-29 → 2010-08-04 (-25d) |  | 12d → 10d |  |
| 3 | **foundation level** | 2010-08-30 → 2010-08-05 (-25d) | 2010-11-02 → 2010-10-10 (-23d) |  |  |  |
| A16730 | Plain Concrete Foundation | 2010-08-30 → 2010-08-05 (-25d) | 2010-08-31 → 2010-08-07 (-24d) |  | 12d → 10d |  |
| A17020 | backfilling between P.C Foundation | 2010-09-02 → 2010-08-09 (-24d) | 2010-09-04 → 2010-08-10 (-25d) |  | 8d → 10d |  |
| A16740 | Reinforced Concrete Foundation | 2010-09-05 → 2010-08-12 (-24d) | 2010-09-12 → 2010-08-19 (-24d) |  | 12d → 10d | A17020 → A17030 |
| A16750 | under ground brick works | 2010-09-20 → 2010-08-28 (-23d) | 2010-09-21 → 2010-08-29 (-23d) |  | 12d → 10d |  |
| A16760 | under ground insulation for RC & Brick work | 2010-09-22 → 2010-08-30 (-23d) | 2010-09-23 → 2010-08-31 (-23d) |  | 12d → 10d |  |
| A16770 | backfilling for under ground | 2010-09-25 → 2010-09-01 (-24d) | 2010-09-28 → 2010-09-05 (-23d) |  | 12d → 10d |  |
| A16780 | P.C slab on grade 10CM | 2010-10-28 → 2010-10-05 (-23d) | 2010-10-28 → 2010-10-05 (-23d) |  | 20d → 19d |  |
| A16790 | moisture insulation with membrane sheets | 2010-10-30 → 2010-10-06 (-24d) | 2010-10-31 → 2010-10-07 (-24d) |  | 20d → 19d |  |
| A16800 | R.C slab on grade | 2010-11-01 → 2010-10-09 (-23d) | 2010-11-02 → 2010-10-10 (-23d) |  | 20d → 19d |  |
| 4 | **skeleton & brick walls** | 2010-09-13 → 2010-08-21 (-23d) | 2010-12-12 → 2010-11-14 (-28d) |  |  |  |
| A16810 | columns for ground floor | 2010-09-13 → 2010-08-21 (-23d) | 2010-09-19 → 2010-08-26 (-24d) |  | 12d → 10d |  |
| A16820 | slab for ground floor | 2010-09-29 → 2010-09-06 (-23d) | 2010-10-09 → 2010-09-15 (-24d) |  | 12d → 10d |  |
| A16970 | pouring for ground floor's slab | 2010-10-10 → 2010-09-16 (-24d) | 2010-10-10 → 2010-09-16 (-24d) |  | 12d → 10d |  |
| A16830 | columns for 1st floor | 2010-10-11 → 2010-09-18 (-23d) | 2010-10-17 → 2010-09-23 (-24d) |  |  |  |
| A17000 | Fence work | 2010-10-11 → 2010-09-18 (-23d) | 2010-12-12 → 2010-11-14 (-28d) |  | 14d → 10d |  |
| A16840 | slab for 1st floor | 2010-10-18 → 2010-09-25 (-23d) | 2010-10-27 → 2010-10-04 (-23d) |  |  |  |
| A16870 | Brick works for ground floor | 2010-10-23 → 2010-09-29 (-24d) | 2010-10-27 → 2010-10-04 (-23d) |  | 20d → 19d |  |
| A16980 | pouring for 1st floor's slab | 2010-10-28 → 2010-10-05 (-23d) | 2010-10-28 → 2010-10-05 (-23d) |  |  |  |
| A16850 | columns for roof floor | 2010-11-01 → 2010-10-09 (-23d) | 2010-11-04 → 2010-10-12 (-23d) |  |  |  |
| A16860 | slab for roof floor | 2010-11-06 → 2010-10-13 (-24d) | 2010-11-11 → 2010-10-19 (-23d) |  |  |  |
| A17040 | Brick works for 1st floor | 2010-11-10 → 2010-10-18 (-23d) | 2010-11-15 → 2010-10-23 (-23d) |  | 22d → 18d |  |
| A16990 | pouring for roof floor's slab | 2010-11-13 → 2010-10-20 (-24d) | 2010-11-13 → 2010-10-20 (-24d) |  |  |  |
| A17050 | Brick works for roof floor | 2010-11-28 → 2010-10-31 (-28d) | 2010-12-02 → 2010-11-04 (-28d) |  |  |  |
| 5 | **electro mechanical** | 2010-09-29 → 2010-09-06 (-23d) | 2010-12-05 → 2010-11-07 (-28d) |  |  |  |
| A16930 | plumbing connections under slab on grade | 2010-09-29 → 2010-09-06 (-23d) | 2010-09-30 → 2010-09-07 (-23d) |  | 43d → 42d |  |
| A16880 | electrical conduits for ground floor's slab | 2010-10-04 → 2010-09-11 (-23d) | 2010-10-05 → 2010-09-12 (-23d) |  | 13d → 11d |  |
| A16890 | electrical conduits for 1st floor slab | 2010-10-23 → 2010-09-29 (-24d) | 2010-10-24 → 2010-09-30 (-24d) |  |  |  |
| A17080 | electrical conduits for ground floor walls | 2010-11-04 → 2010-10-12 (-23d) | 2010-11-06 → 2010-10-13 (-24d) |  | 24d → 19d |  |
| A16900 | electrical conduits for roof slab | 2010-11-09 → 2010-10-17 (-23d) | 2010-11-09 → 2010-10-17 (-23d) |  |  |  |
| A17090 | electrical conduits for 1st floor walls | 2010-11-16 → 2010-10-24 (-23d) | 2010-11-17 → 2010-10-25 (-23d) |  | 22d → 18d |  |
| A17100 | electrical conduits for roof floor walls | 2010-12-04 → 2010-11-06 (-28d) | 2010-12-05 → 2010-11-07 (-28d) |  |  |  |
| 6 | **finishing** | 2010-11-07 → 2010-10-14 (-24d) | 2010-12-14 → 2010-11-21 (-23d) |  |  |  |
| A16910 | Internal plastering for ground floor | 2010-11-07 → 2010-10-14 (-24d) | 2010-11-20 → 2010-10-23 (-28d) |  | 20d → 19d |  |
| A17060 | Internal plastering for 1st floor | 2010-11-21 → 2010-10-26 (-26d) | 2010-11-29 → 2010-11-03 (-26d) |  | 20d → 18d |  |
| A16920 | External plastering | 2010-12-04 → 2010-11-06 (-28d) | 2010-12-14 → 2010-11-21 (-23d) |  | 12d → 8d |  |
| A17070 | Internal plastering for roof floor | 2010-12-06 → 2010-11-08 (-28d) | 2010-12-11 → 2010-11-13 (-28d) |  |  |  |
| villa 55 | **Villa Number A55** |  | 2010-12-28 → 2010-11-30 (-28d) |  |  |  |
| 1 | **general dates** |  | 2010-12-13 → 2010-11-30 (-13d) |  |  |  |
| A17340 | Start Villa construction | 2010-08-18 → 2010-06-21 A (-58d) | 2010-08-18 → 2010-06-21 A (-58d) | 0% → 100% | 0d → none | A17360 FS+50d → A17360 |
| A17360 | IFC drawings | 2010-06-21 A | 2010-06-21 A | 0% → 100% | 0d → none |  |
| A17410 | Fence Drawings IFC | 2010-08-18 → 2010-07-20 (-29d) | 2010-08-18 → 2010-07-20 (-29d) |  | 49d → 50d |  |
| A17350 | finish Villa construction | 2010-12-28 → 2010-11-30 (-28d) | 2010-12-28 → 2010-11-30 (-28d) |  |  |  |

| ID | Task | Start | Finish | Complete | Total float | Predecessors |
| --- | --- | --- | --- | --- | --- | --- |
| 2 | **earth works** | 2010-08-12 → 2010-07-20 (-23d) | 2010-08-28 → 2010-08-14 (-14d) |  |  |  |
| A17110 | excavation | 2010-08-18 → 2010-07-20 (-29d) | 2010-08-29 → 2010-07-31 (-29d) |  | 0d → 2d | A17340 → A17340 FS+25d |
| A17120 | soil replacement | 2010-08-30 → 2010-08-01 (-29d) | 2010-09-12 → 2010-08-14 (-29d) |  | 0d → 2d |  |
| 3 | **foundation level** | 2010-08-29 → 2010-08-15 (-14d) | 2010-11-01 → 2010-10-19 (-13d) |  |  |  |
| A17130 | Plain Concrete Foundation | 2010-09-13 → 2010-08-15 (-29d) | 2010-09-14 → 2010-08-16 (-29d) |  | 0d → 2d |  |
| A17420 | backfilling between P.C Foundation | 2010-09-16 → 2010-08-18 (-29d) | 2010-09-18 → 2010-08-19 (-30d) |  | 0d → 2d |  |
| A17140 | Reinforced Concrete Foundation | 2010-09-19 → 2010-08-22 (-28d) | 2010-09-26 → 2010-08-29 (-28d) |  | 0d → 2d | A17420 → A17430 |
| A17150 | under ground brick works | 2010-10-04 → 2010-09-06 (-28d) | 2010-10-05 → 2010-09-07 (-28d) |  | 0d → 2d |  |
| A17160 | under ground insulation for RC & Brick work | 2010-10-06 → 2010-09-08 (-28d) | 2010-10-07 → 2010-09-09 (-28d) |  | 0d → 2d |  |
| A17170 | backfilling for under ground | 2010-10-09 → 2010-09-11 (-28d) | 2010-10-12 → 2010-09-14 (-28d) |  | 0d → 2d |  |
| A17180 | P.C slab on grade 10CM | 2010-11-11 → 2010-10-14 (-28d) | 2010-11-11 → 2010-10-14 (-28d) |  | 8d → 11d |  |
| A17190 | moisture insulation with membrane sheets | 2010-11-13 → 2010-10-16 (-28d) | 2010-11-14 → 2010-10-17 (-28d) |  | 8d → 11d |  |
| A17200 | R.C slab on grade | 2010-11-20 → 2010-10-18 (-33d) | 2010-11-21 → 2010-10-19 (-33d) |  | 8d → 11d |  |
| 4 | **skeleton & brick walls** | 2010-09-12 → 2010-08-30 (-13d) | 2010-12-11 → 2010-11-28 (-13d) |  |  |  |
| A17210 | columns for ground floor | 2010-09-27 → 2010-08-30 (-28d) | 2010-10-03 → 2010-09-05 (-28d) |  | 0d → 2d |  |
| A17220 | slab for ground floor | 2010-10-13 → 2010-09-15 (-28d) | 2010-10-23 → 2010-09-25 (-28d) |  | 0d → 2d |  |
| A17370 | pouring for ground floor's slab | 2010-10-24 → 2010-09-26 (-28d) | 2010-10-24 → 2010-09-26 (-28d) |  | 0d → 2d |  |
| A17230 | columns for 1st floor | 2010-10-25 → 2010-09-27 (-28d) | 2010-10-31 → 2010-10-03 (-28d) |  | 0d → 4d |  |
| A17400 | Fence work | 2010-10-25 → 2010-09-27 (-28d) | 2010-12-26 → 2010-11-28 (-28d) |  |  |  |
| A17240 | slab for 1st floor | 2010-11-01 → 2010-10-04 (-28d) | 2010-11-10 → 2010-10-13 (-28d) |  | 0d → 4d |  |
| A17270 | Brick works for ground floor | 2010-11-06 → 2010-10-09 (-28d) | 2010-11-10 → 2010-10-13 (-28d) |  | 8d → 11d |  |
| A17380 | pouring for 1st floor's slab | 2010-11-11 → 2010-10-14 (-28d) | 2010-11-11 → 2010-10-14 (-28d) |  | 0d → 4d |  |
| A17250 | columns for roof floor | 2010-11-20 → 2010-10-18 (-33d) | 2010-11-23 → 2010-10-21 (-33d) |  | 0d → 4d |  |
| A17260 | slab for roof floor | 2010-11-24 → 2010-10-23 (-32d) | 2010-11-30 → 2010-10-28 (-33d) |  | 0d → 4d |  |
| A17440 | Brick works for 1st floor | 2010-11-29 → 2010-10-27 (-33d) | 2010-12-04 → 2010-11-01 (-33d) |  | 6d → 10d |  |
| A17390 | pouring for roof floor's slab | 2010-12-01 → 2010-10-30 (-32d) | 2010-12-01 → 2010-10-30 (-32d) |  | 0d → 4d |  |
| A17450 | Brick works for roof floor | 2010-12-12 → 2010-11-09 (-33d) | 2010-12-16 → 2010-11-14 (-32d) |  | 0d → 4d |  |
| 5 | **electro mechanical** | 2010-09-28 → 2010-09-15 (-13d) | 2010-12-04 → 2010-11-16 (-18d) |  |  |  |
| A17330 | plumbing connections under slab on grade | 2010-10-13 → 2010-09-15 (-28d) | 2010-10-14 → 2010-09-16 (-28d) |  | 31d → 34d |  |
| A17280 | electrical conduits for ground floor's slab | 2010-10-18 → 2010-09-20 (-28d) | 2010-10-19 → 2010-09-21 (-28d) |  | 1d → 3d |  |
| A17290 | electrical conduits for 1st floor slab | 2010-11-06 → 2010-10-09 (-28d) | 2010-11-07 → 2010-10-10 (-28d) |  | 1d → 5d |  |
| A17480 | electrical conduits for ground floor walls | 2010-11-23 → 2010-10-21 (-33d) | 2010-11-24 → 2010-10-23 (-32d) |  | 8d → 11d |  |
| A17300 | electrical conduits for roof slab | 2010-11-28 → 2010-10-26 (-33d) | 2010-11-28 → 2010-10-26 (-33d) |  | 1d → 5d |  |
| A17490 | electrical conduits for 1st floor walls | 2010-12-05 → 2010-11-02 (-33d) | 2010-12-06 → 2010-11-03 (-33d) |  | 6d → 10d |  |
| A17500 | electrical conduits for roof floor walls | 2010-12-18 → 2010-11-15 (-33d) | 2010-12-19 → 2010-11-16 (-33d) |  | 3d → 7d |  |
| 6 | **finishing** | 2010-11-06 → 2010-10-24 (-13d) | 2010-12-13 → 2010-11-30 (-13d) |  |  |  |
| A17310 | Internal plastering for ground floor | 2010-11-25 → 2010-10-24 (-32d) | 2010-12-04 → 2010-11-01 (-33d) |  | 8d → 11d |  |
| A17460 | Internal plastering for 1st floor | 2010-12-07 → 2010-11-04 (-33d) | 2010-12-15 → 2010-11-13 (-32d) |  | 6d → 10d |  |
| A17470 | Internal plastering for roof floor | 2010-12-20 → 2010-11-17 (-33d) | 2010-12-25 → 2010-11-22 (-33d) |  | 3d → 7d |  |
| A17320 | External plastering | 2010-12-18 → 2010-11-20 (-28d) | 2010-12-28 → 2010-11-30 (-28d) |  |  |  |
| villa 86 | **Villa Number A86** |  | 2010-12-28 → 2010-11-30 (-28d) |  |  |  |
| 1 | **general dates** |  | 2010-12-13 → 2010-11-30 (-13d) |  |  |  |
| A17740 | Start Villa construction | 2010-08-18 → 2010-06-21 A (-58d) | 2010-08-18 → 2010-06-21 A (-58d) | 0% → 100% | 0d → none | A17760 FS+50d → A17760 |
| A17760 | IFC drawings | 2010-06-21 A | 2010-06-21 A | 0% → 100% | 0d → none |  |
| A17810 | Fence Drawings IFC | 2010-08-18 → 2010-07-20 (-29d) | 2010-08-18 → 2010-07-20 (-29d) |  | 49d → 50d |  |
| A17750 | finish Villa construction | 2010-12-28 → 2010-11-30 (-28d) | 2010-12-28 → 2010-11-30 (-28d) |  |  |  |
| 2 | **earth works** | 2010-08-12 → 2010-07-20 (-23d) | 2010-08-28 → 2010-08-14 (-14d) |  |  |  |
| A17510 | excavation | 2010-08-18 → 2010-07-20 (-29d) | 2010-08-29 → 2010-07-31 (-29d) |  | 0d → 2d | A17740 → A17740 FS+23d |
| A17520 | soil replacement | 2010-08-30 → 2010-08-01 (-29d) | 2010-09-12 → 2010-08-14 (-29d) |  | 0d → 2d |  |
| 3 | **foundation level** | 2010-08-29 → 2010-08-15 (-14d) | 2010-11-01 → 2010-10-19 (-13d) |  |  |  |
| A17530 | Plain Concrete Foundation | 2010-09-13 → 2010-08-15 (-29d) | 2010-09-14 → 2010-08-16 (-29d) |  | 0d → 2d |  |
| A17820 | backfilling between P.C Foundation | 2010-09-16 → 2010-08-18 (-29d) | 2010-09-18 → 2010-08-19 (-30d) |  | 0d → 2d |  |
| A17540 | Reinforced Concrete Foundation | 2010-09-19 → 2010-08-22 (-28d) | 2010-09-26 → 2010-08-29 (-28d) |  | 0d → 2d | A17820 → A17830 |
| A17550 | under ground brick works | 2010-10-04 → 2010-09-06 (-28d) | 2010-10-05 → 2010-09-07 (-28d) |  | 0d → 2d |  |
| A17560 | under ground insulation for RC & Brick work | 2010-10-06 → 2010-09-08 (-28d) | 2010-10-07 → 2010-09-09 (-28d) |  | 0d → 2d |  |
| A17570 | backfilling for under ground | 2010-10-09 → 2010-09-11 (-28d) | 2010-10-12 → 2010-09-14 (-28d) |  | 0d → 2d |  |
| A17580 | P.C slab on grade 10CM | 2010-11-11 → 2010-10-14 (-28d) | 2010-11-11 → 2010-10-14 (-28d) |  | 8d → 11d |  |
| A17590 | moisture insulation with membrane sheets | 2010-11-13 → 2010-10-16 (-28d) | 2010-11-14 → 2010-10-17 (-28d) |  | 8d → 11d |  |
| A17600 | R.C slab on grade | 2010-11-20 → 2010-10-18 (-33d) | 2010-11-21 → 2010-10-19 (-33d) |  | 8d → 11d |  |
| 4 | **skeleton & brick walls** | 2010-09-12 → 2010-08-30 (-13d) | 2010-12-11 → 2010-11-28 (-13d) |  |  |  |
| A17610 | columns for ground floor | 2010-09-27 → 2010-08-30 (-28d) | 2010-10-03 → 2010-09-05 (-28d) |  | 0d → 2d |  |
| A17620 | slab for ground floor | 2010-10-13 → 2010-09-15 (-28d) | 2010-10-23 → 2010-09-25 (-28d) |  | 0d → 2d |  |
| A17770 | pouring for ground floor's slab | 2010-10-24 → 2010-09-26 (-28d) | 2010-10-24 → 2010-09-26 (-28d) |  | 0d → 2d |  |
| A17630 | columns for 1st floor | 2010-10-25 → 2010-09-27 (-28d) | 2010-10-31 → 2010-10-03 (-28d) |  | 0d → 4d |  |
| A17800 | Fence work | 2010-10-25 → 2010-09-27 (-28d) | 2010-12-26 → 2010-11-28 (-28d) |  |  |  |
| A17640 | slab for 1st floor | 2010-11-01 → 2010-10-04 (-28d) | 2010-11-10 → 2010-10-13 (-28d) |  | 0d → 4d |  |
| A17670 | Brick works for ground floor | 2010-11-06 → 2010-10-09 (-28d) | 2010-11-10 → 2010-10-13 (-28d) |  | 8d → 11d |  |
| A17780 | pouring for 1st floor's slab | 2010-11-11 → 2010-10-14 (-28d) | 2010-11-11 → 2010-10-14 (-28d) |  | 0d → 4d |  |
| A17650 | columns for roof floor | 2010-11-20 → 2010-10-18 (-33d) | 2010-11-23 → 2010-10-21 (-33d) |  | 0d → 4d |  |
| A17660 | slab for roof floor | 2010-11-24 → 2010-10-23 (-32d) | 2010-11-30 → 2010-10-28 (-33d) |  | 0d → 4d |  |

| ID | Task | Start | Finish | Complete | Total float | Predecessors |
| --- | --- | --- | --- | --- | --- | --- |
| A17840 | Brick works for 1st floor | 2010-11-29 → 2010-10-27 (-33d) | 2010-12-04 → 2010-11-01 (-33d) |  | 6d → 10d |  |
| A17790 | pouring for roof floor's slab | 2010-12-01 → 2010-10-30 (-32d) | 2010-12-01 → 2010-10-30 (-32d) |  | 0d → 4d |  |
| A17850 | Brick works for roof floor | 2010-12-12 → 2010-11-09 (-33d) | 2010-12-16 → 2010-11-14 (-32d) |  | 0d → 4d |  |
| 5 | **electro mechanical** | 2010-09-28 → 2010-09-15 (-13d) | 2010-12-04 → 2010-11-16 (-18d) |  |  |  |
| A17730 | plumbing connections under slab on grade | 2010-10-13 → 2010-09-15 (-28d) | 2010-10-14 → 2010-09-16 (-28d) |  | 31d → 34d |  |
| A17680 | electrical conduits for ground floor's slab | 2010-10-18 → 2010-09-20 (-28d) | 2010-10-19 → 2010-09-21 (-28d) |  | 1d → 3d |  |
| A17690 | electrical conduits for 1st floor slab | 2010-11-06 → 2010-10-09 (-28d) | 2010-11-07 → 2010-10-10 (-28d) |  | 1d → 5d |  |
| A17880 | electrical conduits for ground floor walls | 2010-11-23 → 2010-10-21 (-33d) | 2010-11-24 → 2010-10-23 (-32d) |  | 8d → 11d |  |
| A17700 | electrical conduits for roof slab | 2010-11-28 → 2010-10-26 (-33d) | 2010-11-28 → 2010-10-26 (-33d) |  | 1d → 5d |  |
| A17890 | electrical conduits for 1st floor walls | 2010-12-05 → 2010-11-02 (-33d) | 2010-12-06 → 2010-11-03 (-33d) |  | 6d → 10d |  |
| A17900 | electrical conduits for roof floor walls | 2010-12-18 → 2010-11-15 (-33d) | 2010-12-19 → 2010-11-16 (-33d) |  | 3d → 7d |  |
| 6 | **finishing** | 2010-11-06 → 2010-10-24 (-13d) | 2010-12-13 → 2010-11-30 (-13d) |  |  |  |
| A17710 | Internal plastering for ground floor | 2010-11-25 → 2010-10-24 (-32d) | 2010-12-04 → 2010-11-01 (-33d) |  | 8d → 11d |  |
| A17860 | Internal plastering for 1st floor | 2010-12-07 → 2010-11-04 (-33d) | 2010-12-15 → 2010-11-13 (-32d) |  | 6d → 10d |  |
| A17870 | Internal plastering for roof floor | 2010-12-20 → 2010-11-17 (-33d) | 2010-12-25 → 2010-11-22 (-33d) |  | 3d → 7d |  |
| A17720 | External plastering | 2010-12-18 → 2010-11-20 (-28d) | 2010-12-28 → 2010-11-30 (-28d) |  |  |  |
| villa 87 | **Villa Number A87** |  | 2010-12-28 → 2010-11-30 (-28d) |  |  |  |
| 1 | **general dates** |  | 2010-12-28 → 2010-11-30 (-28d) |  |  |  |
| A18140 | Start Villa construction | 2010-08-18 → 2010-06-21 A (-58d) | 2010-08-18 → 2010-06-21 A (-58d) | 0% → 100% | 0d → none | A18160 FS+50d → A18160 |
| A18160 | IFC drawings | 2010-06-21 A | 2010-06-21 A | 0% → 100% | 0d → none |  |
| A18210 | Fence Drawings IFC | 2010-08-18 → 2010-07-20 (-29d) | 2010-08-18 → 2010-07-20 (-29d) |  | 49d → 50d |  |
| A18150 | finish Villa construction | 2010-12-28 → 2010-11-30 (-28d) | 2010-12-28 → 2010-11-30 (-28d) |  |  |  |
| 2 | **earth works** | 2010-08-18 → 2010-07-20 (-29d) | 2010-09-12 → 2010-08-14 (-29d) |  |  |  |
| A17910 | excavation | 2010-08-18 → 2010-07-20 (-29d) | 2010-08-29 → 2010-07-31 (-29d) |  | 0d → 2d | A18140 → A18140 FS+20d |
| A17920 | soil replacement | 2010-08-30 → 2010-08-01 (-29d) | 2010-09-12 → 2010-08-14 (-29d) |  | 0d → 2d |  |
| 3 | **foundation level** | 2010-09-13 → 2010-08-15 (-29d) | 2010-11-21 → 2010-10-19 (-33d) |  |  |  |
| A17930 | Plain Concrete Foundation | 2010-09-13 → 2010-08-15 (-29d) | 2010-09-14 → 2010-08-16 (-29d) |  | 0d → 2d |  |
| A18220 | backfilling between P.C Foundation | 2010-09-16 → 2010-08-18 (-29d) | 2010-09-18 → 2010-08-19 (-30d) |  | 0d → 2d |  |
| A17940 | Reinforced Concrete Foundation | 2010-09-19 → 2010-08-22 (-28d) | 2010-09-26 → 2010-08-29 (-28d) |  | 0d → 2d | A18220 → A18230 |
| A17950 | under ground brick works | 2010-10-04 → 2010-09-06 (-28d) | 2010-10-05 → 2010-09-07 (-28d) |  | 0d → 2d |  |
| A17960 | under ground insulation for RC & Brick work | 2010-10-06 → 2010-09-08 (-28d) | 2010-10-07 → 2010-09-09 (-28d) |  | 0d → 2d |  |
| A17970 | backfilling for under ground | 2010-10-09 → 2010-09-11 (-28d) | 2010-10-12 → 2010-09-14 (-28d) |  | 0d → 2d |  |
| A17980 | P.C slab on grade 10CM | 2010-11-11 → 2010-10-14 (-28d) | 2010-11-11 → 2010-10-14 (-28d) |  | 8d → 11d |  |
| A17990 | moisture insulation with membrane sheets | 2010-11-13 → 2010-10-16 (-28d) | 2010-11-14 → 2010-10-17 (-28d) |  | 8d → 11d |  |
| A18000 | R.C slab on grade | 2010-11-20 → 2010-10-18 (-33d) | 2010-11-21 → 2010-10-19 (-33d) |  | 8d → 11d |  |
| 4 | **skeleton & brick walls** | 2010-09-27 → 2010-08-30 (-28d) | 2010-12-26 → 2010-11-28 (-28d) |  |  |  |
| A18010 | columns for ground floor | 2010-09-27 → 2010-08-30 (-28d) | 2010-10-03 → 2010-09-05 (-28d) |  | 0d → 2d |  |
| A18020 | slab for ground floor | 2010-10-13 → 2010-09-15 (-28d) | 2010-10-23 → 2010-09-25 (-28d) |  | 0d → 2d |  |
| A18170 | pouring for ground floor's slab | 2010-10-24 → 2010-09-26 (-28d) | 2010-10-24 → 2010-09-26 (-28d) |  | 0d → 2d |  |
| A18030 | columns for 1st floor | 2010-10-25 → 2010-09-27 (-28d) | 2010-10-31 → 2010-10-03 (-28d) |  | 0d → 4d |  |
| A18200 | Fence work | 2010-10-25 → 2010-09-27 (-28d) | 2010-12-26 → 2010-11-28 (-28d) |  |  |  |
| A18040 | slab for 1st floor | 2010-11-01 → 2010-10-04 (-28d) | 2010-11-10 → 2010-10-13 (-28d) |  | 0d → 4d |  |
| A18070 | Brick works for ground floor | 2010-11-06 → 2010-10-09 (-28d) | 2010-11-10 → 2010-10-13 (-28d) |  | 8d → 11d |  |
| A18180 | pouring for 1st floor's slab | 2010-11-11 → 2010-10-14 (-28d) | 2010-11-11 → 2010-10-14 (-28d) |  | 0d → 4d |  |
| A18050 | columns for roof floor | 2010-11-20 → 2010-10-18 (-33d) | 2010-11-23 → 2010-10-21 (-33d) |  | 0d → 4d |  |
| A18060 | slab for roof floor | 2010-11-24 → 2010-10-23 (-32d) | 2010-11-30 → 2010-10-28 (-33d) |  | 0d → 4d |  |
| A18240 | Brick works for 1st floor | 2010-11-29 → 2010-10-27 (-33d) | 2010-12-04 → 2010-11-01 (-33d) |  | 6d → 10d |  |
| A18190 | pouring for roof floor's slab | 2010-12-01 → 2010-10-30 (-32d) | 2010-12-01 → 2010-10-30 (-32d) |  | 0d → 4d |  |
| A18250 | Brick works for roof floor | 2010-12-12 → 2010-11-09 (-33d) | 2010-12-16 → 2010-11-14 (-32d) |  | 0d → 4d |  |
| 5 | **electro mechanical** | 2010-10-13 → 2010-09-15 (-28d) | 2010-12-19 → 2010-11-16 (-33d) |  |  |  |
| A18130 | plumbing connections under slab on grade | 2010-10-13 → 2010-09-15 (-28d) | 2010-10-14 → 2010-09-16 (-28d) |  | 31d → 34d |  |
| A18080 | electrical conduits for ground floor's slab | 2010-10-18 → 2010-09-20 (-28d) | 2010-10-19 → 2010-09-21 (-28d) |  | 1d → 3d |  |
| A18090 | electrical conduits for 1st floor slab | 2010-11-06 → 2010-10-09 (-28d) | 2010-11-07 → 2010-10-10 (-28d) |  | 1d → 5d |  |
| A18280 | electrical conduits for ground floor walls | 2010-11-23 → 2010-10-21 (-33d) | 2010-11-24 → 2010-10-23 (-32d) |  | 8d → 11d |  |
| A18100 | electrical conduits for roof slab | 2010-11-28 → 2010-10-26 (-33d) | 2010-11-28 → 2010-10-26 (-33d) |  | 1d → 5d |  |
| A18290 | electrical conduits for 1st floor walls | 2010-12-05 → 2010-11-02 (-33d) | 2010-12-06 → 2010-11-03 (-33d) |  | 6d → 10d |  |
| A18300 | electrical conduits for roof floor walls | 2010-12-18 → 2010-11-15 (-33d) | 2010-12-19 → 2010-11-16 (-33d) |  | 3d → 7d |  |
| 6 | **finishing** | 2010-11-25 → 2010-10-24 (-32d) | 2010-12-28 → 2010-11-30 (-28d) |  |  |  |
| A18110 | Internal plastering for ground floor | 2010-11-25 → 2010-10-24 (-32d) | 2010-12-04 → 2010-11-01 (-33d) |  | 8d → 11d |  |
| A18260 | Internal plastering for 1st floor | 2010-12-07 → 2010-11-04 (-33d) | 2010-12-15 → 2010-11-13 (-32d) |  | 6d → 10d |  |
| A18270 | Internal plastering for roof floor | 2010-12-20 → 2010-11-17 (-33d) | 2010-12-25 → 2010-11-22 (-33d) |  | 3d → 7d |  |
| A18120 | External plastering | 2010-12-18 → 2010-11-20 (-28d) | 2010-12-28 → 2010-11-30 (-28d) |  |  |  |
| villa 111 | **Villa Number B106** |  | 2010-12-13 → 2010-11-21 (-22d) |  |  |  |
| 1 | **general dates** |  | 2010-12-28 → 2010-11-21 (-37d) |  |  |  |
| A18540 | Start Villa construction | 2010-08-12 → 2010-06-21 A (-52d) | 2010-08-12 → 2010-06-21 A (-52d) | 0% → 100% | 13d → none | A18560 FS+45d → A18560 |
| A18560 | IFC drawings | 2010-06-21 A | 2010-06-21 A | 0% → 100% | 13d → none |  |
| A18610 | Fence Drawings IFC | 2010-08-12 → 2010-07-20 (-23d) | 2010-08-12 → 2010-07-20 (-23d) |  | 54d → 50d |  |
| A18550 | finish Villa construction | 2010-12-13 → 2010-11-21 (-22d) | 2010-12-13 → 2010-11-21 (-22d) |  | 13d → 8d |  |
| 2 | **earth works** | 2010-08-18 → 2010-07-20 (-29d) | 2010-09-12 → 2010-08-04 (-39d) |  |  |  |
| A18310 | excavation | 2010-08-12 → 2010-07-20 (-23d) | 2010-08-14 → 2010-07-21 (-24d) |  | 13d → 10d | A18540 → A18540 FS+25d |

| ID | Task | Start | Finish | Complete | Total float | Predecessors |
| --- | --- | --- | --- | --- | --- | --- |
| A18320 | soil replacement | 2010-08-15 → 2010-07-22 (-24d) | 2010-08-28 → 2010-08-04 (-24d) |  | 13d → 10d |  |
| 3 | **foundation level** | 2010-09-13 → 2010-08-05 (-39d) | 2010-11-21 → 2010-10-10 (-42d) |  |  |  |
| A18330 | Plain Concrete Foundation | 2010-08-29 → 2010-08-05 (-24d) | 2010-08-30 → 2010-08-07 (-23d) |  | 13d → 10d |  |
| A18620 | backfilling between P.C Foundation | 2010-09-01 → 2010-08-09 (-23d) | 2010-09-02 → 2010-08-10 (-23d) |  | 9d → 10d |  |
| A18340 | Reinforced Concrete Foundation | 2010-09-04 → 2010-08-12 (-23d) | 2010-09-11 → 2010-08-19 (-23d) |  | 13d → 10d | A18620 → A18630 |
| A18350 | under ground brick works | 2010-09-19 → 2010-08-28 (-22d) | 2010-09-20 → 2010-08-29 (-22d) |  | 13d → 10d |  |
| A18360 | under ground insulation for RC & Brick work | 2010-09-21 → 2010-08-30 (-22d) | 2010-09-22 → 2010-08-31 (-22d) |  | 13d → 10d |  |
| A18370 | backfilling for under ground | 2010-09-23 → 2010-09-01 (-22d) | 2010-09-27 → 2010-09-05 (-22d) |  | 13d → 10d |  |
| A18380 | P.C slab on grade 10CM | 2010-10-27 → 2010-10-05 (-22d) | 2010-10-27 → 2010-10-05 (-22d) |  | 21d → 19d |  |
| A18390 | moisture insulation with membrane sheets | 2010-10-28 → 2010-10-06 (-22d) | 2010-10-30 → 2010-10-07 (-23d) |  | 21d → 19d |  |
| A18400 | R.C slab on grade | 2010-10-31 → 2010-10-09 (-22d) | 2010-11-01 → 2010-10-10 (-22d) |  | 21d → 19d |  |
| 4 | **skeleton & brick walls** | 2010-09-27 → 2010-08-21 (-37d) | 2010-12-26 → 2010-11-14 (-42d) |  |  |  |
| A18410 | columns for ground floor | 2010-09-12 → 2010-08-21 (-22d) | 2010-09-18 → 2010-08-26 (-23d) |  | 13d → 10d |  |
| A18420 | slab for ground floor | 2010-09-28 → 2010-09-06 (-22d) | 2010-10-07 → 2010-09-15 (-22d) |  | 13d → 10d |  |
| A18570 | pouring for ground floor's slab | 2010-10-09 → 2010-09-16 (-23d) | 2010-10-09 → 2010-09-16 (-23d) |  | 13d → 10d |  |
| A18430 | columns for 1st floor | 2010-10-10 → 2010-09-18 (-22d) | 2010-10-16 → 2010-09-23 (-23d) |  | 13d → 12d |  |
| A18600 | Fence work | 2010-10-10 → 2010-09-18 (-22d) | 2010-12-11 → 2010-11-14 (-27d) |  | 15d → 10d |  |
| A18440 | slab for 1st floor | 2010-10-17 → 2010-09-25 (-22d) | 2010-10-26 → 2010-10-04 (-22d) |  | 13d → 12d |  |
| A18470 | Brick works for ground floor | 2010-10-21 → 2010-09-29 (-22d) | 2010-10-26 → 2010-10-04 (-22d) |  | 21d → 19d |  |
| A18580 | pouring for 1st floor's slab | 2010-10-27 → 2010-10-05 (-22d) | 2010-10-27 → 2010-10-05 (-22d) |  | 13d → 12d |  |
| A18450 | columns for roof floor | 2010-10-31 → 2010-10-09 (-22d) | 2010-11-03 → 2010-10-12 (-22d) |  | 13d → 12d |  |
| A18460 | slab for roof floor | 2010-11-04 → 2010-10-13 (-22d) | 2010-11-10 → 2010-10-19 (-22d) |  | 13d → 12d |  |
| A18640 | Brick works for 1st floor | 2010-11-09 → 2010-10-18 (-22d) | 2010-11-14 → 2010-10-23 (-22d) |  | 23d → 18d |  |
| A18590 | pouring for roof floor's slab | 2010-11-11 → 2010-10-20 (-22d) | 2010-11-11 → 2010-10-20 (-22d) |  | 13d → 12d |  |
| A18650 | Brick works for roof floor | 2010-11-27 → 2010-10-31 (-27d) | 2010-12-01 → 2010-11-04 (-27d) |  | 13d → 12d |  |
| 5 | **electro mechanical** | 2010-10-13 → 2010-09-06 (-37d) | 2010-12-19 → 2010-11-07 (-42d) |  |  |  |
| A18530 | plumbing connections under slab on grade | 2010-09-28 → 2010-09-06 (-22d) | 2010-09-29 → 2010-09-07 (-22d) |  | 44d → 42d |  |
| A18480 | electrical conduits for ground floor's slab | 2010-10-03 → 2010-09-11 (-22d) | 2010-10-04 → 2010-09-12 (-22d) |  | 14d → 11d |  |
| A18490 | electrical conduits for 1st floor slab | 2010-10-21 → 2010-09-29 (-22d) | 2010-10-23 → 2010-09-30 (-23d) |  | 14d → 13d |  |
| A18680 | electrical conduits for ground floor walls | 2010-11-03 → 2010-10-12 (-22d) | 2010-11-04 → 2010-10-13 (-22d) |  | 25d → 19d |  |
| A18500 | electrical conduits for roof slab | 2010-11-08 → 2010-10-17 (-22d) | 2010-11-08 → 2010-10-17 (-22d) |  | 14d → 13d |  |
| A18690 | electrical conduits for 1st floor walls | 2010-11-15 → 2010-10-24 (-22d) | 2010-11-16 → 2010-10-25 (-22d) |  | 23d → 18d |  |
| A18700 | electrical conduits for roof floor walls | 2010-12-02 → 2010-11-06 (-26d) | 2010-12-04 → 2010-11-07 (-27d) |  | 16d → 15d |  |
| 6 | **finishing** | 2010-11-25 → 2010-10-14 (-42d) | 2010-12-28 → 2010-11-21 (-37d) |  |  |  |
| A18510 | Internal plastering for ground floor | 2010-11-06 → 2010-10-14 (-23d) | 2010-11-14 → 2010-10-23 (-22d) |  | 21d → 19d |  |
| A18660 | Internal plastering for 1st floor | 2010-11-17 → 2010-10-26 (-22d) | 2010-11-25 → 2010-11-03 (-22d) |  | 23d → 18d |  |
| A18520 | External plastering | 2010-12-02 → 2010-11-06 (-26d) | 2010-12-13 → 2010-11-21 (-22d) |  | 13d → 8d |  |
| A18670 | Internal plastering for roof floor | 2010-12-05 → 2010-11-08 (-27d) | 2010-12-09 → 2010-11-13 (-26d) |  | 16d → 15d |  |
| villa 112 | **Villa Number B105** |  | 2010-12-13 → 2010-11-21 (-22d) |  |  |  |
| 1 | **general dates** |  | 2010-12-28 → 2010-11-21 (-37d) |  |  |  |
| A18960 | IFC drawings | 2010-06-21 A | 2010-06-21 A | 0% → 100% | 13d → none |  |
| A18940 | Start Villa construction | 2010-08-12 → 2010-06-21 A (-52d) | 2010-08-12 → 2010-06-21 A (-52d) | 0% → 100% | 13d → none | A18960 FS+45d → A18960 |
| A19010 | Fence Drawings IFC | 2010-08-12 → 2010-07-20 (-23d) | 2010-08-12 → 2010-07-20 (-23d) |  | 54d → 50d |  |
| A18950 | finish Villa construction | 2010-12-13 → 2010-11-21 (-22d) | 2010-12-13 → 2010-11-21 (-22d) |  | 13d → 8d |  |
| 2 | **earth works** | 2010-08-18 → 2010-07-20 (-29d) | 2010-09-12 → 2010-08-04 (-39d) |  |  |  |
| A18710 | excavation | 2010-08-12 → 2010-07-20 (-23d) | 2010-08-14 → 2010-07-21 (-24d) |  | 13d → 10d | A18940 → A18940 FS+25d |
| A18720 | soil replacement | 2010-08-15 → 2010-07-22 (-24d) | 2010-08-28 → 2010-08-04 (-24d) |  | 13d → 10d |  |
| 3 | **foundation level** | 2010-09-13 → 2010-08-05 (-39d) | 2010-11-21 → 2010-10-10 (-42d) |  |  |  |
| A18730 | Plain Concrete Foundation | 2010-08-29 → 2010-08-05 (-24d) | 2010-08-30 → 2010-08-07 (-23d) |  | 13d → 10d |  |
| A19020 | backfilling between P.C Foundation | 2010-09-01 → 2010-08-09 (-23d) | 2010-09-02 → 2010-08-10 (-23d) |  | 9d → 10d |  |
| A18740 | Reinforced Concrete Foundation | 2010-09-04 → 2010-08-12 (-23d) | 2010-09-11 → 2010-08-19 (-23d) |  | 13d → 10d | A19020 → A19030 |
| A18750 | under ground brick works | 2010-09-19 → 2010-08-28 (-22d) | 2010-09-20 → 2010-08-29 (-22d) |  | 13d → 10d |  |
| A18760 | under ground insulation for RC & Brick work | 2010-09-21 → 2010-08-30 (-22d) | 2010-09-22 → 2010-08-31 (-22d) |  | 13d → 10d |  |
| A18770 | backfilling for under ground | 2010-09-23 → 2010-09-01 (-22d) | 2010-09-27 → 2010-09-05 (-22d) |  | 13d → 10d |  |
| A18780 | P.C slab on grade 10CM | 2010-10-27 → 2010-10-05 (-22d) | 2010-10-27 → 2010-10-05 (-22d) |  | 21d → 19d |  |
| A18790 | moisture insulation with membrane sheets | 2010-10-28 → 2010-10-06 (-22d) | 2010-10-30 → 2010-10-07 (-23d) |  | 21d → 19d |  |
| A18800 | R.C slab on grade | 2010-10-31 → 2010-10-09 (-22d) | 2010-11-01 → 2010-10-10 (-22d) |  | 21d → 19d |  |
| 4 | **skeleton & brick walls** | 2010-09-27 → 2010-08-21 (-37d) | 2010-12-26 → 2010-11-14 (-42d) |  |  |  |
| A18810 | columns for ground floor | 2010-09-12 → 2010-08-21 (-22d) | 2010-09-18 → 2010-08-26 (-23d) |  | 13d → 10d |  |
| A18820 | slab for ground floor | 2010-09-28 → 2010-09-06 (-22d) | 2010-10-07 → 2010-09-15 (-22d) |  | 13d → 10d |  |
| A18970 | pouring for ground floor's slab | 2010-10-09 → 2010-09-16 (-23d) | 2010-10-09 → 2010-09-16 (-23d) |  | 13d → 10d |  |
| A18830 | columns for 1st floor | 2010-10-10 → 2010-09-18 (-22d) | 2010-10-16 → 2010-09-23 (-23d) |  | 13d → 12d |  |
| A19000 | Fence work | 2010-10-10 → 2010-09-18 (-22d) | 2010-12-11 → 2010-11-14 (-27d) |  | 15d → 10d |  |
| A18840 | slab for 1st floor | 2010-10-17 → 2010-09-25 (-22d) | 2010-10-26 → 2010-10-04 (-22d) |  | 13d → 12d |  |
| A18870 | Brick works for ground floor | 2010-10-21 → 2010-09-29 (-22d) | 2010-10-26 → 2010-10-04 (-22d) |  | 21d → 19d |  |
| A18980 | pouring for 1st floor's slab | 2010-10-27 → 2010-10-05 (-22d) | 2010-10-27 → 2010-10-05 (-22d) |  | 13d → 12d |  |
| A18850 | columns for roof floor | 2010-10-31 → 2010-10-09 (-22d) | 2010-11-03 → 2010-10-12 (-22d) |  | 13d → 12d |  |
| A18860 | slab for roof floor | 2010-11-04 → 2010-10-13 (-22d) | 2010-11-10 → 2010-10-19 (-22d) |  | 13d → 12d |  |
| A19040 | Brick works for 1st floor | 2010-11-09 → 2010-10-18 (-22d) | 2010-11-14 → 2010-10-23 (-22d) |  | 23d → 18d |  |
| A18990 | pouring for roof floor's slab | 2010-11-11 → 2010-10-20 (-22d) | 2010-11-11 → 2010-10-20 (-22d) |  | 13d → 12d |  |

| ID | Task | Start | Finish | Total float |
| --- | --- | --- | --- | --- |
| A19050 | Brick works for roof floor | 2010-11-27 → 2010-10-31 (-27d) | 2010-12-01 → 2010-11-04 (-27d) | 13d → 12d |
| 5 | **electro mechanical** | 2010-10-13 → 2010-09-06 (-37d) | 2010-12-19 → 2010-11-07 (-42d) |  |
| A18930 | plumbing connections under slab on grade | 2010-09-28 → 2010-09-06 (-22d) | 2010-09-29 → 2010-09-07 (-22d) | 44d → 42d |
| A18880 | electrical conduits for ground floor's slab | 2010-10-03 → 2010-09-11 (-22d) | 2010-10-04 → 2010-09-12 (-22d) | 14d → 11d |
| A18890 | electrical conduits for 1st floor slab | 2010-10-21 → 2010-09-29 (-22d) | 2010-10-23 → 2010-09-30 (-23d) | 14d → 13d |
| A19080 | electrical conduits for ground floor walls | 2010-11-03 → 2010-10-12 (-22d) | 2010-11-04 → 2010-10-13 (-22d) | 25d → 19d |
| A18900 | electrical conduits for roof slab | 2010-11-08 → 2010-10-17 (-22d) | 2010-11-08 → 2010-10-17 (-22d) | 14d → 13d |
| A19090 | electrical conduits for 1st floor walls | 2010-11-15 → 2010-10-24 (-22d) | 2010-11-16 → 2010-10-25 (-22d) | 23d → 18d |
| A19100 | electrical conduits for roof floor walls | 2010-12-02 → 2010-11-06 (-26d) | 2010-12-04 → 2010-11-07 (-27d) | 16d → 15d |
| 6 | **finishing** | 2010-11-25 → 2010-10-14 (-42d) | 2010-12-28 → 2010-11-21 (-37d) |  |
| A18910 | Internal plastering for ground floor | 2010-11-06 → 2010-10-14 (-23d) | 2010-11-14 → 2010-10-23 (-22d) | 21d → 19d |
| A19060 | Internal plastering for 1st floor | 2010-11-17 → 2010-10-26 (-22d) | 2010-11-25 → 2010-11-03 (-22d) | 23d → 18d |
| A18920 | External plastering | 2010-12-02 → 2010-11-06 (-26d) | 2010-12-13 → 2010-11-21 (-22d) | 13d → 8d |
| A19070 | Internal plastering for roof floor | 2010-12-05 → 2010-11-08 (-27d) | 2010-12-09 → 2010-11-13 (-26d) | 16d → 15d |
| Close | **Closing phase** | 2010-12-28 → 2010-11-30 (-28d) | 2010-12-28 → 2010-11-30 (-28d) |  |
| A1280 | end project | 2010-12-28 → 2010-11-30 (-28d) | 2010-12-28 → 2010-11-30 (-28d) |  |
